# График производства работ ПП сооружения АЭС

Schedule from Primavera P6, 2013-12-08 to 2020-10-18, data date 2016-06-01, costs in EUR, A marks actual dates.
Must finish by 2020-10-18

## Calendars

- 1. Standard 7 Day Workweek: Mon-Sun 08:00-16:00. Exceptions (off unless hours are given): 2014-04-09 00:00-00:00, 2014-04-29 to 2014-04-30 08:00-16:00, 2014-05-05 08:00-16:00.

## Schedule

| ID | WBS | Activity | Type | Duration | Start | Finish | Predecessors | Complete | Remaining | Planned start | Planned finish | Total float | Free float | Constraint | Calendar | Cost | Actual cost | ОКСГ | 03 - Часть проекта | 01 - Глава ССР | 05 - Вид работ | Единица измерения (КУРСК) |
| --- | --- | --- | --- | --- | --- | --- | --- | --- | --- | --- | --- | --- | --- | --- | --- | --- | --- | --- | --- | --- | --- | --- |
|  | 1 | **Основные вехи подготовительного периода сооружения АЭС** |  |  | 2014-04-21 | 2018-05-01 |  |  |  |  |  |  |  |  |  |  |  |  |  |  |  |  |
| A9620 |  | Экспертиза инженерных изысканий площадки | milestone | 0d | 2014-04-21 A | 2014-04-21 A |  | 100% |  | 2015-10-01 | 2015-10-01 |  |  |  | 1. Standard 7 Day Workweek |  |  | 1 |  |  |  |  |
| A9690 |  | Получение лицензии на сооружение | milestone | 0d | 2016-06-01 | 2016-06-01 |  |  |  |  |  | 1600d | 1601d | finish on or after 2016-03-31 | 1. Standard 7 Day Workweek |  |  | 1 |  |  |  |  |
| A9630 |  | Приемка искусственного основания, устройство бетонной стяжки, гидроизоляции и бетонной защиты блока 1 |  | 30d | 2017-12-04 | 2018-01-02 | A9450 SS+521d |  |  |  |  | 0d |  |  | 1. Standard 7 Day Workweek |  |  | 1 |  |  |  |  |
| A9640 |  | Армирование фундаментной плиты здания реактора UJA блока №1 |  | 89d | 2018-01-03 | 2018-04-01 | A9630, V-102 FS-90d, V-103 FS-90d |  |  |  |  | 0d |  |  | 1. Standard 7 Day Workweek |  |  | 1 |  |  |  |  |
| A9650 |  | Первый бетон блока №1 | milestone | 0d | 2018-05-01 | 2018-05-01 | A9640 FS+30d, V-100 FS-90d |  |  |  |  | 0d | 901d | finish on or before 2018-05-01 | 1. Standard 7 Day Workweek |  |  | 1 |  |  |  |  |
|  | 6 | **ГЛАВА 1. Подготовка территории строительства** |  |  | 2013-12-15 | 2020-10-18 |  |  |  |  |  |  |  |  |  |  |  |  |  |  |  |  |
|  | 4 | **ОСР 01-03 Разбивка основных осей зданий и сооружений** |  |  | 2016-07-01 | 2018-09-08 |  |  |  |  |  |  |  |  |  |  |  |  |  |  |  |  |
| SMR-1.3.1 |  | Разбивка основных осей зданий и сооружений Разбивочная строительная сетка |  | 0d | 2016-07-01 | 2018-09-08 |  |  |  | 2016-07-01 | 2016-07-01 | 770d | 771d | start on or after 2016-07-01 | 1. Standard 7 Day Workweek | 37.29 |  | 1 | ПР |  |  |  |
|  | 6.1 | **ОСР 01-05 Рубка леса и кустарников** |  |  | 2013-12-15 | 2016-07-20 |  |  |  |  |  |  |  |  |  |  |  |  |  |  |  |  |
| 8 |  | Рубка леса и кустарников |  | 656d | 2013-12-15 A | 2015-09-29 A |  | 100% |  |  |  |  |  | start on or after 2013-12-15 | 1. Standard 7 Day Workweek | 21.62 |  | 1 | ПР | 1 | ЗМР |  |
| LSR_01-05-01с |  | Рубка леса и кустарников | WBS summary | 951d | 2013-12-15 A | 2016-07-20 |  | 95% | 50d |  |  | 1402d | 1551d |  | 1. Standard 7 Day Workweek |  |  | 1 |  |  |  |  |
| 9 |  | Рубка леса и кустарников (2 этап) |  | 50d | 2016-06-01 | 2016-07-20 |  |  |  |  |  | 1402d | 0d | start on or after 2015-08-15 | 1. Standard 7 Day Workweek | 8.98 |  | 1 | ПР | 1 | ЗМР |  |
|  | 6.2 | **ОСР 01-06 Удаление плодородного слоя** |  |  | 2013-12-20 | 2017-06-21 |  |  |  |  |  |  |  |  |  |  |  |  |  |  |  |  |
| 11 |  | Удаление плодородного слоя |  | 1189d | 2013-12-20 A | 2017-06-21 | 8 SS | 68% | 386d | 2013-12-21 | 2017-03-21 | 1214d | 1215d | finish on or after 2016-08-30 | 1. Standard 7 Day Workweek | 97.74 | 73.61 | 1 | ПР | 1 | ЗМР |  |
| 12 |  | Удаление плодородного слоя (2 этап) |  | 188d | 2016-06-11 | 2016-12-15 | 9 SS+10d |  |  |  |  | 1402d | 1403d | start on or after 2015-08-25 | 1. Standard 7 Day Workweek | 85.3 |  | 1 | ПР | 1 | ЗМР |  |
|  | 6.3 | **ОСР 01-07 Нагорная канава** |  |  | 2016-01-01 | 2017-03-05 |  |  |  |  |  |  |  |  |  |  |  |  |  |  |  |  |
| 14 |  | Устройство нагорной канавы |  | 337.2d | 2016-01-01 A | 2017-03-05 |  | 18% | 277.2d | 2016-01-01 | 2016-12-03 | 1322.8d | 1323.8d | start on or after 2015-11-10 | 1. Standard 7 Day Workweek | 46.49 |  | 1 | ПР | 1 | ЗМР | м3 |
|  | 6.4 | **ОСР 01-08 Ограждение территории промплощадки насыпной дамбой** |  |  | 2014-02-20 | 2016-06-29 |  |  |  |  |  |  |  |  |  |  |  |  |  |  |  |  |
| 18 |  | Разборка существующей дамбы и рыбозащитного сооружения |  | 771d | 2014-02-20 A | 2016-06-29 |  | 96% | 29d | 2014-02-20 | 2016-03-29 | 1571d | 1572d | start on or after 2014-01-01 | 1. Standard 7 Day Workweek | 145.92 | 125.74 | 1 | ПР | 1 | СМР |  |
|  | 6.5 | **ОСР 01-10 Организация территории стройбазы комбинированным способом (гидронамыв и сухорой)** |  |  | 2014-06-01 | 2017-08-27 |  |  |  |  |  |  |  |  |  |  |  |  |  |  |  |  |
|  | 1 | **Гидронамыв** |  |  | 2014-06-01 | 2016-08-01 |  |  |  |  |  |  |  |  |  |  |  |  |  |  |  |  |
| 20 |  | Организация территории стройбазы гидронамывом до отм 151,0м |  | 866.54d | 2014-06-01 A | 2016-04-25 A |  | 100% |  | 2014-06-01 | 2016-10-14 |  |  |  | 1. Standard 7 Day Workweek | 2,183.7 | 1,307.56 | 1 | ПР | 1 | ЗМР |  |
| 30 |  | Гидронамыв территории стройбазы до отм. 151,50 м | WBS summary | 873.88d | 2014-06-01 A | 2016-08-01 |  | 93% | 61.17d | 2014-06-01 | 2016-10-21 | 1538.83d | 1539.83d |  | 1. Standard 7 Day Workweek | 548.03 |  | 1 | ПР |  |  |  |
| A4410 |  | Гидронамыв территориии стройбазы до отм.151,5 м С учётом новых участков разработки грунта |  | 872.41d | 2014-06-01 A | 2016-04-25 A |  | 100% |  | 2014-06-01 | 2016-10-20 |  |  |  | 1. Standard 7 Day Workweek | 160.18 |  | 1 | ПР |  |  |  |
| A4430 |  | Организация гидронамывом территории стройбазы до отм. 156,5 м |  | 873.88d | 2014-06-01 A | 2016-08-01 |  | 93% | 61.17d | 2014-06-01 | 2016-10-21 | 1538.83d | 1539.83d |  | 1. Standard 7 Day Workweek | 339.92 |  | 1 | ПР |  |  |  |
| SMR-1.10.7 |  | Организация гидронамывом территории стройбазы до отм. 156,5 м |  | 90d | 2016-04-04 A | 2016-07-24 |  | 40% | 54d | 2016-04-04 | 2016-07-02 | 1546d | 1547d | start on or after 2016-06-15 | 1. Standard 7 Day Workweek |  |  | 1 | ТПНДвк |  |  |  |
| A4450 |  | Организация территориии стройбазы гидронамывом до отм.151,5 м. Демонтажные работы |  | 60d | 2016-06-01 | 2016-07-30 |  |  |  |  |  | 1540d | 1541d | start on or after 2016-05-01 | 1. Standard 7 Day Workweek | 16.82 |  | 1 | ПР |  |  |  |

| ID | WBS | Activity | Duration | Start | Finish | Predecessors | Complete | Remaining | Planned start | Planned finish | Total float | Free float | Constraint | Calendar | Cost | 03 - Часть проекта | ОКСГ | Единица измерения (КУРСК) |
| --- | --- | --- | --- | --- | --- | --- | --- | --- | --- | --- | --- | --- | --- | --- | --- | --- | --- | --- |
|  | 2 | **Сухорой** |  | 2014-06-01 | 2017-08-27 |  |  |  |  |  |  |  |  |  |  |  |  |  |
| A4420 |  | Земляные массы на территории стройбазы | 894.9d | 2014-06-01 A | 2016-08-29 |  | 90% | 89.49d | 2014-06-01 | 2016-11-11 | 1510.51d | 1511.51d |  | 1. Standard 7 Day Workweek | 5,411 | ПР | 1 | м3 |
| A4380 |  | Отсыпка территории стройбазы. Устройство подъездных дорог и съездов на этапе отсыпки сухороя стройбазы. | 1055.48d | 2014-06-02 A | 2017-07-23 |  | 60% | 417.48d | 2014-06-02 | 2017-04-22 | 1182.52d | 1183.52d |  | 1. Standard 7 Day Workweek | 318.79 | ПР | 1 | м3 |
| A4390 |  | Устройство бурта накопителя | 150d | 2017-03-31 | 2017-08-27 |  |  |  |  |  | 1147d | 1148d | start on or after 2017-03-31 | 1. Standard 7 Day Workweek | 33.52 | ПР | 1 |  |
|  | 3 | **Крепление откосов** |  | 2016-06-01 | 2017-03-27 |  |  |  |  |  |  |  |  |  |  |  |  |  |
| A9890 |  | Крепление южного откоса стройбазы | 150d | 2016-06-01 | 2016-10-28 |  |  |  |  |  | 1300d | 0d | start on or after 2016-04-30 | 1. Standard 7 Day Workweek | 89.72 | ПР | 1 |  |
| A9920 |  | Крепление откосов стройбазы | 150d | 2016-10-29 | 2017-03-27 | A9890 |  |  |  |  | 1300d | 1301d |  | 1. Standard 7 Day Workweek | 606.09 | ПР | 1 |  |
|  | 6.6 | **ОСР 01-11 Демонтаж зданий, сооружений и существующих автомобильных дорог** |  | 2017-02-01 | 2017-03-02 |  |  |  |  |  |  |  |  |  |  |  |  |  |
| SMR-1.11.1 |  | Демонтаж здания элинга | 0d | 2017-02-01 | 2017-03-02 |  |  |  | 2017-02-01 | 2017-02-01 | 1325d | 1326d | start on or after 2017-02-01 | 1. Standard 7 Day Workweek |  | ПР | 1 |  |
|  | 6.7 | **Замещение грунта на промплощадке** |  |  |  |  |  |  |  |  |  |  |  |  |  |  |  |  |
|  | 6.7.5 | **Разработка грунта в котловане на промплощадке** |  |  |  |  |  |  |  |  |  |  |  |  |  |  |  |  |
|  | 6.7.6 | **Промплощадка. Песчаная и песчано-гравийная подушка под фундаменты зданий и сооружений** |  |  |  |  |  |  |  |  |  |  |  |  |  |  |  |  |
|  | 1 | **Отвал некачественного грунта** |  |  |  |  |  |  |  |  |  |  |  |  |  |  |  |  |
|  | 3 | **ОСР 01-15 Замещение грунта на промплощадке-1** |  | 2015-07-01 | 2017-02-11 |  |  |  |  |  |  |  |  |  |  |  |  |  |
| A9360 |  | Рекультивация бывшего песчанного карьера дебалансным грунтом.Устройство временных дорог. | 329.07d | 2015-07-01 A | 2016-08-25 |  | 74% | 85.07d | 2015-07-01 | 2016-05-25 | 1514.93d | 1515.93d |  | 1. Standard 7 Day Workweek | 20.36 | ПР | 1 |  |
| A9530 |  | Рекультивация бывшего песчаного карьера дебаласным грунтом. Дополнительные работы | 314.11d | 2015-07-01 A | 2016-08-10 |  | 78% | 70.11d | 2015-07-01 | 2016-05-10 | 1529.89d | 1530.89d | start on or after 2016-03-31 | 1. Standard 7 Day Workweek | 24.27 | ПР | 1 |  |
| A9520 |  | Рекультивация бывшего песчаного карьера дебаласным грунтом | 467.85d | 2015-07-01 A | 2017-01-10 |  | 52% | 223.85d | 2015-07-01 | 2016-10-10 | 1376.15d | 1377.15d |  | 1. Standard 7 Day Workweek | 85.14 | ПР | 1 |  |
| A9580 |  | Песчаная и песчано-гравийная подушка под фундаменты зданий. План земляных масс территории кавальера ПГС | 232.88d | 2015-08-10 A | 2016-06-29 |  | 88% | 28.88d | 2015-08-10 | 2016-03-29 | 1571.12d | 1572.12d | start on or after 2015-08-10 | 1. Standard 7 Day Workweek | 111.73 | ПР | 1 |  |
| A9860 |  | Выемка бросового грунта на участках замещения до отм.150,00. Дополнительные работы. | 276.22d | 2015-08-15 A | 2016-08-17 |  | 72% | 77.22d | 2015-08-15 | 2016-05-17 | 1522.78d | 1523.78d | start on or after 2016-03-01 | 1. Standard 7 Day Workweek |  | ПР | 1 | м3 |
| SMR-1.15.19 |  | Перекладка дренажных лотков | 60d | 2016-03-01 A | 2016-06-12 |  | 80% | 12d | 2016-05-12 | 2016-07-10 | 1588d | 1589d | start on or after 2016-05-12 | 1. Standard 7 Day Workweek | 11.56 | ПР | 1 |  |
| SMR-1.15.15 |  | Выемка бросового грунта на участках замещения до отм.150,00 | 200d | 2016-03-01 A | 2016-12-17 |  |  | 200d | 2016-03-01 | 2016-09-16 | 1400d | 1401d | start on or after 2016-03-01 | 1. Standard 7 Day Workweek |  | ПР | 1 |  |
| A10580 |  | Выемка бросового грунта на участках замещения до отм. 150,00. Открытый водоотвод | 50d | 2016-04-01 A | 2016-07-16 |  | 9% | 45.5d | 2016-04-01 | 2016-05-20 | 1554.5d | 1555.5d | start on or after 2016-03-01 | 1. Standard 7 Day Workweek | 11.62 | ПР | 1 |  |
| A9440 |  | Проект рекультивации земель.Отвал дебалансного грунта №4 Переустройство линий электроснабжения | 120d | 2016-06-01 | 2016-09-28 |  |  |  |  |  | 1480d | 1481d | start on or after 2016-03-31 | 1. Standard 7 Day Workweek |  | ПР | 1 |  |
| A9540 |  | Отвал бросового грунта карьера и сооружения. Дополнительные работы. | 120d | 2016-06-01 | 2016-09-28 |  |  |  |  |  | 1480d | 1481d | start on or after 2016-03-31 | 1. Standard 7 Day Workweek | 17.89 | ПР | 1 |  |
| A9550 |  | Рекультивация бывшего песчаного карьера дебаласным грунтом. Дополнительные работы | 150d | 2016-06-01 | 2016-10-28 |  |  |  |  |  | 1450d | 1451d | start on or after 2016-03-31 | 1. Standard 7 Day Workweek | 17.79 | ПР | 1 |  |
| A9560 |  | План земляных масс промплощадки в осях 16 А;14Б-19А;15Б | 220d | 2016-06-01 | 2017-01-06 |  |  |  |  |  | 1380d | 1381d | start on or after 2016-03-31 | 1. Standard 7 Day Workweek | 230.65 | ПР | 1 |  |
| A9600 |  | Освещение отвала некачественного грунта. II очередь. | 30d | 2016-06-01 | 2016-06-30 |  |  |  |  |  | 1570d | 1571d | start on or after 2016-04-01 | 1. Standard 7 Day Workweek |  | ПР | 1 |  |
| A9840 |  | Переустройство линий связи. Формирование отвала некачественного грунта №4 у д.Кожля | 120d | 2016-06-01 | 2016-09-28 |  |  |  |  |  | 1480d | 1481d | start on or after 2016-03-31 | 1. Standard 7 Day Workweek |  | ПР | 1 |  |
| A9850 |  | Выемка грунта ниже отм.150,00 и засыпка ПГС и песчаной смеси под здания и сооружения. Электроснабжение | 120d | 2016-06-01 | 2016-09-28 |  |  |  |  |  | 1480d | 1481d | start on or after 2016-03-01 | 1. Standard 7 Day Workweek | 117.92 | ПР | 1 |  |
| A9870 |  | Компенсация затрат, связанных с разницей в стоимости электроэнергии | 60d | 2016-06-01 | 2016-07-30 |  |  |  |  |  | 1540d | 1541d | start on or after 2016-01-01 | 1. Standard 7 Day Workweek | 39.76 | ПР | 1 |  |
| A9880 |  | Выемка грунта ниже отм.150,00 и засыпка ПГС и песчаной смеси под здания и сооружения. Электроснабжени | 120d | 2016-06-01 | 2016-09-28 |  |  |  |  |  | 1480d | 1481d | start on or after 2016-03-01 | 1. Standard 7 Day Workweek | 105.09 | ПР | 1 |  |
| SMR-1.15.11 |  | План земляных масс территории промплощадки | 220d | 2016-06-01 | 2017-01-06 |  |  |  |  |  | 1380d | 1381d | start on or after 2016-03-01 | 1. Standard 7 Day Workweek |  | ПР | 1 |  |
| SMR-1.15.18 |  | Временные автодороги | 0d | 2016-06-01 | 2016-10-28 |  |  |  | 2016-06-01 | 2016-06-01 | 1450d | 1451d | start on or after 2016-05-19 | 1. Standard 7 Day Workweek | 414.71 | ПР | 1 |  |
| SMR-1.15.9.2 |  | Устройство грунтового основания территории кавальера ПГС | 120d | 2016-06-01 | 2016-09-28 |  |  |  |  |  | 1480d | 1481d | start on or after 2016-04-01 | 1. Standard 7 Day Workweek | 31.75 | ПР | 1 |  |
| SMR-1.15.9.3 |  | Замещение грунта и организация рельефа на промплощадке. План земляных масс территории ковальера ПГС. | 150d | 2016-06-01 | 2016-10-28 |  |  |  |  |  | 1450d | 1451d | start on or after 2016-03-01 | 1. Standard 7 Day Workweek |  | ПР | 1 |  |
| SMR-1.15.20 |  | Водоотведение территории кавальера ПГС | 0d | 2016-08-04 | 2016-12-31 |  |  |  | 2016-08-04 | 2016-08-04 | 1386d | 1387d | start on or after 2016-08-04 | 1. Standard 7 Day Workweek | 3.23 | ПР | 1 |  |
| SMR-1.15.22 |  | Разработка песка из водоема с целью складирования под обратную засыпку | 0d | 2016-09-15 | 2017-02-11 |  |  |  | 2016-09-15 | 2016-09-15 | 1344d | 1345d | start on or after 2016-09-15 | 1. Standard 7 Day Workweek |  | ПР | 1 |  |

| ID | WBS | Activity | Duration | Start | Finish | Predecessors | Complete | Remaining | Planned start | Planned finish | Total float | Free float | Constraint | Calendar | Cost | 03 - Часть проекта | ОКСГ | Единица измерения (КУРСК) |
| --- | --- | --- | --- | --- | --- | --- | --- | --- | --- | --- | --- | --- | --- | --- | --- | --- | --- | --- |
|  | 2 | **ОСР 01-15 Замещение грунта на промплощадке.** |  | 2014-06-19 | 2020-10-18 |  |  |  |  |  |  |  |  |  |  |  |  |  |
| A9240 |  | Промплощадка. Котлован.1 этап. Объемы блока 1(запрет) | 296d | 2014-06-19 A | 2015-04-10 A |  | 100% |  |  |  |  |  |  | 1. Standard 7 Day Workweek | 3,729.88 | ПР | 1 | м3 |
| A9250 |  | Промплощадка. Котлован. 1 этап. Объемы блока 1 (запрет) | 296d | 2014-06-19 A | 2015-04-10 A | A9240 SS | 100% |  |  |  |  |  |  | 1. Standard 7 Day Workweek | 583.25 | ПР | 1 |  |
| A9280 |  | Промплощадка. Котлован. 1 этап. Объемы блока 2(запрет) | 296d | 2014-06-19 A | 2015-04-10 A |  | 100% |  |  |  |  |  | start on or after 2014-06-19 | 1. Standard 7 Day Workweek |  | ПР | 1 |  |
| A9300 |  | Промплощадка. Котлован. 2 этап. Объемы блока 2(запрет) | 296d | 2014-06-19 A | 2015-04-10 A | A9280 SS | 100% |  |  |  |  |  |  | 1. Standard 7 Day Workweek |  | ПР | 1 |  |
| A9260 |  | Промплощадка. Котлован. 2 этап. Объемы блока 1(запрет) | 296d | 2014-06-19 A | 2015-04-10 A | A9250 SS | 100% |  |  |  |  |  |  | 1. Standard 7 Day Workweek | 140.12 | ПР | 1 | м3 |
| A9330 |  | Выемка бросового грунта на участках замещения до отм.150,00. Дополнительны работы.(запрет) | 285d | 2014-06-30 A | 2015-04-10 A |  | 100% |  |  |  |  |  | start on or after 2016-03-31 | 1. Standard 7 Day Workweek |  | ПР | 1 |  |
| A9570 |  | Выемка бросового грунта на участках замещения до отм. 150,00м. Электроснабжение поверхностного водоотлива | 56d | 2014-07-19 A | 2014-09-12 A |  | 100% |  |  |  |  |  |  | 1. Standard 7 Day Workweek | 114.84 | ПР | 1 |  |
| A9320 |  | Земляные массы на участке водозаборных сооружений и сооружения подготовки хозпитьевой воды | 567.45d | 2014-09-01 A | 2016-06-21 |  | 96% | 20.45d | 2014-09-01 | 2016-03-21 | 1579.55d | 1580.55d |  | 1. Standard 7 Day Workweek | 19.22 | ПР | 1 |  |
| A9270 |  | Промплощадка. Котлован. 2 этап. Объемы блока 1(запрет) | 86d | 2015-01-15 A | 2015-04-10 A | A9260 SS | 100% |  |  |  |  |  |  | 1. Standard 7 Day Workweek | 4.71 | ПР | 1 | м3 |
| A9510 |  | Отвал бросового грунта карьера и сооружения. Дополнительные работы. | 261.39d | 2015-07-01 A | 2016-06-18 |  | 93% | 17.39d | 2015-07-01 | 2016-03-18 | 1582.61d | 1583.61d |  | 1. Standard 7 Day Workweek | 78.6 | ПР | 1 |  |
|  | 1 | **Ручей** |  | 2014-08-28 | 2019-04-18 |  |  |  |  |  |  |  |  |  |  |  |  |  |
| A9370 |  | Формирование откоса у левого берега дебалансным грунтом. Дополнительная | 1113.63d | 2014-08-28 A | 2017-12-15 | A9380 SS | 49% | 562.63d | 2014-08-28 | 2017-09-14 | 1037.37d | 1038.37d |  | 1. Standard 7 Day Workweek | 1.33 | ПР | 1 | м3 |
| A9380 |  | Формирование откоса у левого берега дебалансным грунтом | 1067.38d | 2014-08-28 A | 2017-10-30 |  | 52% | 516.38d | 2014-08-28 | 2017-07-30 | 1083.62d | 1084.62d |  | 1. Standard 7 Day Workweek | 295.18 | ПР | 1 | м3 |
| A9390 |  | Формирование откоса у левого берега дебалансным грунтом. II очередь | 1231.37d | 2014-08-28 A | 2018-04-12 |  | 45% | 680.37d | 2014-08-28 | 2018-01-10 | 919.63d | 920.63d |  | 1. Standard 7 Day Workweek | 154.39 | ПР | 1 | м3 |
| A9420 |  | Формирование откоса у левого берега дебалансным грунтом. II очередь | 1266.69d | 2014-08-28 A | 2019-04-18 |  | 17% | 1051.35d | 2014-08-28 | 2018-02-14 | 548.65d | 549.65d |  | 1. Standard 7 Day Workweek | 181.13 | ПР | 1 | м3 |
| A9500 |  | Формирование откоса у левого берега дебалансным грунтом. II очередь. (Дополнительная работа) | 993d | 2014-08-28 A | 2017-08-16 | A9420 SS | 55% | 442d | 2014-08-28 | 2017-05-16 | 1158d | 1159d |  | 1. Standard 7 Day Workweek | 5.02 | ПР | 1 |  |
| A9350 |  | Перенос русла | 605.24d | 2014-09-01 A | 2016-07-29 |  | 90% | 58.24d | 2014-09-01 | 2016-04-28 | 1541.76d | 1542.76d |  | 1. Standard 7 Day Workweek | 6.71 | ПР | 1 |  |
| A9470 |  | Формирование откоса у левого берега дебалансным грунтом. | 1150d | 2014-12-01 A | 2018-04-25 | A9380 SS | 40% | 694d | 2014-12-01 | 2018-01-23 | 906d | 907d |  | 1. Standard 7 Day Workweek | 197.32 | ПР | 1 |  |
| A9400 |  | Формирование откоса у левого берега дебалансным грунтом. II очередь. Ж/Б конструкции. Переустр кабеля связи | 120d | 2016-06-01 | 2016-09-28 |  |  |  |  |  | 1420d | 0d | start on or after 2016-03-01 | 1. Standard 7 Day Workweek | 1.35 | ПР | 1 | м3 |
| A9490 |  | Участок дороги для формирования откоса у левого берега ручья Крупец дебалансным грунтом | 150d | 2016-06-01 | 2016-10-28 |  |  |  |  |  | 1450d | 1451d | start on or after 2016-03-31 | 1. Standard 7 Day Workweek |  | ПР | 1 |  |
| A9410 |  | Формирование откоса у левого берега дебалансным грунтом. Переустройство кабеля связи. II очередь | 60d | 2016-09-29 | 2016-11-27 | A9400 |  |  |  |  | 1420d | 1421d |  | 1. Standard 7 Day Workweek | 3.22 | ПР | 1 | м |
|  | 2 | **Котлован Блок 1** |  | 2016-05-01 | 2019-06-15 |  |  |  |  |  |  |  |  |  |  |  |  |  |
| A9590 |  | Промплощадка. Котлован.1 этап. Объемы блока 1(возобновление работ) | 818d | 2016-05-01 A | 2017-08-08 |  | 47% | 433.54d | 2016-05-01 | 2018-07-27 | 1166.46d | 1167.46d | start on or after 2016-04-01 | 1. Standard 7 Day Workweek |  | ПР | 1 |  |
| A9660 |  | Промплощадка. Котлован. 1 этап. Объемы блока 1 (возобнавление) | 1095d | 2016-05-01 A | 2019-05-31 |  |  | 1095d | 2016-05-01 | 2019-04-30 | 505d | 506d | start on or after 2016-04-01 | 1. Standard 7 Day Workweek |  | ПР | 1 |  |
| A9340 |  | Устройство объединенного котлована и формирование искусственного грунтового основания под основные здания и сооружения. | 250d | 2016-05-18 A | 2017-01-29 |  | 3% | 242.5d | 2016-06-01 | 2017-02-05 | 1357.5d | 1358.5d | start on or after 2016-06-01 | 1. Standard 7 Day Workweek | 786.57 | ПР | 1 |  |
| A9760 |  | Промплощадка. Котлован. 2 этап. Объемы блока 1(возобнавление) | 1110d | 2016-06-01 | 2019-06-15 |  |  |  |  |  | 490d | 491d | start on or after 2016-05-01 | 1. Standard 7 Day Workweek |  | ПР | 1 |  |
| A9810 |  | Выемка бросового грунта на участках замещения до отм.150,00. Дополнительны работы. | 200d | 2016-06-01 | 2016-12-17 |  |  |  |  |  | 1400d | 1401d | start on or after 2016-03-01 | 1. Standard 7 Day Workweek |  | ПР | 1 |  |
| A9820 |  | Промплощадка. Котлован. 2 этап. Объемы блока 1(возобнавление) | 1098d | 2016-06-01 | 2019-06-03 |  |  |  |  |  | 502d | 503d | start on or after 2016-05-01 | 1. Standard 7 Day Workweek |  | ПР | 1 |  |
| A9930 |  | Устройство открытого водоотлива и перепускных лотков, с монтажом трубопровода и откачкой воды | 150d | 2016-06-01 | 2016-10-28 |  |  |  |  |  | 1234d | 0d | start on or after 2016-06-01 | 1. Standard 7 Day Workweek |  | ПР | 1 |  |
| SMR-1.15.16 |  | Устройство поверхностного водоотлива | 150d | 2016-06-01 | 2016-10-28 | A9930 SS |  |  |  |  | 1234d | 0d |  | 1. Standard 7 Day Workweek | 2.85 | ПР | 1 |  |
| SMR-1.15.16.1 |  | Электроснабжение поверхностного водоотлива | 0d | 2016-10-29 | 2017-06-01 | SMR-1.15.16 |  |  | 2016-10-29 | 2016-10-29 | 1234d | 1235d |  | 1. Standard 7 Day Workweek |  | ЭЛЕКч | 1 |  |

| ID | WBS | Activity | Duration | Start | Finish | Predecessors | Complete | Remaining | Planned start | Planned finish | Total float | Free float | Constraint | Calendar | Cost | Actual cost | 03 - Часть проекта | ОКСГ | 01 - Глава ССР | 05 - Вид работ |
| --- | --- | --- | --- | --- | --- | --- | --- | --- | --- | --- | --- | --- | --- | --- | --- | --- | --- | --- | --- | --- |
|  | 3 | **Котлован Блок 2** |  | 2016-07-01 | 2019-12-05 |  |  |  |  |  |  |  |  |  |  |  |  |  |  |  |
| A9290 |  | Промплощадка. Котлован. 1 этап. Объемы блока 2 | 1222d | 2016-07-01 | 2019-11-04 | A9280 SS |  |  |  |  | 348d | 349d | start on or after 2016-07-01 | 1. Standard 7 Day Workweek | 389.25 |  | ПР | 1 |  |  |
| A9670 |  | Промплощадка. Котлован. 1 этап. Объемы блока 2(возобнавление) | 991d | 2016-07-01 | 2019-03-18 |  |  |  |  |  | 579d | 580d | start on or after 2016-07-01 | 1. Standard 7 Day Workweek |  |  | ПР | 1 |  |  |
| A9310 |  | Промплощадка. Котлован. 2 этап. Объемы блока 2 (дополнительная к смете № А-119015 пм изм.2) | 1222d | 2016-08-01 | 2019-12-05 | A9280 SS |  |  |  |  | 317d | 318d | start on or after 2016-08-01 | 1. Standard 7 Day Workweek |  |  | ПР | 1 |  |  |
| A9680 |  | Промплощадка. Котлован. 2 этап. Объемы блока 2(возобнавление) | 799d | 2016-08-01 | 2018-10-08 |  |  |  |  |  | 740d | 741d | start on or after 2016-08-01 | 1. Standard 7 Day Workweek |  |  | ПР | 1 |  |  |
|  | 4 | **Отвал** |  | 2015-05-28 | 2020-06-01 |  |  |  |  |  |  |  |  |  |  |  |  |  |  |  |
| A9430 |  | Формирование отвала некачественного грунта №4 | 1760.25d | 2015-05-28 A | 2020-06-01 |  | 17% | 1461.01d | 2015-05-28 | 2020-03-22 | 138.99d | 139.99d |  | 1. Standard 7 Day Workweek | 1,557.28 |  | ПР | 1 |  |  |
|  | 5 | **Песчанная и песчанно-гравийная подушка под фундаменты зданий и сооружений** |  | 2015-08-01 | 2020-10-18 |  |  |  |  |  |  |  |  |  |  |  |  |  |  |  |
| A9740 |  | План земельных масс территории кавальера ПГС. Устройство грунтового основания территории кавальера ПГС. ППР | 294d | 2015-08-01 A | 2016-04-25 A |  | 100% |  | 2015-08-01 | 2016-05-20 |  |  |  | 1. Standard 7 Day Workweek |  |  | ТПНДвк | 1 |  |  |
| A9450 |  | Промплощадка. Песчаная и песчано-гравийная подушка под фундаменты зданий и сооружений. Объемы Блока 1 | 1208d | 2016-07-01 | 2019-10-21 |  |  |  |  |  | 0d |  | start on or after 2016-07-01 | 1. Standard 7 Day Workweek | 27,703.29 |  | ПР | 1 |  |  |
| A9460 |  | Промплощадка. Песчаная и песчано-гравийная подушка под фундаменты зданий и сооружений. Объемы Блока 2. | 1133d | 2017-09-12 | 2020-10-18 |  |  |  |  |  | -1d | 0d | start on or after 2017-09-12 | 1. Standard 7 Day Workweek |  |  | ПР | 1 |  |  |
|  | 6.8 | **ОСР 01-16 Водопонижение площадки строительства** |  | 2014-07-15 | 2020-06-15 |  |  |  |  |  |  |  |  |  |  |  |  |  |  |  |
| 45 |  | Сбросной водовод от системы водопонижения | 98d | 2014-07-15 A | 2014-10-20 A | 96 FF | 100% |  |  |  |  |  | start on or after 2014-07-02 | 1. Standard 7 Day Workweek | 86.81 |  | ПР | 1 | 1 | ТМР |
| 46 |  | Внешнее электроснабжение водозаборных скважин | 66d | 2014-07-25 A | 2014-09-28 A |  | 100% |  |  |  |  |  | start on or after 2014-07-17 | 1. Standard 7 Day Workweek | 3.31 | 2.01 | ПР | 1 | 1 | ЭМР |
| 106 |  | Разгрузочные скважины | 7d | 2014-08-12 A | 2014-08-18 A |  | 100% |  |  |  |  |  | as late as possible | 1. Standard 7 Day Workweek | 256.74 | 77.07 | ПР | 1 | 1 | СМР |
| 735 |  | Пусконаладочные работы трансформаторной подстанции КТПН 630-10/0,4 кВ (ТП-9) | 6d | 2014-09-03 A | 2014-09-08 A |  | 100% |  |  |  |  |  |  | 1. Standard 7 Day Workweek | 0.18 |  | ПР | 1 |  |  |
| 176 |  | Пусконаладочные работы трансформаторной подстанции КТПН 1000-10/0,4 кВ (ТП-10) | 6d | 2014-09-04 A | 2014-09-09 A |  | 100% |  |  |  |  |  |  | 1. Standard 7 Day Workweek | 0.18 |  | ПР | 1 |  |  |
| 626 |  | Пусконаладочные работы трансформаторной подстанции КТПН 630-10/0,4 кВ (ТП-11) | 4d | 2014-09-08 A | 2014-09-11 A |  | 100% |  |  |  |  |  |  | 1. Standard 7 Day Workweek | 0.18 |  | ПР | 1 |  |  |
| 646 |  | Пусконаладочные работы трансформаторной подстанции КТПН 1000-10/0,4 кВ (ТП-12) | 3d | 2014-09-11 A | 2014-09-13 A |  | 100% |  |  |  |  |  |  | 1. Standard 7 Day Workweek | 0.18 |  | ПР | 1 |  |  |
| A4670 |  | строительное водопонижение (дополнительно к смете 01-16-0197С) | 1337d | 2014-09-22 A | 2017-01-14 | 65 SS | 83% | 227.29d | 2014-09-22 | 2018-05-20 | 1372.71d | 1373.71d |  | 1. Standard 7 Day Workweek | 15.73 |  | ПР | 1 |  |  |
| 65 |  | Строительное водопонижение 1 и 2 этап | 1036.08d | 2014-09-22 A | 2016-12-25 |  | 80% | 207.21d | 2014-09-22 | 2017-07-24 | 1357.79d | 0d |  | 1. Standard 7 Day Workweek | 985.4 | 388.04 | ПР | 1 | 1 | СМР |
| A4620 |  | Электроснабжение строительного водопонижения. 1 этап. | 692.77d | 2014-10-01 A | 2016-11-23 |  | 75% | 175.77d | 2014-10-01 | 2016-08-23 | 1424.23d | 1425.23d |  | 1. Standard 7 Day Workweek | 242.85 |  | ПР | 1 |  |  |
| A4660 |  | Разгрузочные скважины. Демонтаж | 31d | 2014-10-21 A | 2014-11-20 A | 106 | 100% |  |  |  |  |  |  | 1. Standard 7 Day Workweek | 2.38 |  | ПР | 1 |  |  |
| 96 |  | Строительной водопонижение. 2 этап, участки 1, 2. Павильоны для легких иглофильтровых установок ЛИУ6-БМ | 544d | 2015-01-14 A | 2016-10-10 |  | 76% | 132d | 2015-01-14 | 2016-07-10 | 1468d | 1469d |  | 1. Standard 7 Day Workweek | 41.72 |  | ПР | 1 | 1 | СМР |
| A4690 |  | cтроительное водопонижение. 2 этап | 1699d | 2015-05-20 A | 2020-01-17 |  | 22% | 1325.22d | 2015-05-20 | 2020-01-12 | 124.78d | 0d |  | 1. Standard 7 Day Workweek | 409.41 |  | ПР | 1 |  |  |
| A4600 |  | Электроснабжение строительного водопонижения .2 этап | 270.91d | 2015-12-01 A | 2016-11-27 |  | 34% | 179.91d | 2015-12-01 | 2016-08-27 | 1360.09d | 0d | start on or after 2015-10-05 | 1. Standard 7 Day Workweek | 209.44 |  | ПР | 1 |  |  |
| A4640 |  | Электроснабжение. 1 этап. Демонтаж | 250d | 2016-06-01 | 2017-02-05 |  |  |  |  |  | 1350d | 0d | start on or after 2016-06-01 | 1. Standard 7 Day Workweek | 0.04 |  | ПР | 1 |  |  |
| A4650 |  | Электроснабжение. Демонтаж | 123d | 2016-06-01 | 2016-10-01 | A4640 SS |  |  |  |  | 1477d | 1478d |  | 1. Standard 7 Day Workweek | 12.67 |  | ПР | 1 |  |  |
| A4710 |  | Строительное водопонижение. 2 этап (доп. к ЛС 01-16-0227С) | 811d | 2016-06-01 | 2018-08-20 | A4690 SS+60d |  |  |  |  | 789d | 790d |  | 1. Standard 7 Day Workweek | 41.06 |  | ПР | 1 |  |  |
| A4720 |  | Резервное электроснабжение системы водопонижения Схемы электрические | 60d | 2016-11-27 | 2017-01-26 | A4600 |  |  |  |  | 1360.09d | 1361.09d |  | 1. Standard 7 Day Workweek | 2.63 |  | ПР | 1 |  |  |
| A9610 |  | Сбросные трубопроводы. Демонтаж | 35d | 2016-12-25 | 2017-01-29 | 65 |  |  |  |  | 1357.79d | 1358.79d |  | 1. Standard 7 Day Workweek | 5.94 |  | ПР | 1 |  |  |
| A4730 |  | Строительное водопонижение. 2 этап, участки 1, 2. Демонтаж павильонов для легких иглофильтровых установок ЛИУ6-БМ | 60d | 2018-03-01 | 2018-04-29 |  |  |  |  |  | 902d | 903d | start on or after 2018-03-01 | 1. Standard 7 Day Workweek | 2.33 |  | ПР | 1 |  |  |
| A4630 |  | Электроснабжение строительного водопонижения .2 этап. Демонтаж | 30d | 2020-01-17 | 2020-02-16 | A4690 |  |  |  |  | 244.78d | 245.78d |  | 1. Standard 7 Day Workweek | 7.13 |  | ПР | 1 |  |  |
| A4700 |  | Строительное водопонижение. Демонтажные работы | 150d | 2020-01-17 | 2020-06-15 | A4690 |  |  |  |  | 124.78d | 125.78d |  | 1. Standard 7 Day Workweek | 10.5 |  | ПР | 1 |  |  |

| ID | WBS | Activity | Type | Duration | Start | Finish | Predecessors | Complete | Remaining | Planned start | Planned finish | Total float | Free float | Constraint | Calendar | Cost | 01 - Глава ССР | 03 - Часть проекта | 05 - Вид работ | ОКСГ |
| --- | --- | --- | --- | --- | --- | --- | --- | --- | --- | --- | --- | --- | --- | --- | --- | --- | --- | --- | --- | --- |
|  | 6.8.1 | **Временный глубинный дренаж подземных вод (73 скважины) в т.ч.** |  |  | 2016-06-01 | 2016-06-30 |  |  |  |  |  |  |  |  |  |  |  |  |  |  |
| 43 |  | Насосные станции на скважинах водопонижения №1-73. На отопление и вентиляцию. |  | 30d | 2016-06-01 | 2016-06-30 | 65 SS, 106 SS |  |  |  |  | 1570d | 1571d | start on or after 2016-04-01 | 1. Standard 7 Day Workweek | 14.02 | 1 | ПР | СМР | 1 |
|  | 6.9 | **ОСР 01-17 Водоотводное сооружение** |  |  | 2015-08-01 | 2017-10-18 |  |  |  |  |  |  |  |  |  |  |  |  |  |  |
| 48 |  | Водоотводное сооружение |  | 497.86d | 2015-08-01 A | 2017-03-12 | 8 | 43% | 284.86d | 2015-08-01 | 2016-12-10 | 1315.14d | 1316.14d |  | 1. Standard 7 Day Workweek | 75.17 | 1 | ПР | СМР | 1 |
| A4780 |  | Водоотводное сооружение |  | 272.29d | 2015-08-01 A | 2016-07-30 |  | 78% | 59.29d | 2015-08-01 | 2016-04-29 | 1540.71d | 1541.71d |  | 1. Standard 7 Day Workweek | 368.67 |  | ПР |  | 1 |
| A4740 |  | Канал для отвода воды с балки |  | 161.65d | 2016-01-11 A | 2016-09-20 |  | 31% | 111.65d | 2016-01-11 | 2016-06-20 | 1488.35d | 1489.35d | start on or after 2017-03-30 | 1. Standard 7 Day Workweek | 0.25 |  | ПР |  | 1 |
| A9900 |  | Водоотводное сооружение. Устройство крепления откосов. |  | 228d | 2016-06-01 | 2017-01-14 |  |  |  |  |  | 1372d | 1373d |  | 1. Standard 7 Day Workweek |  |  | ПР |  | 1 |
| A9910 |  | Водоотводное сооружение. Нагорная канава |  | 121d | 2016-06-01 | 2016-09-29 |  |  |  |  |  | 1479d | 1480d | start on or after 2016-03-21 | 1. Standard 7 Day Workweek | 9.17 |  | ПР |  | 1 |
| SMR-1.17.5 |  | Устройство крепления откосов с ПК0+0,00 до ПК3+0,00 |  | 0d | 2016-06-01 | 2016-08-29 |  |  |  | 2016-06-01 | 2016-06-01 | 1510d | 1511d | start on or after 2016-06-01 | 1. Standard 7 Day Workweek | 112.23 |  | ПР |  | 1 |
| SMR-1.17.7 |  | Земляные работы с ПК0+0,00 до ПК3+0,00 |  | 0d | 2016-07-01 | 2016-08-29 |  |  |  | 2016-07-01 | 2016-07-01 | 1510d | 1511d | start on or after 2016-07-01 | 1. Standard 7 Day Workweek | 10.61 |  | ПР |  | 1 |
| A4760 |  | Демонтаж земляного полотна существующей автодороги пересекающей водоем-накопитель |  | 203d | 2017-03-30 | 2017-10-18 |  |  |  |  |  | 1095d | 1096d | start on or after 2017-03-30 | 1. Standard 7 Day Workweek | 0.29 |  | ПР |  | 1 |
|  | 1 | **Перенос и переустройство инженерных сетей, коммуникаций , сооружений** |  |  |  |  |  |  |  |  |  |  |  |  |  |  |  |  |  |  |
|  | 7 | **ГЛАВА 4. Объекты энергетического хозяйства** |  |  | 2016-03-01 | 2017-10-31 |  |  |  |  |  |  |  |  |  |  |  |  |  |  |
|  | 2 | **Внешнее электроснабжение на напряжение 330кВ-2** |  |  | 2016-03-01 | 2017-10-31 |  |  |  |  |  |  |  |  |  |  |  |  |  |  |
| SMR-10 |  | Вывод в ППР - техн. разрешение на выполнение ПНР после перезавода ВЛ 330 кВ | milestone | 0d | 2017-03-01 | 2017-03-01 |  |  |  |  |  | 0d | 52d | finish on 2017-03-01 | 1. Standard 7 Day Workweek |  |  |  |  | 1 |
| PNR-4.1.2 |  | Выполнение комплекса ПНР после перезавода ВЛ 330 кВ ОРУ 330 кВ I оч. в ОРУ ПС 330 кВ "Стройбаза" |  | 30d | 2017-05-02 | 2017-05-31 | SMR-10 FS+10d, SMR-4.1.1.18.2, SMR-4.1.1.19.1 |  |  |  |  | 11d | 1236d | finish on or before 2017-06-11 | 1. Standard 7 Day Workweek |  |  |  |  | 1 |
| PNR-4.1.1 |  | Выполнение комплекса пуско-наладочных работ ПС 330/10 кВ |  | 30d | 2017-10-02 | 2017-10-31 | PNR-4.1.1.3, PNR-4.1.1.4, PNR-4.1.1.5, PNR-4.1.1.6, PNR-4.1.1.28, PNR-4.1.1.29, PNR-4.1.1.30 |  |  |  |  | 1d | 0d | finish on or before 2017-11-01 | 1. Standard 7 Day Workweek |  |  |  |  | 1 |
|  | 2 | **Генеральный план и транспорт** |  |  | 2016-03-01 | 2016-08-29 |  |  |  |  |  |  |  |  |  |  |  |  |  |  |
| SMR-4.1.1.2.1 |  | ПС 330/10 кВ Стройбаза. Планировка земельного участка |  | 120d | 2016-03-01 A | 2016-08-29 |  | 25% | 89.5d | 2016-05-01 | 2016-08-28 | 191.5d | 0d | start on or after 2016-03-01 | 1. Standard 7 Day Workweek | 52.33 |  | ПР |  | 1 |
|  | 3 | **Открытое распределительное устройство 330 кВ** |  |  | 2016-03-31 | 2017-08-04 |  |  |  |  |  |  |  |  |  |  |  |  |  |  |
| SMR-4.1.1.3.1 |  | ПС 330/10 кВ Стройбаза. Открытое распределительное устройство 330 кВ. Конструктивно-строительные решения. |  | 180d | 2016-03-31 A | 2016-11-27 | SMR-4.1.1.2.1 FS-90d |  | 180d | 2016-03-31 | 2016-09-26 | 219d | 0d |  | 1. Standard 7 Day Workweek |  |  | ПР |  | 1 |
| SMR-4.1.1.3.2 |  | ПС 330/10 кВ Стройбаза. Открытое распределительное устройство 330 кВ. Электротехнические решения |  | 90d | 2016-11-28 | 2017-02-25 | SMR-4.1.1.3.1 |  |  |  |  | 219d | 0d |  | 1. Standard 7 Day Workweek |  |  | ЭЛЕКч |  | 1 |
| SMR-4.1.1.1.2 |  | ПС 330/10 кВ Стройбаза. Схемы электрических соединений (монтаж шкафов) |  | 0d | 2017-02-26 | 2017-04-28 | SMR-4.1.1.3.2 |  |  | 2017-02-26 | 2017-02-26 | 1268d | 1269d |  | 1. Standard 7 Day Workweek |  |  |  |  | 1 |
| PNR-4.1.1.3 |  | Готовность к ПНР оборудования ОРУ 330 кВ | milestone | 0d | 2017-08-04 | 2017-08-04 | SMR-4.1.1.3.2, SMR-4.1.1.26.3, PNR-4.1.1.27.2 |  |  |  |  | 59d | 58d |  | 1. Standard 7 Day Workweek |  |  |  |  | 1 |

| ID | WBS | Activity | Type | Duration | Start | Finish | Predecessors | Remaining | Planned start | Planned finish | Total float | Free float | Constraint | Calendar | 03 - Часть проекта | ОКСГ |
| --- | --- | --- | --- | --- | --- | --- | --- | --- | --- | --- | --- | --- | --- | --- | --- | --- |
|  | 1 | **Ремонтная площадка** |  |  | 2016-06-01 | 2016-08-29 |  |  |  |  |  |  |  |  |  |  |
| SMR-4.1.1.33.1 |  | Конструктивно-строительные решения |  | 0d | 2016-06-01 | 2016-07-30 | SMR-4.1.1.2.1 FS-90d |  | 2016-06-01 | 2016-06-01 | 1510d | 0d |  | 1. Standard 7 Day Workweek | ПР | 1 |
| SMR-4.1.1.33.2 |  | Технологические решения |  | 0d | 2016-07-31 | 2016-08-29 | SMR-4.1.1.33.1 |  | 2016-07-31 | 2016-07-31 | 1510d | 1511d |  | 1. Standard 7 Day Workweek | ПР | 1 |
|  | 4 | **Установка силовых трансформаторов 330 кВ (Т1,Т2)** |  |  | 2016-04-30 | 2017-06-05 |  |  |  |  |  |  |  |  |  |  |
| SMR-4.1.1.4.2 |  | Установка силовых трансформаторов 330кВ (Т1,Т2). Конструктивно-строительные решения |  | 120d | 2016-04-30 A | 2016-10-26 | SMR-4.1.1.2.1 FS-60d | 147.38d | 2016-07-30 | 2016-11-27 | 281.62d | 0d |  | 1. Standard 7 Day Workweek | ПР | 1 |
| SMR-4.1.1.4.1 |  | Установка силовых трансформаторов 330кВ (Т1,Т2). Электротехнические решения |  | 60d | 2016-10-26 | 2016-12-25 | SMR-4.1.1.4.2 |  |  |  | 281.62d | 162.62d |  | 1. Standard 7 Day Workweek | ЭЛЕКч | 1 |
| PNR-4.1.1.4 |  | Готовность к ПНР оборудования установки силовых трансформаторов 330 кВ | milestone | 0d | 2017-06-05 | 2017-06-05 | SMR-4.1.1.4.1, SMR-4.1.1.15.1, SMR-4.1.1.26.1 |  |  |  | 119d | 118d |  | 1. Standard 7 Day Workweek |  | 1 |
|  | 5 | **Здание общеподстанционного пункта (ОПУ)** |  |  | 2016-05-09 | 2017-10-01 |  |  |  |  |  |  |  |  |  |  |
| SMR-4.1.1.5.2 |  | ПС 330/10 кВ Стройбаза. ОПУ. Архитектурно-строительные решения |  | 240d | 2016-05-09 A | 2017-02-25 | SMR-4.1.1.2.1 FS-60d | 270d | 2016-07-30 | 2017-03-27 | 9d | 0d | start on or after 2016-05-09 | 1. Standard 7 Day Workweek | ПР | 1 |
| SMR-4.1.1.5.3 |  | ПС 330/10 кВ Стройбаза. ОПУ. Отопление, вентиляция и кондиционирование |  | 90d | 2016-12-28 | 2017-03-27 | SMR-4.1.1.5.4 SS, SMR-4.1.1.5.2 FS-60d |  |  |  | 101d | 0d |  | 1. Standard 7 Day Workweek | ВентС | 1 |
| SMR-4.1.1.5.4 |  | ПС 330/10 кВ Стройбаза. ОПУ. Внутренние сети водоснабжения и канализации |  | 90d | 2016-12-28 | 2017-03-27 | SMR-4.1.1.5.2 FS-60d |  |  |  | 101d | 0d |  | 1. Standard 7 Day Workweek | ТПНДвк | 1 |
| SMR-4.1.1.5.12 |  | Готовность электротехнических помещений к монтажу оборудования | milestone | 0d | 2017-02-25 | 2017-02-25 | SMR-4.1.1.5.2 |  |  |  | 119d | 0d |  | 1. Standard 7 Day Workweek |  | 1 |
| SMR-4.1.1.16.1 |  | ПС 330/10 кВ Стройбаза. Монтаж панелей переменного тока. |  | 90d | 2017-02-26 | 2017-05-06 | SMR-4.1.1.5.1 SS, SMR-4.1.1.5.12 |  | 2017-02-26 | 2017-05-26 | 149d | 0d |  | 1. Standard 7 Day Workweek | ПР | 1 |
| SMR-4.1.1.5.1 |  | ПС 330/10 кВ Стройбаза. ОПУ. Электротехнические решения |  | 90d | 2017-02-26 | 2017-05-24 | SMR-4.1.1.5.3 FS-30d |  | 2017-02-26 | 2017-05-26 | 101d | 0d |  | 1. Standard 7 Day Workweek | ЭЛЕКч | 1 |
| SMR-4.1.1.5.5 |  | ПС 330/10 кВ Стройбаза. ОПУ. Управление и автоматизация элементов подстанции |  | 90d | 2017-04-25 | 2017-06-23 | SMR-4.1.1.5.1 FS-30d |  | 2017-04-25 | 2017-07-23 | 101d | 100d |  | 1. Standard 7 Day Workweek | ЭЛЕКч | 1 |
| PNR-4.1.1.5 |  | Готовность к ПНР оборудования ОПУ | milestone | 0d | 2017-10-01 | 2017-10-01 | SMR-4.1.1.5.1, SMR-4.1.1.5.3, SMR-4.1.1.5.4, SMR-4.1.1.5.5, SMR-4.1.1.26.1, SMR-4.1.1.16.1, SMR-4.1.1.12.4, SMR-4.1.1.12.5, PNR-4.1.1.27.1 |  |  |  | 1d | 0d |  | 1. Standard 7 Day Workweek |  | 1 |
|  | 6 | **Здание блочного типа комплексного распределительного устройства (КРУ 10кВ)** |  |  | 2016-08-29 | 2017-10-01 |  |  |  |  |  |  |  |  |  |  |
| SMR-4.1.1.6.2 |  | ПС 330/10 кВ Стройбаза. Здание КРУ 10кВ. Конструктивно-строительные решения |  | 90d | 2016-08-29 | 2016-11-27 | SMR-4.1.1.2.1 |  |  |  | 239.5d | 0d |  | 1. Standard 7 Day Workweek | ПР | 1 |
| SMR-4.1.1.6.1 |  | ПС 330/10 кВ Стройбаза. Задание КРУ 10кВ. Электротехнические решения |  | 90d | 2016-11-07 | 2017-02-05 | SMR-4.1.1.6.2 FS-20d |  |  |  | 239.5d | 238.5d |  | 1. Standard 7 Day Workweek | ЭЛЕКч | 1 |
| PNR-4.1.1.6 |  | Готовность к ПНР КРУ 10 кВ | milestone | 0d | 2017-10-01 | 2017-10-01 | SMR-4.1.1.6.1, SMR-4.1.1.12.4, SMR-4.1.1.12.5 |  |  |  | 1d | 0d |  | 1. Standard 7 Day Workweek |  | 1 |
|  | 7 | **Здание людского контрольно-пропускного пункта (ЛКПП)** |  |  | 2017-02-01 | 2017-05-11 |  |  |  |  |  |  |  |  |  |  |
| SMR-4.1.1.7.3 |  | ПС 330/10 кВ Стройбаза. Задание ЛКПП.Конструктивно строительные решения |  | 60d | 2017-02-01 | 2017-04-07 |  |  | 2017-02-01 | 2017-04-01 | 1255.5d | 0d | start on or after 2017-02-01 | 1. Standard 7 Day Workweek | ПР | 1 |
| SMR-4.1.1.7.2 |  | ПС 330/10 кВ Стройбаза. Здание ЛКПП. Внутренние сети водоснабжения и канализации. |  | 30d | 2017-03-08 | 2017-04-11 | SMR-4.1.1.7.3 FS-30d |  | 2017-03-08 | 2017-04-07 | 1255.5d | 0d |  | 1. Standard 7 Day Workweek | ТПНДвк | 1 |
| SMR-4.1.1.7.1 |  | ПС 330/10 кВ Стройбаза. Задание ЛКПП. Электротехнические решения |  | 30d | 2017-04-11 | 2017-05-11 | SMR-4.1.1.7.2 |  |  |  | 1255.5d | 1256.5d |  | 1. Standard 7 Day Workweek | ЭЛЕКч | 1 |

| ID | WBS | Activity | Duration | Start | Finish | Predecessors | Remaining | Planned start | Planned finish | Total float | Free float | Calendar | 03 - Часть проекта | ОКСГ |
| --- | --- | --- | --- | --- | --- | --- | --- | --- | --- | --- | --- | --- | --- | --- |
|  | 8 | **Ограждение** |  | 2016-07-30 | 2016-11-07 |  |  |  |  |  |  |  |  |  |
| SMR-4.1.1.8.1 |  | ПС 330/10 кВ Стройбаза. Ограждение. Конструктивно-строительные решения | 100d | 2016-07-30 | 2016-11-07 | SMR-4.1.1.2.1 FS-30d |  |  |  | 1440.5d | 0d | 1. Standard 7 Day Workweek | ПР | 1 |
| SMR-4.1.1.8.2 |  | ПС 330/10 кВ Стройбаза. Ограждение внутреннее. Конструктивно-строительные решения | 0d | 2016-07-30 | 2016-11-07 | SMR-4.1.1.8.1 SS |  | 2016-07-30 | 2016-07-30 | 1440.5d | 1441.5d | 1. Standard 7 Day Workweek | ПР | 1 |
|  | 9 | **Охранное освещение** |  | 2017-03-13 | 2017-05-21 |  |  |  |  |  |  |  |  |  |
| SMR-4.1.1.9.1 |  | ПС 330/10 кВ Стройбаза. Охранное освещение. Электротехнические решения | 70d | 2017-03-13 | 2017-05-21 | SMR-4.1.1.10.1 SS+45d |  |  |  | 1245d | 1246d | 1. Standard 7 Day Workweek | ЭЛЕКч | 1 |
|  | 10 | **Наружное освещение** |  | 2016-11-28 | 2017-03-27 |  |  |  |  |  |  |  |  |  |
| SMR-4.1.1.10.2 |  | ПС 330/10 кВ Стройбаза. Наружное освещение. Конструктивно-строительные решения | 60d | 2016-11-28 | 2017-01-26 | SMR-4.1.1.3.1 |  |  |  | 1245d | 0d | 1. Standard 7 Day Workweek | ПР | 1 |
| SMR-4.1.1.10.1 |  | ПС 330/10 кВ Стройбаза. Наружное освещение. Электротехнические решения | 60d | 2017-01-27 | 2017-03-27 | SMR-4.1.1.10.2 |  |  |  | 1245d | 0d | 1. Standard 7 Day Workweek | ЭЛЕКч | 1 |
|  | 11 | **Заземление** |  | 2016-08-29 | 2016-10-28 |  |  |  |  |  |  |  |  |  |
| SMR-4.1.1.11.1 |  | ПС 330/10 кВ Стройбаза. Заземление. Электротехнические решения | 60d | 2016-08-29 | 2016-10-28 | SMR-4.1.1.2.1 |  |  |  | 1450.5d | 1451.5d | 1. Standard 7 Day Workweek | ЭЛЕКч | 1 |
|  | 12 | **ПС 330/10 кВ Стройбаза. Кабельное хозяйство** |  | 2016-05-10 | 2017-10-01 |  |  |  |  |  |  |  |  |  |
| SMR-4.1.1.12.2 |  | ПС 330/10 кВ Стройбаза. Кабельное хозяйство. Конструктивно-строительные решения | 250d | 2016-05-10 A | 2017-05-04 | SMR-4.1.1.2.1 | 338d | 2016-09-28 | 2017-06-05 | 1d | 0d | 1. Standard 7 Day Workweek | ПР | 1 |
| SMR-4.1.1.12.4 |  | ПС 330/10 кВ Стройбаза. Кабельное хозяйство. Раскладка силовых кабелей | 150d | 2017-05-05 | 2017-10-01 | SMR-4.1.1.12.2 |  |  |  | 1d | 0d | 1. Standard 7 Day Workweek | ЭЛЕКч | 1 |
| SMR-4.1.1.12.5 |  | ПС 330/10 кВ Стройбаза. Кабельное хозяйство. Раскладка контрольных кабелей | 90d | 2017-05-05 | 2017-08-02 | SMR-4.1.1.12.2 |  |  |  | 61d | 60d | 1. Standard 7 Day Workweek | ЭЛЕКч | 1 |
|  | 13 | **Внутрипощадочные сети водоснабжения и канализации** |  | 2016-05-10 | 2017-05-21 |  |  |  |  |  |  |  |  |  |
| SMR-4.1.1.13.1 |  | ПС 330/10 кВ Стройбаза. Внутриплощадочные сети водоснабжения и канализации | 283d | 2016-05-10 A | 2017-05-21 | SMR-4.1.1.2.1 FS-15d | 354.5d | 2016-09-13 | 2017-06-23 | 1245.5d | 1246.5d | 1. Standard 7 Day Workweek | ТПНДвк | 1 |
|  | 14 | **Внеплощадочные сети водоснабжения и канализации** |  | 2016-05-10 | 2017-04-30 |  |  |  |  |  |  |  |  |  |
| SMR-4.1.1.14.1 |  | ПС 330/10 кВ Стройбаза. Внеплощадочные сети водоснабжения и канализации | 260d | 2016-05-10 A | 2017-04-30 | SMR-4.1.1.2.1 FS-15d | 334d | 2016-09-13 | 2017-05-31 | 1266d | 1267d | 1. Standard 7 Day Workweek | ТПНДвк | 1 |
|  | 15 | **Маслосборник** |  | 2016-05-10 | 2017-04-29 |  |  |  |  |  |  |  |  |  |
| SMR-4.1.1.15.2 |  | ПС 330/10 кВ Стройбаза. Маслосборник. Конструктивно-строительные решения | 90d | 2016-05-10 A | 2017-01-29 | SMR-4.1.1.4.2 | 243d | 2016-11-27 | 2017-02-25 | 156d | 0d | 1. Standard 7 Day Workweek | ПР | 1 |
| SMR-4.1.1.15.1 |  | ПС 330/10 кВ Стройбаза. Маслосборник. Технологические решения. | 90d | 2017-01-30 | 2017-04-29 | SMR-4.1.1.15.2 |  |  |  | 156d | 37d | 1. Standard 7 Day Workweek | ПР | 1 |
|  | 17 | **Очистные сооружения дождевых стоков** |  | 2016-05-05 | 2017-08-14 |  |  |  |  |  |  |  |  |  |
| SMR-4.1.1.17.1 |  | ПС 330/10 кВ Стройбаза. Очистные сооружения дождевых стоков. Конструктивно-строительные решения | 150d | 2016-05-05 A | 2017-06-25 | SMR-4.1.1.2.1 FS+150d | 390d | 2016-05-05 | 2016-10-01 | 1160d | 0d | 1. Standard 7 Day Workweek | ПР | 1 |
| SMR-4.1.1.17.11 |  | ПС 330/10 кВ Стройбаза. Очистные сооружения дождевых стоков. Технологические и конструктивно-строительные решения | 0d | 2017-06-26 | 2017-08-14 | SMR-4.1.1.17.1 |  | 2017-06-26 | 2017-06-26 | 1160d | 1161d | 1. Standard 7 Day Workweek | ЭЛЕКч | 1 |

| ID | WBS | Activity | Duration | Start | Finish | Predecessors | Remaining | Planned start | Planned finish | Total float | Free float | Constraint | Calendar | Cost | 03 - Часть проекта | ОКСГ |
| --- | --- | --- | --- | --- | --- | --- | --- | --- | --- | --- | --- | --- | --- | --- | --- | --- |
|  | 18 | **Реконструкция яч. 6 ОРУ 330 кВ** |  | 2016-05-10 | 2017-05-04 |  |  |  |  |  |  |  |  |  |  |  |
| SMR-4.1.1.18.1 |  | Реконструкция яч.6 ОРУ 330кВ. Работы на смежных ПС. Конструктивно-строительные решения. | 120d | 2016-05-10 A | 2017-04-14 | SMR-10 | 318d | 2017-03-01 | 2017-06-28 | 11d | 0d |  | 1. Standard 7 Day Workweek |  | ПР | 1 |
| SMR-4.1.1.18.2 |  | Реконструкция яч.6 ОРУ 330кВ. Работы на смежных ПС. Электротехнические решения | 200d | 2017-03-31 | 2017-05-01 | SMR-4.1.1.18.1 FS-15d |  | 2017-03-31 | 2017-10-16 | 11d | 0d | start on or after 2016-05-17 | 1. Standard 7 Day Workweek |  | ЭЛЕКч | 1 |
| SMR-4.1.1.18.2.1 |  | Реконструкция яч.6 ОРУ 330 кВ. Работы на смежных ПС. Заказная спецификация | 0d | 2017-03-31 | 2017-05-04 | SMR-4.1.1.18.2 SS |  | 2017-03-31 | 2017-03-31 | 1262d | 1263d |  | 1. Standard 7 Day Workweek |  | ЭЛЕКч | 1 |
|  | 19 | **Заходы ВЛ 330 кВ** |  | 2016-08-29 | 2016-12-30 |  |  |  |  |  |  |  |  |  |  |  |
| SMR-4.1.1.19.3 |  | ВЛ 330 кВ КАЭС 1-3 I цепь. Опоры и фундаменты | 20d | 2016-08-29 | 2016-09-30 | SMR-4.1.1.2.1 |  | 2016-08-29 | 2016-09-18 | 191.5d | 0d |  | 1. Standard 7 Day Workweek |  | ПР | 1 |
| SMR-4.1.1.19.1 |  | ВЛ 330 кВ КАЭС 1-3 I цепь. Расстановка опор, монтажная часть, пересечения. | 15d | 2016-09-30 | 2016-11-02 | SMR-4.1.1.19.3 |  | 2016-09-30 | 2016-10-15 | 191.5d | 0d |  | 1. Standard 7 Day Workweek |  | ПР | 1 |
| SMR-4.1.1.19.8 |  | ВЛ 330 кВ КАЭС 1-3 II цепь. Опоры и фундаменты | 20d | 2016-11-02 | 2016-12-07 | SMR-4.1.1.19.1 |  | 2016-11-02 | 2016-11-22 | 1387.75d | 0d |  | 1. Standard 7 Day Workweek |  | ПР | 1 |
| SMR-4.1.1.19.7 |  | ВЛ 330 кВ КАЭС 1-3 II цепь. Расстановка опор, монтажная часть, пересечения. | 15d | 2016-12-07 | 2016-12-30 | SMR-4.1.1.19.8 |  | 2016-12-07 | 2016-12-22 | 1387.75d | 1388.75d |  | 1. Standard 7 Day Workweek | 52.52 | ПР | 1 |
|  | 20 | **ВОЛС на заводах ВЛ 330 кВ** |  | 2016-09-17 | 2017-02-23 |  |  |  |  |  |  |  |  |  |  |  |
| SMR-4.1.1.20.2 |  | ВОЛС на ВЛ 330 кВ КАЭС 1-3 II цепь. Строительная часть | 75d | 2016-09-17 | 2016-11-30 |  |  |  |  | 1332d | 0d | start on or after 2016-09-17 | 1. Standard 7 Day Workweek |  | ПР | 1 |
| SMR-4.1.1.20.1 |  | ВОЛС на ВЛ 330 кВ КАЭС 1-3 II цепь. Технологическая часть | 90d | 2016-11-26 | 2017-02-23 | SMR-4.1.1.20.2 SS+70d |  |  |  | 1332d | 1333d |  | 1. Standard 7 Day Workweek |  | ЭЛЕКч | 1 |
|  | 21 | **Сети связи. ВОЛС. Станционные сооружения** |  | 2017-02-15 | 2017-06-24 |  |  |  |  |  |  |  |  |  |  |  |
| SMR-4.1.1.21.1 |  | Сети связи. Волоконно оптические линии связи | 130d | 2017-02-15 | 2017-06-24 |  |  |  |  | 1211d | 0d | start on or after 2017-02-15 | 1. Standard 7 Day Workweek |  | ЭЛЕКч | 1 |
| SMR-4.1.1.21.10 |  | Сети связи. Диспетчерско-технологическая связь | 130d | 2017-02-15 | 2017-06-24 | SMR-4.1.1.21.9 SS |  |  |  | 1211d | 0d |  | 1. Standard 7 Day Workweek | 3.46 | ЭЛЕКч | 1 |
| SMR-4.1.1.21.11 |  | Сети связи. Общестанционная телефонная связь | 130d | 2017-02-15 | 2017-06-24 | SMR-4.1.1.21.10 SS |  |  |  | 1211d | 0d |  | 1. Standard 7 Day Workweek | 4.64 | ЭЛЕКч | 1 |
| SMR-4.1.1.21.12 |  | Сети связи. Радиофикация. ПС 330/10 кВ Стройбаза | 130d | 2017-02-15 | 2017-06-24 | SMR-4.1.1.21.11 SS |  |  |  | 1211d | 0d |  | 1. Standard 7 Day Workweek | 1.48 | ЭЛЕКч | 1 |
| SMR-4.1.1.21.13 |  | 05-03-03 Сети связи. Радиофикация | 130d | 2017-02-15 | 2017-06-24 | SMR-4.1.1.21.12 SS |  |  |  | 1211d | 0d |  | 1. Standard 7 Day Workweek |  | ЭЛЕКч | 1 |
| SMR-4.1.1.21.14 |  | Сети связи. Часофикация. ПС 330/10 кВ Стройбаза | 130d | 2017-02-15 | 2017-06-24 | SMR-4.1.1.21.13 SS |  |  |  | 1211d | 0d |  | 1. Standard 7 Day Workweek |  | ЭЛЕКч | 1 |
| SMR-4.1.1.21.15 |  | 05-03-04 Сети связи. Часофикация | 130d | 2017-02-15 | 2017-06-24 | SMR-4.1.1.21.14 SS |  |  |  | 1211d | 0d |  | 1. Standard 7 Day Workweek |  | ЭЛЕКч | 1 |
| SMR-4.1.1.21.16 |  | Сети связи. Система поиска персонала. ПС 330/10 кВ Стройбаза | 130d | 2017-02-15 | 2017-06-24 | SMR-4.1.1.21.15 SS |  |  |  | 1211d | 0d |  | 1. Standard 7 Day Workweek |  | ЭЛЕКч | 1 |
| SMR-4.1.1.21.17 |  | 05-03-05 Сети связи. Система поиска персонала | 130d | 2017-02-15 | 2017-06-24 | SMR-4.1.1.21.16 SS |  |  |  | 1211d | 1212d |  | 1. Standard 7 Day Workweek |  | ЭЛЕКч | 1 |
| SMR-4.1.1.21.2 |  | Сети связи. Кабельные линии связи | 130d | 2017-02-15 | 2017-06-24 | SMR-4.1.1.21.1 SS |  |  |  | 1211d | 0d |  | 1. Standard 7 Day Workweek |  | ЭЛЕКч | 1 |
| SMR-4.1.1.21.3 |  | Сети связи. Станционные сооружения ЦСПИ | 130d | 2017-02-15 | 2017-06-24 | SMR-4.1.1.21.2 SS |  |  |  | 1211d | 0d |  | 1. Standard 7 Day Workweek | 2.88 | ЭЛЕКч | 1 |
| SMR-4.1.1.21.4 |  | 05-03-01 Сети связи. Станционные сооружения ЦСПИ | 130d | 2017-02-15 | 2017-06-24 | SMR-4.1.1.21.3 SS |  |  |  | 1211d | 0d |  | 1. Standard 7 Day Workweek |  | ЭЛЕКч | 1 |
| SMR-4.1.1.21.5 |  | Сети связи. ЭПУ. ПС 330/10 кВ Стройбаза | 130d | 2017-02-15 | 2017-06-24 | SMR-4.1.1.21.4 SS |  |  |  | 1211d | 0d |  | 1. Standard 7 Day Workweek |  | ЭЛЕКч | 1 |
| SMR-4.1.1.21.6 |  | 05-03-02 Сети связи. ЭПУ на ПС 330/10 кВ | 130d | 2017-02-15 | 2017-06-24 | SMR-4.1.1.21.5 SS |  |  |  | 1211d | 0d |  | 1. Standard 7 Day Workweek |  | ЭЛЕКч | 1 |
| SMR-4.1.1.21.7 |  | Сети связи. ЭПУ в здании КПП | 130d | 2017-02-15 | 2017-06-24 | SMR-4.1.1.21.6 SS |  |  |  | 1211d | 0d |  | 1. Standard 7 Day Workweek |  | ЭЛЕКч | 1 |
| SMR-4.1.1.21.8 |  | Сети связи. ЭПУ в здании ЦЩУ 3-й очереди | 130d | 2017-02-15 | 2017-06-24 | SMR-4.1.1.21.7 SS |  |  |  | 1211d | 0d |  | 1. Standard 7 Day Workweek | 3.15 | ЭЛЕКч | 1 |
| SMR-4.1.1.21.9 |  | ЛВС и СКС | 130d | 2017-02-15 | 2017-06-24 | SMR-4.1.1.21.8 SS |  |  |  | 1211d | 0d |  | 1. Standard 7 Day Workweek |  | ЭЛЕКч | 1 |

| ID | WBS | Activity | Duration | Start | Finish | Predecessors | Planned start | Planned finish | Total float | Free float | Constraint | Calendar | 03 - Часть проекта | ОКСГ |
| --- | --- | --- | --- | --- | --- | --- | --- | --- | --- | --- | --- | --- | --- | --- |
|  | 22 | **Комплекс технических средств безопасности** |  | 2017-03-16 | 2017-06-23 |  |  |  |  |  |  |  |  |  |
| SMR-4.1.1.22.1 |  | Комплекс технических средств безопасности. Система пожарной сигнализации | 100d | 2017-03-16 | 2017-06-23 | SMR-4.1.1.22.7 SS |  |  | 1212d | 1213d |  | 1. Standard 7 Day Workweek | ЭЛЕКч | 1 |
| SMR-4.1.1.22.2 |  | Комплекс технических средств безопасности. Система охранной сигнализации. | 100d | 2017-03-16 | 2017-06-23 |  |  |  | 1212d | 0d | start on or after 2017-03-16 | 1. Standard 7 Day Workweek | ЭЛЕКч | 1 |
| SMR-4.1.1.22.3 |  | Комплекс технических средств безопасности. Система тревожно-вызывной сигнализации. | 100d | 2017-03-16 | 2017-06-23 | SMR-4.1.1.22.2 SS |  |  | 1212d | 0d |  | 1. Standard 7 Day Workweek | ЭЛЕКч | 1 |
| SMR-4.1.1.22.4 |  | Комплекс технических средств безопасности. Система прямой телефонной связи | 100d | 2017-03-16 | 2017-06-23 | SMR-4.1.1.22.3 SS |  |  | 1212d | 0d |  | 1. Standard 7 Day Workweek | ЭЛЕКч | 1 |
| SMR-4.1.1.22.5 |  | Комплекс технических средств безопасности. Система охранного телевидения | 100d | 2017-03-16 | 2017-06-23 | SMR-4.1.1.22.4 SS |  |  | 1212d | 0d |  | 1. Standard 7 Day Workweek | ЭЛЕКч | 1 |
| SMR-4.1.1.22.6 |  | Комплекс технических средств безопасности. Система технологического телевидения | 100d | 2017-03-16 | 2017-06-23 | SMR-4.1.1.22.5 SS |  |  | 1212d | 0d |  | 1. Standard 7 Day Workweek | ЭЛЕКч | 1 |
| SMR-4.1.1.22.7 |  | Комплекс технических средств безопасности. Система контроля и управления доступом | 100d | 2017-03-16 | 2017-06-23 | SMR-4.1.1.22.6 SS |  |  | 1212d | 0d |  | 1. Standard 7 Day Workweek | ЭЛЕКч | 1 |
|  | 23-26 | **РЗиА** |  | 2017-02-16 | 2017-08-29 |  |  |  |  |  |  |  |  |  |
|  | 1 | **СМР** |  | 2017-02-16 | 2017-08-29 |  |  |  |  |  |  |  |  |  |
|  | 1 | **РЗиА ОРУ 330 кВ** |  | 2017-02-16 | 2017-06-05 |  |  |  |  |  |  |  |  |  |
| SMR-4.1.1.31.3.11 |  | ОРУ 330 кВ Установка шкафов релейной защиты ВЛ 330 кВ | 10d | 2017-02-16 | 2017-02-26 | SMR-4.1.1.26.3 SF | 2017-02-16 | 2017-02-25 | 1330d | 1331d |  | 1. Standard 7 Day Workweek | ЭЛЕКч | 1 |
| SMR-4.1.1.31.3.12 |  | ОРУ 330 кВ Установка шкафа регистратора аварийных событий | 10d | 2017-02-16 | 2017-02-26 | SMR-4.1.1.26.3 SF | 2017-02-16 | 2017-02-25 | 1330d | 1331d |  | 1. Standard 7 Day Workweek | ЭЛЕКч | 1 |
| SMR-4.1.1.31.3.17 |  | ОРУ 330 кВ Установка шкафов наружной установки элементов ОРУ 330 кВ | 10d | 2017-02-16 | 2017-02-26 | SMR-4.1.1.26.3 SF | 2017-02-16 | 2017-02-25 | 1330d | 1331d |  | 1. Standard 7 Day Workweek | ЭЛЕКч | 1 |
| SMR-4.1.1.31.3.18 |  | ОРУ 330 кВ Установка шкафов наружной установки ТН 330 кВ | 10d | 2017-02-16 | 2017-02-26 | SMR-4.1.1.26.3 SF | 2017-02-16 | 2017-02-25 | 1330d | 1331d |  | 1. Standard 7 Day Workweek | ЭЛЕКч | 1 |
| SMR-4.1.1.26.3 |  | ОРУ 330 кВ Релейная защита и автоматика элементов ОРУ 330 кВ. Кабельный журнал | 100d | 2017-02-26 | 2017-06-05 | SMR-4.1.1.5.12 |  |  | 119d | 0d | as late as possible | 1. Standard 7 Day Workweek | ЭЛЕКч | 1 |
| SMR-4.1.1.31.3.10 |  | ОРУ 330 кВ Установка шкафов АУВ 330 кВ | 90d | 2017-02-26 | 2017-05-26 | SMR-4.1.1.5.12 |  |  | 1230d | 0d |  | 1. Standard 7 Day Workweek | ЭЛЕКч | 1 |
| SMR-4.1.1.31.3.13 |  | ОРУ 330 кВ Установка шкафов УПАСК ВЛ 330 кВ | 0d | 2017-05-27 | 2017-06-05 | SMR-4.1.1.31.3.10 | 2017-05-27 | 2017-05-27 | 1230d | 1231d |  | 1. Standard 7 Day Workweek | ЭЛЕКч | 1 |
|  | 2 | **РЗиА ПС 330/10 кВ Стройбаза** |  | 2017-02-16 | 2017-08-29 |  |  |  |  |  |  |  |  |  |
| SMR-4.1.1.31.3.1 |  | ПС 330/10 кВ Стройбаза. Установка шкафов АУВ 330 кВ | 10d | 2017-02-16 | 2017-02-26 | SMR-4.1.1.26.1 SF | 2017-02-16 | 2017-02-25 | 1330d | 1331d |  | 1. Standard 7 Day Workweek | ЭЛЕКч | 1 |
| SMR-4.1.1.31.3.15 |  | ПС 330/10 кВ Стройбаза. Установка шкафов наружной установки ТН 330 кВ | 10d | 2017-02-16 | 2017-02-26 | SMR-4.1.1.26.1 SF | 2017-02-16 | 2017-02-25 | 1330d | 1331d |  | 1. Standard 7 Day Workweek | ЭЛЕКч | 1 |
| SMR-4.1.1.31.3.16 |  | ПС 330/10 кВ Стройбаза. Установка шкафов наружной установки трансформаторов 330/10 кВ | 10d | 2017-02-16 | 2017-02-26 | SMR-4.1.1.26.1 SF | 2017-02-16 | 2017-02-25 | 1330d | 1331d |  | 1. Standard 7 Day Workweek | ЭЛЕКч | 1 |
| SMR-4.1.1.31.3.2 |  | ПС 330/10 кВ Стройбаза. Установка шкафов релейной защиты шин ОРУ 330 кВ | 10d | 2017-02-16 | 2017-02-26 | SMR-4.1.1.26.1 SF | 2017-02-16 | 2017-02-25 | 1330d | 1331d |  | 1. Standard 7 Day Workweek | ЭЛЕКч | 1 |
| SMR-4.1.1.31.3.3 |  | ПС 330/10 кВ Стройбаза. Установка шкафов релейной защиты СВ 330 кВ | 10d | 2017-02-16 | 2017-02-26 | SMR-4.1.1.26.1 SF | 2017-02-16 | 2017-02-25 | 1330d | 1331d |  | 1. Standard 7 Day Workweek | ЭЛЕКч | 1 |
| SMR-4.1.1.31.3.4 |  | ПС 330/10 кВ Стройбаза. Установка шкафов релейной защиты трансформаторов 330/10 кВ | 10d | 2017-02-16 | 2017-02-26 | SMR-4.1.1.26.1 SF | 2017-02-16 | 2017-02-25 | 1330d | 1331d |  | 1. Standard 7 Day Workweek | ЭЛЕКч | 1 |
| SMR-4.1.1.31.3.6 |  | ПС 330/10 кВ Стройбаза. Установка шкафа автоматики шинных ТН 330 кВ | 10d | 2017-02-16 | 2017-02-26 | SMR-4.1.1.26.1 SF | 2017-02-16 | 2017-02-25 | 1330d | 1331d |  | 1. Standard 7 Day Workweek | ЭЛЕКч | 1 |
| SMR-4.1.1.31.3.7 |  | ПС 330/10 кВ Стройбаза. Установка шкафа регистратора аварийных событий | 10d | 2017-02-16 | 2017-02-26 | SMR-4.1.1.26.1 SF | 2017-02-16 | 2017-02-25 | 1330d | 1331d |  | 1. Standard 7 Day Workweek | ЭЛЕКч | 1 |
| SMR-4.1.1.31.3.8 |  | ПС 330/10 кВ Стройбаза. Установка шкафа резервной центральной сигнализация | 10d | 2017-02-16 | 2017-02-26 | SMR-4.1.1.26.1 SF | 2017-02-16 | 2017-02-25 | 1330d | 1331d |  | 1. Standard 7 Day Workweek | ЭЛЕКч | 1 |
| SMR-4.1.1.26.1 |  | ПС 330/10 кВ Стройбаза. Релейная защита и автоматика элементов ОРУ 330 кВ, ЗРУ 10 кВ. Кабельный журнал | 100d | 2017-02-26 | 2017-06-05 | SMR-4.1.1.5.12 |  |  | 119d | 0d | as late as possible | 1. Standard 7 Day Workweek | ЭЛЕКч | 1 |
| SMR-4.1.1.31.3.14 |  | ПС 330/10 кВ Стройбаза. Установка шкафов наружной установки элементов ОРУ 330 кВ | 60d | 2017-05-02 | 2017-08-29 | SMR-4.1.1.26.1 SF, SMR-4.1.1.18.2 | 2017-05-02 | 2017-06-30 | 1145d | 1146d |  | 1. Standard 7 Day Workweek | ЭЛЕКч | 1 |
| SMR-4.1.1.31.3.5 |  | ПС 330/10 кВ Стройбаза. Установка шкафов релейной защиты ВЛ 330 кВ | 60d | 2017-05-07 | 2017-07-05 | SMR-4.1.1.26.1 SF, SMR-4.1.1.16.1 |  |  | 1140d | 0d |  | 1. Standard 7 Day Workweek | ЭЛЕКч | 1 |
| SMR-4.1.1.31.3.9 |  | ПС 330/10 кВ Стройбаза. Задание заводу на изготовление шкафов УПАСК ВЛ 330 кВ | 0d | 2017-07-06 | 2017-07-15 | SMR-4.1.1.31.3.5 | 2017-07-06 | 2017-07-06 | 1190d | 1191d |  | 1. Standard 7 Day Workweek | ЭЛЕКч | 1 |

| ID | WBS | Activity | Type | Duration | Start | Finish | Predecessors | Total float | Free float | Calendar | Cost | 03 - Часть проекта | ОКСГ |
| --- | --- | --- | --- | --- | --- | --- | --- | --- | --- | --- | --- | --- | --- |
|  | 27 | **СОПТ** |  |  | 2017-02-26 | 2017-08-04 |  |  |  |  |  |  |  |
|  | 1 | **СМР** |  |  | 2017-02-26 | 2017-08-04 |  |  |  |  |  |  |  |
| SMR-4.1.1.31.1.1 |  | ПС 330/10 кВ Стройбаза. Установка шкафов постоянного тока |  | 60d | 2017-02-26 | 2017-04-26 | SMR-4.1.1.5.2 | 59d | 0d | 1. Standard 7 Day Workweek |  | ЭЛЕКч | 1 |
| SMR-4.1.1.31.1.2 |  | ОРУ 330 кВ Установка шкафов постоянного тока |  | 60d | 2017-02-26 | 2017-04-26 | SMR-4.1.1.5.2 | 59d | 0d | 1. Standard 7 Day Workweek |  | ЭЛЕКч | 1 |
| SMR-4.1.1.27.2 |  | ПС 330/10 кВ Стройбаза. Система оперативного постоянного тока. Схемы Полные и подключения рядов зажимов |  | 100d | 2017-04-27 | 2017-08-04 | SMR-4.1.1.31.1.1 | 59d | 0d | 1. Standard 7 Day Workweek |  | ЭЛЕКч | 1 |
| SMR-4.1.1.27.4 |  | ОРУ 330 кВ Система оперативного постоянного тока. Схемы Полные и подключения рядов зажимов |  | 100d | 2017-04-27 | 2017-08-04 | SMR-4.1.1.31.1.2 | 59d | 0d | 1. Standard 7 Day Workweek |  | ЭЛЕКч | 1 |
| PNR-4.1.1.27.1 |  | ПС 330/10 кВ Стройбаза. Готовность к ПНР оборудования СОПТ | milestone | 0d | 2017-08-04 | 2017-08-04 | SMR-4.1.1.27.2 | 59d | 58d | 1. Standard 7 Day Workweek |  | ЭЛЕКч | 1 |
| PNR-4.1.1.27.2 |  | ОРУ 330 кВГотовность к ПНР оборудования СОПТ | milestone | 0d | 2017-08-04 | 2017-08-04 | SMR-4.1.1.27.4 | 59d | 0d | 1. Standard 7 Day Workweek |  | ЭЛЕКч | 1 |
|  | 28 | **СОТИ АССО и ССПИ** |  |  | 2017-04-27 | 2017-09-23 |  |  |  |  |  |  |  |
|  | 1 | **СМР** |  |  | 2017-04-27 | 2017-09-23 |  |  |  |  |  |  |  |
| SMR-4.1.1.31.2.1 |  | ПС 330/10 кВ Стройбаза. Установка шкафов ССПИ |  | 30d | 2017-04-27 | 2017-05-26 | SMR-4.1.1.5.2 FS+60d | 9d | 0d | 1. Standard 7 Day Workweek |  | ЭЛЕКч | 1 |
| SMR-4.1.1.28.4 |  | ПС 330/10 кВ Стройбаза. Система сбора и передачи информации. Подключение контрольных кабелей |  | 120d | 2017-05-27 | 2017-09-23 | SMR-4.1.1.31.2.1 | 9d | 0d | 1. Standard 7 Day Workweek |  | ЭЛЕКч | 1 |
| SMR-4.1.1.28.3 |  | ПС 330/10 кВ Стройбаза. Система сбора и передачи информации. Цифровые связи |  | 30d | 2017-08-25 | 2017-09-23 | SMR-4.1.1.28.4 FF | 9d | 0d | 1. Standard 7 Day Workweek |  | ЭЛЕКч | 1 |
| PNR-4.1.1.28 |  | Готовность к ПНР СОТИ АССО и ССПИ | milestone | 0d | 2017-09-23 | 2017-09-23 | SMR-4.1.1.28.3, SMR-4.1.1.28.4 | 9d | 8d | 1. Standard 7 Day Workweek |  | ЭЛЕКч | 1 |
|  | 29 | **АИИС КУЭ** |  |  | 2017-04-27 | 2017-09-23 |  |  |  |  |  |  |  |
|  | 1 | **СМР** |  |  | 2017-04-27 | 2017-09-23 |  |  |  |  |  |  |  |
| SMR-4.1.1.31.4.1 |  | ПС 330/10 кВ Стройбаза. Установка шкафов АИИС КУЭ |  | 30d | 2017-04-27 | 2017-05-26 | SMR-4.1.1.5.2 FS+60d | 9d | 0d | 1. Standard 7 Day Workweek |  | ЭЛЕКч | 1 |
| SMR-4.1.1.29.3 |  | ПС 330/10 кВ Стройбаза. АИИС КУЭ |  | 120d | 2017-05-27 | 2017-09-23 | SMR-4.1.1.31.4.1 | 9d | 0d | 1. Standard 7 Day Workweek |  | ЭЛЕКч | 1 |
| PNR-4.1.1.29 |  | Готовность к ПНР АИИС КУЭ | milestone | 0d | 2017-09-23 | 2017-09-23 | SMR-4.1.1.29.3 | 9d | 8d | 1. Standard 7 Day Workweek |  | ЭЛЕКч | 1 |
|  | 30 | **АИИС ТУЭ** |  |  | 2017-02-26 | 2017-06-25 |  |  |  |  |  |  |  |
|  | 1 | **СМР** |  |  | 2017-02-26 | 2017-06-25 |  |  |  |  |  |  |  |
| SMR-4.1.1.31.5.1 |  | ПС 330/10 кВ Стройбаза. Установка шкафов АИИС ТУЭ |  | 30d | 2017-02-26 | 2017-03-27 | SMR-4.1.1.5.2 | 99d | 0d | 1. Standard 7 Day Workweek | 21.4 | ЭЛЕКч | 1 |
| SMR-4.1.1.30.1 |  | ОРУ 330 кВ. Автоматизированная информационно-измерительная система технического учёта электроэнергии |  | 90d | 2017-03-28 | 2017-06-25 | SMR-4.1.1.31.5.1 | 99d | 0d | 1. Standard 7 Day Workweek |  | ЭЛЕКч | 1 |
| SMR-4.1.1.30.2 |  | ПС 330/10 кВ Стройбаза. Автоматизированная информационно-измерительная система технического учёта электроэнергии |  | 90d | 2017-03-28 | 2017-06-25 | SMR-4.1.1.31.5.1 | 99d | 0d | 1. Standard 7 Day Workweek |  | ЭЛЕКч | 1 |
| PNR-4.1.1.30 |  | Готовность к ПНР АИИС ТУЭ | milestone | 0d | 2017-06-25 | 2017-06-25 | SMR-4.1.1.30.1, SMR-4.1.1.30.2 | 99d | 98d | 1. Standard 7 Day Workweek |  | ЭЛЕКч | 1 |

| ID | WBS | Activity | Duration | Start | Finish | Predecessors | Complete | Remaining | Planned start | Planned finish | Total float | Free float | Constraint | Calendar | Cost | Actual cost | 03 - Часть проекта | ОКСГ | 01 - Глава ССР | 05 - Вид работ |
| --- | --- | --- | --- | --- | --- | --- | --- | --- | --- | --- | --- | --- | --- | --- | --- | --- | --- | --- | --- | --- |
|  | 32 | **АССД РЗ** |  | 2017-07-06 | 2017-09-03 |  |  |  |  |  |  |  |  |  |  |  |  |  |  |  |
|  | 1 | **СМР** |  | 2017-07-06 | 2017-09-03 |  |  |  |  |  |  |  |  |  |  |  |  |  |  |  |
| SMR-4.1.1.32.1 |  | ПС 330/10 кВ Стройбаза. Автоматизированная система сбора данных релейной защиты | 60d | 2017-07-06 | 2017-09-03 | SMR-4.1.1.31.3.5 |  |  |  |  | 1140d | 1141d |  | 1. Standard 7 Day Workweek |  |  | ЭЛЕКч | 1 |  |  |
|  | 8 | **ГЛАВА 5. Объекты транспортного хозяйства и связи** |  | 2014-07-01 | 2017-05-18 |  |  |  |  |  |  |  |  |  |  |  |  |  |  |  |
|  | 8.1 | **Подъездной железнодорожный путь с мостом** |  | 2014-08-21 | 2017-02-25 |  |  |  |  |  |  |  |  |  |  |  |  |  |  |  |
| 102 |  | Сооружение устоев | 125d | 2014-08-21 A | 2014-12-24 A |  | 100% |  | 2014-08-21 | 2014-12-23 |  |  |  | 1. Standard 7 Day Workweek | 148.32 |  | ПР | 1 | 5 | СМР |
| 103 |  | Сооружение промежуточных опор | 517d | 2014-10-01 A | 2016-02-29 A |  | 100% |  |  |  |  |  | start on or after 2015-01-05 | 1. Standard 7 Day Workweek | 749.32 | 301.49 | ПР | 1 | 5 | СМР |
| 98 |  | Земляное полотно | 439.23d | 2015-03-15 A | 2016-08-27 |  | 80% | 87.22d | 2015-03-15 | 2016-05-27 | 1512.78d | 1513.78d | start on or after 2016-02-01 | 1. Standard 7 Day Workweek |  |  | ПР | 1 | 5 | ЗМР |
| 99 |  | Железнодорожные подходы к мосту | 244.22d | 2015-12-03 A | 2016-12-03 | 104 | 24% | 185.61d | 2015-12-03 | 2016-08-03 | 1414.39d | 1415.39d |  | 1. Standard 7 Day Workweek | 471.54 |  | ПР | 1 | 5 | СМР |
| A4800 |  | Монтаж смотровых ходов и ограждающих конструкций | 117.4d | 2016-01-10 A | 2016-08-06 |  | 43% | 66.4d | 2016-01-10 | 2016-05-06 | 1533.6d | 1534.6d |  | 1. Standard 7 Day Workweek |  |  | ПР | 1 |  |  |
| 105 |  | Сопряжение с проходами | 220d | 2016-03-01 A | 2016-11-17 | 98 | 23% | 169.4d | 2016-05-27 | 2017-01-02 | 1430.6d | 1431.6d | start on or after 2015-08-20 | 1. Standard 7 Day Workweek | 19.78 |  | ПР | 1 | 5 | ЗМР |
| 360 |  | Переустройство ВЛ 330кВ | 70d | 2016-03-01 A | 2016-04-29 A |  | 100% |  | 2016-04-01 | 2016-06-09 |  |  | start on or after 2016-03-01 | 1. Standard 7 Day Workweek | 221.21 |  | ЭЛЕКч | 1 | 5 | РВР |
| 122 |  | Работы по переустройству коммуникаций (ЛЭП, канализации, водопровода) | 270d | 2016-04-01 A | 2017-02-09 |  | 6% | 253.8d | 2016-04-01 | 2016-12-26 | 1346.2d | 1347.2d | start on or after 2016-01-25 | 1. Standard 7 Day Workweek | 78.9 |  | ПР | 1 | 5 | РВР |
| 135 |  | Переустройство ВЛ 10кВ | 90d | 2016-04-01 A | 2016-04-28 A |  | 100% |  | 2016-04-01 | 2016-06-29 |  |  |  | 1. Standard 7 Day Workweek | 33.36 |  | ЭЛЕКч | 1 | 5 | РВР |
| 158 |  | Защита существующей теплосети | 202d | 2016-04-01 A | 2016-08-20 |  | 60% | 80.8d | 2016-04-01 | 2016-10-19 | 1330d | 1520.2d | start on or after 2014-12-05 | 1. Standard 7 Day Workweek | 0.64 |  | ПР | 1 | 5 | СМР |
| 101 |  | Переустройство кабельной ЛЭП-10кВ в районе строительства железнодорожного пути | 100d | 2016-06-01 | 2016-09-08 |  |  |  |  |  | 1500d | 1501d | finish on or after 2015-11-30 | 1. Standard 7 Day Workweek | 0.44 |  | ПР | 1 | 5 | ЭМР |
| 104 |  | Монтажных пролетных строений Lp=23,6 м и 27,6 м | 180d | 2016-06-01 | 2016-11-27 |  |  |  |  |  | 1358d | 0d | start on or after 2016-04-04 | 1. Standard 7 Day Workweek | 730.03 |  | ПР | 1 | 5 | СМР |
| A4790 |  | Мост через р.Сейм. Пролетное строение | 170d | 2016-06-01 | 2016-11-17 | 103, 158 SS |  |  |  |  | 1330d | 0d |  | 1. Standard 7 Day Workweek |  |  | ПР | 1 |  |  |
| A9960 |  | Переустройство ВЛ 10 кВ и ВОЛС | 60d | 2016-06-01 | 2016-07-30 | 360 SS |  |  |  |  | 1540d | 1541d |  | 1. Standard 7 Day Workweek |  |  | ЭЛЕКч | 1 |  |  |
| 100 |  | Переезды на ПК7+43 ПК11+18 | 100d | 2016-11-18 | 2017-02-25 | A4790 |  |  |  |  | 1330d | 1331d | start on or after 2016-05-06 | 1. Standard 7 Day Workweek | 34.21 |  | ПР | 1 | 5 | СМР |
| 220 |  | Устройство наружного освещения. | 62d | 2016-11-28 | 2017-01-28 | 104 |  |  |  |  | 1358d | 1359d | start on or after 2015-10-15 | 1. Standard 7 Day Workweek |  |  | ЭЛЕКч | 1 | 5 | ЭМР |
|  | 8.1.9 | **Устройство СВСиУ в т.ч.** |  | 2015-04-01 | 2016-07-31 |  |  |  |  |  |  |  |  |  |  |  |  |  |  |  |
| 107 |  | СВСиУ. Временный мост | 342.36d | 2015-04-01 A | 2016-03-25 A |  | 100% |  | 2015-04-01 | 2016-03-08 |  |  | start on or after 2016-04-04 | 1. Standard 7 Day Workweek | 1,330.38 |  | ПР | 1 | 5 | СМР |
| 109 |  | Сооружение опор | 395.67d | 2015-04-01 A | 2016-07-31 | 107 SS | 85% | 60.67d | 2015-04-01 | 2016-04-30 | 1539.33d | 1540.33d | finish on or after 2015-03-31 | 1. Standard 7 Day Workweek | 645.46 |  | ПР | 1 | 5 | СМР |

| ID | WBS | Activity | Duration | Start | Finish | Predecessors | Complete | Remaining | Planned start | Planned finish | Total float | Free float | Constraint | Calendar | Cost | Actual cost | 01 - Глава ССР | 03 - Часть проекта | 05 - Вид работ | ОКСГ |
| --- | --- | --- | --- | --- | --- | --- | --- | --- | --- | --- | --- | --- | --- | --- | --- | --- | --- | --- | --- | --- |
|  | 8.2 | **Автодорожный мост через с подходами** |  | 2014-07-01 | 2017-02-18 |  |  |  |  |  |  |  |  |  |  |  |  |  |  |  |
| 117 |  | Сооружение устоев. Строительство опор № 1, 13 | 168d | 2014-07-01 A | 2014-12-15 A |  | 100% |  |  |  |  |  | start on or after 2014-09-15 | 1. Standard 7 Day Workweek |  |  | 5 | ПР | СМР | 1 |
| 131 |  | Валка леса и корчевка пней | 53d | 2014-07-01 A | 2014-08-22 A |  | 100% |  |  |  |  |  |  | 1. Standard 7 Day Workweek | 1.21 |  | 5 | ПР | ЗМР | 1 |
| 118 |  | Сооружение промежуточных опор | 431d | 2014-08-02 A | 2015-10-07 A | 117 SS | 100% |  | 2014-08-02 | 2015-10-06 |  |  |  | 1. Standard 7 Day Workweek | 2,081.06 | 1,935.81 | 5 | ПР | СМР | 1 |
| 112 |  | Автомобильные дороги | 559d | 2014-09-01 A | 2017-02-18 | 131 FF | 53% | 262.73d | 2014-09-01 | 2016-03-12 | 1337.27d | 1338.27d | start on or after 2014-06-01 | 1. Standard 7 Day Workweek | 374.48 |  | 5 | ПР | ЗМР | 1 |
| 119 |  | Монтаж пролетных строений | 542d | 2014-10-01 A | 2016-06-25 | 118 SS | 95% | 25d | 2014-10-01 | 2016-03-25 | 1575d | 1576d |  | 1. Standard 7 Day Workweek |  |  | 5 | ПР | СМР | 1 |
| A4820 |  | Переустройство сетей канализации | 424.2d | 2015-01-12 A | 2016-06-11 | A4810 SS | 98% | 10.2d | 2015-01-12 | 2016-03-11 | 1589.8d | 1590.8d |  | 1. Standard 7 Day Workweek | 110.36 |  |  | ПР |  | 1 |
| 121 |  | Искусственные сооружения. Сопряжения с проходами | 348d | 2015-03-25 A | 2016-06-06 |  | 98% | 6d | 2015-03-25 | 2016-03-06 | 1594d | 1595d | start on or after 2015-07-11 | 1. Standard 7 Day Workweek | 22.92 |  | 5 | ПР | ЗМР | 1 |
| 115 |  | Наружная канализация | 379.09d | 2015-05-01 A | 2016-08-14 |  | 80% | 74.09d | 2015-05-01 | 2016-05-14 | 1525.91d | 1526.91d | start on or after 2015-03-28 | 1. Standard 7 Day Workweek | 38.92 | 7.14 | 5 | ПР | ТМР | 1 |
| A4810 |  | Переустройство сетей канализации | 206.2d | 2015-08-12 A | 2016-06-05 | 166 SS | 98% | 4.2d | 2015-08-12 | 2016-03-05 | 1595.8d | 1596.8d |  | 1. Standard 7 Day Workweek |  |  |  | ПР |  | 1 |
| 116 |  | Устройство электроснабжения и наружного освещения | 237.5d | 2015-08-20 A | 2016-06-30 | 119 | 87% | 30d | 2015-08-20 | 2016-04-13 | 1570d | 1571d | finish on or after 2015-04-10 | 1. Standard 7 Day Workweek | 38.6 |  | 5 | ПР | ЭМР | 1 |
| 120 |  | Сооружение проезжей части | 272d | 2015-09-15 A | 2016-09-12 | 116 SS | 62% | 104d | 2015-09-15 | 2016-06-12 | 1496d | 1497d |  | 1. Standard 7 Day Workweek |  |  | 5 | ПР | СМР | 1 |
| 113 |  | Обустройство дороги | 287.7d | 2015-09-15 A | 2016-09-28 | 120 SS | 58% | 119.7d | 2015-09-15 | 2016-06-28 | 1480.3d | 1481.3d | start on or after 2015-11-30 | 1. Standard 7 Day Workweek | 39.42 |  | 5 | ПР | СМР | 1 |
| A10000 |  | Устройство технологических дорог и площадок (взамен сметы № А-121924пм (08-06-0245С, KUR-CCA1647)) | 155.8d | 2015-12-01 A | 2016-08-04 | A9990 SS | 58% | 64.8d | 2015-12-01 | 2016-05-04 | 1535.2d | 1536.2d |  | 1. Standard 7 Day Workweek | 22.85 |  |  | ПР |  | 1 |
| A9970 |  | Искусственные сооружения. Пролетное строение | 97.3d | 2015-12-01 A | 2016-06-07 | 113 SS | 94% | 6.3d | 2015-12-01 | 2016-03-07 | 1593.7d | 1594.7d |  | 1. Standard 7 Day Workweek | 939.5 |  |  | ПР |  | 1 |
| 166 |  | Переустройство ВЛ 330кВ | 260d | 2016-04-01 A | 2017-01-15 |  | 12% | 229d | 2016-04-01 | 2016-12-16 | 1371d | 1372d | start on or after 2015-07-13 | 1. Standard 7 Day Workweek | 23.04 |  | 5 | ПР | РВР | 1 |
| A9990 |  | Временное электроснабжение | 60d | 2016-04-01 A | 2016-06-09 | A9970 SS | 86% | 8.4d | 2016-04-01 | 2016-05-30 | 1591.6d | 1592.6d |  | 1. Standard 7 Day Workweek | 5.02 |  |  | ЭЛЕКч |  | 1 |
|  | 8.2.11 | **Устройство СВСиУ в т.ч.** |  | 2014-08-30 | 2016-07-23 |  |  |  |  |  |  |  |  |  |  |  |  |  |  |  |
| 223 |  | Искусственные соорцжения. СВСиУ1 временный мост | 215d | 2014-08-30 A | 2015-04-01 A |  | 100% |  |  |  |  |  |  | 1. Standard 7 Day Workweek |  |  |  | ПР |  | 1 |
| 153 |  | Искусственные соорцжения. СВСиУ1 временный мост | 215d | 2014-08-30 A | 2015-04-01 A |  | 100% |  |  |  |  |  |  | 1. Standard 7 Day Workweek | 1,693.13 |  |  | ПР |  | 1 |
| 213 |  | Искусственные сооружения. СВСиУ2 сооружение опор | 215d | 2014-08-30 A | 2015-04-01 A |  | 100% |  |  |  |  |  |  | 1. Standard 7 Day Workweek |  |  |  | ПР |  | 1 |
| A4840 |  | Искусственные сооружения. СВСиУ4 причал | 215d | 2014-08-30 A | 2015-04-01 A |  | 100% |  |  |  |  |  |  | 1. Standard 7 Day Workweek | 63.86 |  |  | ПР |  | 1 |
| 125 |  | Обстройка опор | 151d | 2014-11-02 A | 2015-04-01 A |  | 100% |  |  |  |  |  |  | 1. Standard 7 Day Workweek | 965.93 | 730.16 | 5 | ПР | СМР | 1 |
| 133 |  | Искусственные сооружения. СВСиУ пролетное строение. | 522.2d | 2014-11-17 A | 2016-07-23 | 119 SS | 90% | 52.2d | 2014-11-17 | 2016-04-22 | 1547.8d | 1548.8d |  | 1. Standard 7 Day Workweek | 19.43 |  |  | ПР |  | 1 |

| ID | WBS | Activity | Duration | Start | Finish | Predecessors | Complete | Remaining | Planned start | Planned finish | Total float | Free float | Constraint | Expected finish | Calendar | Cost | 01 - Глава ССР | 03 - Часть проекта | 05 - Вид работ | ОКСГ |
| --- | --- | --- | --- | --- | --- | --- | --- | --- | --- | --- | --- | --- | --- | --- | --- | --- | --- | --- | --- | --- |
|  | 8.3 | **Внеплощадочные автомобильные дороги** |  | 2015-05-01 | 2017-05-18 |  |  |  |  |  |  |  |  |  |  |  |  |  |  |  |
| 128 |  | Внеплощадочные автомобильные дороги (объездная автомобильная дорога) | 656.36d | 2015-05-01 A | 2017-05-18 |  | 46% | 351.36d | 2015-05-01 | 2017-02-15 | 1098.64d | 0d | start on or after 2015-05-01 |  | 1. Standard 7 Day Workweek | 199.14 | 5 | ПР | СМР | 1 |
|  | 9 | **ГЛАВА 7. Благоустройство и озеленение территории.** |  | 2014-09-01 | 2017-05-30 |  |  |  |  |  |  |  |  |  |  |  |  |  |  |  |
|  | 9.1 | **ОСР 07-01 Вертикальная планировка промплощадки( в объеме подготовительного периода)** |  | 2014-09-01 | 2017-05-30 |  |  |  |  |  |  |  |  |  |  |  |  |  |  |  |
| 150 |  | Земляные массы на участке строительно-монтажного городка (этап 1) | 602d | 2014-09-01 A | 2016-07-25 |  | 91% | 55d | 2014-09-01 | 2016-04-24 | 1545d | 1546d | start on or after 2014-07-02 |  | 1. Standard 7 Day Workweek | 1,357.14 | 7 | ПР | ЗМР | 1 |
| 200 |  | Устройство подъездных дорог и съездов на этапе отсыпки строительно-монтажного городка. | 663.47d | 2014-09-01 A | 2016-09-25 | 150 SS | 82% | 116.47d | 2014-09-01 | 2016-06-25 | 1483.53d | 1484.53d |  |  | 1. Standard 7 Day Workweek | 99.26 | 7 | ПР | ЗМР | 1 |
| 130 |  | Земляные массы на участке строительно-монтажного городка. | 294.38d | 2015-08-01 A | 2016-08-21 |  | 72% | 81.38d | 2015-08-01 | 2016-05-21 | 1518.62d | 1519.62d | start on or after 2015-01-01 |  | 1. Standard 7 Day Workweek | 1,144.99 | 7 | ПР | ЗМР | 1 |
| A10010 |  | Земляные массы на участке строительно-монтажного городка. Устройство временных автомобильных дорог | 288.64d | 2015-08-01 A | 2016-08-15 |  | 74% | 75.64d | 2015-08-01 | 2016-05-15 | 1524.36d | 1525.36d |  |  | 1. Standard 7 Day Workweek | 79.9 |  | ПР |  | 1 |
| A10020 |  | Землянные массы на участке северо-западной стороны промплощадки (этап 1) | 197d | 2016-01-11 A | 2016-10-25 | 400 SS | 25% | 147d | 2016-01-11 | 2016-07-25 | 1453d | 1454d |  |  | 1. Standard 7 Day Workweek |  |  | ПР |  | 1 |
| 400 |  | План земляных масс на участке с севро-западной стороны промплощадки. Временные дороги | 364d | 2016-06-01 | 2017-05-30 |  |  |  |  |  | 1236d | 1237d | start on or after 2016-04-01 |  | 1. Standard 7 Day Workweek | 318.7 |  | ПР |  | 1 |
|  | 10 | **ГЛАВА 8. Временные здания и сооружения.** |  | 2013-12-08 | 2019-08-19 |  |  |  |  |  |  |  |  |  |  |  |  |  |  |  |
|  | 1 | **ОСР 08-09 Площадка для размещения временного мобильного административного здания генподрядчика** |  | 2014-05-20 | 2015-01-30 |  |  |  |  |  |  |  |  |  |  |  |  |  |  |  |
| A4870 |  | Вертикальная планировка территории. (взамен сметы А-117898 пм изм.1 | 40d | 2014-05-20 A | 2014-06-28 A |  | 100% |  |  |  |  |  |  |  | 1. Standard 7 Day Workweek | 35.44 |  | ПР |  | 1 |
| A4880 |  | Фундаменты под административное здание, здания медпункта, стройлаборатории и | 55d | 2014-06-28 A | 2014-08-21 A | A4870 | 100% |  |  |  |  |  |  |  | 1. Standard 7 Day Workweek | 8.33 |  | ПР |  | 1 |
| A4930 |  | Площадочные сети водоснабжения и канализации (дополнительно к смете А-119432 пм | 46d | 2014-08-09 A | 2014-09-23 A | A4920 SS | 100% |  |  |  |  |  |  |  | 1. Standard 7 Day Workweek | 0.45 |  | ПР |  | 1 |
| A4890 |  | Структурированные кабельные сети | 21d | 2014-08-21 A | 2014-09-10 A | A4880 | 100% |  |  |  |  |  |  |  | 1. Standard 7 Day Workweek | 5.71 |  | ПР |  | 1 |
| A4900 |  | Площадочные сети водоснабжения и канализации (взамен смет А-117928 пм изм.2 и А-117929 пм изм.2) | 71d | 2014-09-10 A | 2014-11-19 A | A4890 | 100% |  |  |  |  |  |  |  | 1. Standard 7 Day Workweek | 3.86 |  | ПР |  | 1 |
| A4940 |  | Благоустройство территории | 83d | 2014-11-09 A | 2015-01-30 A | A4930 SS | 100% |  |  |  |  |  |  |  | 1. Standard 7 Day Workweek | 9.3 |  | ПР |  | 1 |
| A4910 |  | Организованный ливнесток | 66d | 2014-11-19 A | 2015-01-23 A | A4900 SS | 100% |  |  |  |  |  |  |  | 1. Standard 7 Day Workweek | 1.88 |  | ПР |  | 1 |
| A4920 |  | Дороги и площадки. Основания под здания. | 31d | 2014-12-16 A | 2015-01-15 A | A4910 SS | 100% |  |  |  |  |  |  |  | 1. Standard 7 Day Workweek | 24.14 |  | ПР |  | 1 |
|  | 10.1 | **8.1. Временные здания и сооружения, сооружаемые на площадке АЭС (стройбаза)** |  | 2014-07-01 | 2019-08-19 |  |  |  |  |  |  |  |  |  |  |  |  |  |  |  |
|  | 10.1.1 | **ОСР 08-01 Административно-бытовой комплекс генподрядчика (АБК)** |  | 2015-02-05 | 2019-02-14 |  |  |  |  |  |  |  |  |  |  |  |  |  |  |  |
|  | 10.1.1.1 | **Административный корпус (1.1.1)** |  | 2015-05-12 | 2017-09-19 |  |  |  |  |  |  |  |  |  |  |  |  |  |  |  |
| 136 |  | Железобетонные конструкции | 320d | 2015-05-12 A | 2016-06-26 |  | 92% | 26d | 2015-05-12 | 2016-03-26 | 1574d | 0d |  | 2016-02-26 | 1. Standard 7 Day Workweek | 31.37 | 8 | ПР | СМР | 1 |
| A9170 |  | Конструкции металлические. | 192.5d | 2016-01-11 A | 2016-10-21 | 136 | 26% | 142.5d | 2016-01-11 | 2016-07-21 | 1210.28d | 0d | start on or after 2016-01-11 |  | 1. Standard 7 Day Workweek | 113.54 |  | ПР |  | 1 |
| A9180 |  | Надземная часть. Общестроительные работы. | 150d | 2016-10-21 | 2017-03-20 | A9170 |  |  |  |  | 1210.28d | 0d |  |  | 1. Standard 7 Day Workweek | 180.47 |  | ПР |  | 1 |
| 137 |  | Водопровод и канализация | 50d | 2016-12-20 | 2017-02-08 | A9180 FS-90d |  |  |  |  | 1347.5d | 1348.5d |  |  | 1. Standard 7 Day Workweek | 5.13 | 8 | ТПНДвк | ТМР | 1 |
| 139 |  | Электроосвещение | 50d | 2017-01-29 | 2017-03-20 | A9180 FS-50d |  |  |  |  | 1247.5d | 0d |  |  | 1. Standard 7 Day Workweek | 21.12 | 8 | ЭЛЕКч | ЭМР | 1 |
| 141 |  | Пожарная сигнализация | 45d | 2017-02-18 | 2017-04-04 | A9480 SS |  |  |  |  | 1292.5d | 1293.5d |  |  | 1. Standard 7 Day Workweek | 10.3 | 8 | ЭЛЕКч | ЭМР | 1 |
| A9480 |  | Электросиловое оборудование. | 30d | 2017-02-18 | 2017-03-20 | A9180 FS-30d |  |  |  |  | 1292.5d | 0d |  |  | 1. Standard 7 Day Workweek | 13.69 |  | ЭЛЕКч |  | 1 |
| 140 |  | Сети связи | 60d | 2017-03-20 | 2017-05-19 | 139 |  |  |  |  | 1247.5d | 1248.5d |  |  | 1. Standard 7 Day Workweek | 24.38 | 8 | ЭЛЕКч | ЭМР | 1 |
| A9150 |  | Сети связи. | 30d | 2017-03-20 | 2017-04-19 | 139 |  |  |  |  | 1277.5d | 1278.5d |  |  | 1. Standard 7 Day Workweek | 19.82 |  | ЭЛЕКч |  | 1 |
| SMR-8.1.1.1.1.10 |  | Осадочные марки | 15d | 2017-03-20 | 2017-04-04 | A9180 |  |  |  |  | 1292.5d | 1293.5d |  |  | 1. Standard 7 Day Workweek | 0.05 |  | ПР |  | 1 |
| A9190 |  | Отопление и вентиляция (строительные решения) | 15d | 2017-05-28 | 2017-06-11 | A9180 FS-60d, V-104 |  |  |  |  | 1124d | 0d |  |  | 1. Standard 7 Day Workweek | 0.73 |  | ВентС |  | 1 |
| 138 |  | Отопление и вентиляция | 100d | 2017-06-12 | 2017-09-19 | A9190 |  |  |  |  | 1124d | 1125d |  |  | 1. Standard 7 Day Workweek | 159.88 | 8 | ВентС | ТМР | 1 |

| ID | WBS | Activity | Duration | Start | Finish | Predecessors | Complete | Remaining | Planned start | Planned finish | Total float | Free float | Constraint | Calendar | Cost | Actual cost | 01 - Глава ССР | 03 - Часть проекта | 05 - Вид работ | ОКСГ |
| --- | --- | --- | --- | --- | --- | --- | --- | --- | --- | --- | --- | --- | --- | --- | --- | --- | --- | --- | --- | --- |
|  | 1 | **Поставка оборудования** |  |  |  |  |  |  |  |  |  |  |  |  |  |  |  |  |  |  |
|  | 10.1.1.2 | **Пристроенная столовая** |  | 2015-02-05 | 2018-01-24 |  |  |  |  |  |  |  |  |  |  |  |  |  |  |  |
| 143 |  | Конструкции железобетонные | 390d | 2015-02-05 A | 2016-06-01 |  | 100% | 0d | 2015-02-05 | 2016-02-29 | 1600d | 1601d | start on or after 2015-08-03 | 1. Standard 7 Day Workweek | 3.08 | 2.49 | 8 | ПР | СМР | 1 |
| A4960 |  | Устройство фундаментов пристроенной столовой административного комплекса | 275.6d | 2015-06-03 A | 2016-06-04 | 143 | 99% | 3.6d | 2015-06-03 | 2016-03-04 | 1596.4d | 1597.4d |  | 1. Standard 7 Day Workweek | 5.78 |  |  | ПР |  | 1 |
| A4950 |  | Конструкции металлические. | 269d | 2015-06-06 A | 2016-06-01 | A4960 | 100% | 0d | 2015-06-06 | 2016-02-29 | 1600d | 1601d |  | 1. Standard 7 Day Workweek | 17.17 |  |  | ПР |  | 1 |
| 144 |  | Водопровод и канализация | 640.76d | 2015-07-15 A | 2017-07-16 | 143 | 36% | 410.76d | 2015-07-15 | 2017-04-15 | 1189.24d | 1190.24d |  | 1. Standard 7 Day Workweek | 5.63 |  | 8 | ТПНДвк | ТМР | 1 |
| A4990 |  | Надземная часть. Общестроительные работы. | 287d | 2015-08-08 A | 2016-08-20 | A4950 | 72% | 81d | 2015-08-08 | 2016-05-20 | 1267d | 0d |  | 1. Standard 7 Day Workweek | 50.27 |  |  | ПР |  | 1 |
| A5020 |  | Переход №2. Конструкции железобетонные | 89.7d | 2015-12-04 A | 2016-06-02 | A5010 | 98% | 1.7d | 2015-12-04 | 2016-03-02 | 1563.3d | 0d |  | 1. Standard 7 Day Workweek | 0.59 |  |  | ПР |  | 1 |
| A5030 |  | Переход №2. Общестроительные работы | 30d | 2016-06-02 | 2016-07-02 | A5020 |  |  |  |  | 1563.3d | 0d |  | 1. Standard 7 Day Workweek | 2.67 |  |  | ПР |  | 1 |
| A5060 |  | Электроосвещение. Переход №2 | 15d | 2016-06-22 | 2016-07-07 | A5030 FS-10d |  |  |  |  | 1563.3d | 1564.3d |  | 1. Standard 7 Day Workweek | 0.13 |  |  | ПР |  | 1 |
| A4980 |  | Отопление и вентиляция. Строительная часть. | 30d | 2016-08-01 | 2016-08-30 | A4990 FS-20d |  |  |  |  | 1267d | 270d |  | 1. Standard 7 Day Workweek | 1.51 |  |  | ПР |  | 1 |
| A10610 |  | Технологическое оборудование | 40d | 2016-08-21 | 2016-09-29 | A4990 |  |  |  |  | 1479d | 1480d |  | 1. Standard 7 Day Workweek |  |  |  | ПР |  | 1 |
| SMR-8.1.1.1.2.14 |  | Осадочные марки | 15d | 2016-08-21 | 2016-09-04 | A4990 |  |  |  |  | 1504d | 1505d |  | 1. Standard 7 Day Workweek | 0.07 |  |  | ПР |  | 1 |
| A5000 |  | Переход №1. Конструкции железобетонные | 10d | 2016-12-10 | 2016-12-20 | A9180 FS-100d |  |  |  |  | 1367.5d | 0d |  | 1. Standard 7 Day Workweek | 0.55 |  |  | ПР |  | 1 |
| A5010 |  | Переход №1. Общестроительные работы | 30d | 2016-12-20 | 2017-01-19 | A5000 |  |  |  |  | 1367.5d | 0d |  | 1. Standard 7 Day Workweek | 2.67 |  |  | ПР |  | 1 |
| A5070 |  | Электроосвещение. Переход №1 | 5d | 2017-01-09 | 2017-01-14 | A5010 FS-10d |  |  |  |  | 1372.5d | 1373.5d |  | 1. Standard 7 Day Workweek | 0.13 |  |  | ПР |  | 1 |
| 146 |  | Отопление и вентиляция | 242d | 2017-05-28 | 2018-01-24 | A4980, V-104 |  |  |  |  | 997d | 0d |  | 1. Standard 7 Day Workweek | 19.14 |  | 8 | ТПНДвк | ТМР | 1 |
| 145 |  | Электроосвещение | 60d | 2017-07-12 | 2017-09-09 | A4990, A5050 SS |  |  |  |  | 1004d | 0d |  | 1. Standard 7 Day Workweek | 3.65 |  | 8 | ЭЛЕКч | ЭМР | 1 |
| A5050 |  | Силовое электрооборудование | 120d | 2017-07-12 | 2017-11-08 | 146 SS+45d |  |  |  |  | 1004d | 0d |  | 1. Standard 7 Day Workweek | 4.72 |  |  | ЭЛЕКч |  | 1 |
| 148 |  | Пожарная сигнализация | 100d | 2017-09-10 | 2017-12-18 | 145 |  |  |  |  | 1004d | 0d |  | 1. Standard 7 Day Workweek | 2.21 |  | 8 | ЭЛЕКч | ЭМР | 1 |
| 299 |  | Сети связи | 60d | 2017-09-10 | 2017-11-08 | 145 |  |  |  |  | 1074d | 1075d |  | 1. Standard 7 Day Workweek | 0.17 |  |  | ЭЛЕКч |  | 1 |
| 149 |  | Пусконаладочные работы - 6,01% | 20d | 2017-12-19 | 2018-01-07 | 148 |  |  |  |  | 1014d | 1015d |  | 1. Standard 7 Day Workweek |  |  | 8 | ПР | _ПНР | 1 |
| A5090 |  | Отключение вентоборудования от АПС | 30d | 2017-12-19 | 2018-01-17 | 148, A5050 SS |  |  |  |  | 1004d | 1005d |  | 1. Standard 7 Day Workweek | 0.76 |  |  | ЭЛЕКч |  | 1 |
|  | 1 | **Поставка оборудования** |  |  |  |  |  |  |  |  |  |  |  |  |  |  |  |  |  |  |
|  | 3 | **Ограждение территории админисративно-бытового комплекса** |  | 2017-03-01 | 2017-07-28 |  |  |  |  |  |  |  |  |  |  |  |  |  |  |  |
| SMR-8.1.1.8.1 |  | Архитектурно-строительные решения (АС) | 150d | 2017-03-01 | 2017-07-28 |  |  |  |  |  | 1177d | 1178d | start on or after 2017-03-01 | 1. Standard 7 Day Workweek |  |  |  | ПР |  | 1 |

| ID | WBS | Activity | Duration | Start | Finish | Predecessors | Complete | Remaining | Planned start | Planned finish | Total float | Free float | Constraint | Calendar | Cost | 03 - Часть проекта | ОКСГ | 01 - Глава ССР | 05 - Вид работ |
| --- | --- | --- | --- | --- | --- | --- | --- | --- | --- | --- | --- | --- | --- | --- | --- | --- | --- | --- | --- |
|  | 10.1.1.3 | **Административный корпус генподрядчика (1.1.3)** |  | 2015-09-01 | 2018-04-29 |  |  |  |  |  |  |  |  |  |  |  |  |  |  |
| A5160 |  | Конструкции железобетонные | 327.4d | 2015-09-01 A | 2016-10-24 |  | 56% | 145.4d | 2015-09-01 | 2016-07-24 | 902.6d | 0d |  | 1. Standard 7 Day Workweek | 29.71 | ПР | 1 |  |  |
| A5170 |  | Конструкции металлические. | 150d | 2016-10-24 | 2017-03-23 | A5160 |  |  |  |  | 902.6d | 0d |  | 1. Standard 7 Day Workweek | 113.46 | ПР | 1 |  |  |
| A5180 |  | Общестроительные работы. | 260d | 2017-03-23 | 2017-12-08 | A5170 |  |  |  |  | 902.6d | 0d |  | 1. Standard 7 Day Workweek | 193.83 | ПР | 1 |  |  |
| 152 |  | Водопровод и канализация | 50d | 2017-10-09 | 2017-11-28 | A5180 FS-60d |  |  |  |  | 938.6d | 0d |  | 1. Standard 7 Day Workweek | 3.71 | ТПНДвк | 1 | 8 | ТМР |
| A5150 |  | Отопление и вентиляция (строительные решения) | 15d | 2017-11-28 | 2017-12-13 | 152 |  |  |  |  | 938.6d | 0d |  | 1. Standard 7 Day Workweek | 0.84 | ТПНДвк | 1 |  |  |
| 155 |  | Сети связи | 90d | 2017-12-08 | 2018-03-08 | A5180 |  |  |  |  | 903.6d | 0d |  | 1. Standard 7 Day Workweek | 19.06 | ЭЛЕКч | 1 | 8 | ЭМР |
| A5710 |  | Электроосвещение. | 91d | 2017-12-08 | 2018-03-09 | A5180 |  |  |  |  | 902.6d | 0d |  | 1. Standard 7 Day Workweek | 21.34 | ЭЛЕКч | 1 |  |  |
| SMR-8.1.1.2.10 |  | Осадочные марки | 15d | 2017-12-08 | 2017-12-23 | A5180 |  |  |  |  | 1029.6d | 1030.6d |  | 1. Standard 7 Day Workweek | 0.06 | ПР | 1 |  |  |
| A9230 |  | Отопление , вентиляция и кондиционирование | 90d | 2017-12-13 | 2018-03-13 | A5150, V-104 |  |  |  |  | 938.6d | 36d |  | 1. Standard 7 Day Workweek | 178.25 | ВентС | 1 |  |  |
| 156 |  | Пожарная сигнализация | 40d | 2018-03-08 | 2018-04-17 | 155 |  |  |  |  | 903.6d | 1d |  | 1. Standard 7 Day Workweek | 8.58 | ЭЛЕКч | 1 | 8 | ЭМР |
| A5730 |  | Электросиловое оборудование. | 40d | 2018-03-09 | 2018-04-18 | A5710 |  |  |  |  | 902.6d | 0d |  | 1. Standard 7 Day Workweek | 8.73 | ЭЛЕКч | 1 |  |  |
| 157 |  | Пусконаладочные работы - 6,01% | 11d | 2018-04-18 | 2018-04-29 | A5730, 156, A9230, A5150, 152 |  |  |  |  | 902.6d | 903.6d | start on or after 2015-10-01 | 1. Standard 7 Day Workweek |  | ПР | 1 | 8 | _ПНР |
|  | 1 | **Поставка оборудования** |  |  |  |  |  |  |  |  |  |  |  |  |  |  |  |  |  |
|  | 10.1.1.4 | **Столовая на 500 посадочных мест** |  | 2017-06-15 | 2019-02-14 |  |  |  |  |  |  |  |  |  |  |  |  |  |  |
| 159 |  | Конструкции железобетонные | 90d | 2017-06-15 | 2017-09-12 |  |  |  |  |  | 611d | 0d | start on or after 2017-06-15 | 1. Standard 7 Day Workweek | 25.63 | ПР | 1 | 8 | СМР |
| A5960 |  | Конструкции металлические. | 90d | 2017-09-13 | 2017-12-11 | 159 |  |  |  |  | 611d | 0d |  | 1. Standard 7 Day Workweek | 54.61 | ПР | 1 |  |  |
| A5940 |  | Общестроительные работы | 230d | 2017-12-12 | 2018-07-29 | A5960 |  |  |  |  | 611d | 0d |  | 1. Standard 7 Day Workweek | 124.67 | ПР | 1 |  |  |
| 161 |  | Хоз-питьевой водопровод и канализация | 90d | 2018-05-01 | 2018-07-29 | A5940 FS-90d |  |  |  |  | 741d | 0d |  | 1. Standard 7 Day Workweek | 13.1 | ТПНДвк | 1 | 8 | ТМР |
| 162 |  | Отопление и вентиляция | 90d | 2018-07-10 | 2018-10-07 | 161 FS-20d, V-104 |  |  |  |  | 741d | 742d |  | 1. Standard 7 Day Workweek | 39.79 | ВентС | 1 | 8 | ТМР |
| 210 |  | Технологическое оборудование(аннулирована) | 60d | 2018-07-30 | 2018-09-27 | A5940 |  |  |  |  | 751d | 752d |  | 1. Standard 7 Day Workweek |  | ПР | 1 |  |  |
| A5980 |  | Электроснабжение | 60d | 2018-07-30 | 2018-09-27 | A5940 |  |  |  |  | 611d | 0d |  | 1. Standard 7 Day Workweek | 12.01 | ЭЛЕКч | 1 |  |  |
| SMR-8.1.1.3.11 |  | Осадочные марки | 0d | 2018-07-30 | 2018-08-03 | A5940, A5940 FF |  |  | 2018-07-30 | 2018-07-30 | 806d | 807d |  | 1. Standard 7 Day Workweek |  | ПР | 1 |  |  |
| 163 |  | Электроосвещение | 60d | 2018-10-28 | 2018-12-26 | A5980 FS+30d |  |  |  |  | 611d | 0d |  | 1. Standard 7 Day Workweek | 8.57 | ЭЛЕКч | 1 | 8 | ЭМР |
| 335 |  | Сети связи | 1d | 2018-12-27 | 2018-12-27 | A5990 SS |  |  |  |  | 660d | 661d |  | 1. Standard 7 Day Workweek | 0.02 | ЭЛЕКч | 1 |  |  |
| A5990 |  | Автоматическая пожарная сигнализация | 30d | 2018-12-27 | 2019-01-25 | 163 |  |  |  |  | 611d | 0d |  | 1. Standard 7 Day Workweek | 3.41 | ЭЛЕКч | 1 |  |  |
| 165 |  | Пусконаладочные работы - 6,01% | 20d | 2019-01-26 | 2019-02-14 | A5990 |  |  |  |  | 611d | 612d |  | 1. Standard 7 Day Workweek |  |  | 1 | 8 | _ПНР |

| ID | WBS | Activity | Duration | Start | Finish | Predecessors | Complete | Remaining | Planned start | Planned finish | Total float | Free float | Constraint | Calendar | Cost | 03 - Часть проекта | ОКСГ | 01 - Глава ССР | 05 - Вид работ |
| --- | --- | --- | --- | --- | --- | --- | --- | --- | --- | --- | --- | --- | --- | --- | --- | --- | --- | --- | --- |
|  | 1 | **Поставка оборудования** |  |  |  |  |  |  |  |  |  |  |  |  |  |  |  |  |  |
|  | 10.1.1.5 | **Столовая на 150 посадочных мест** |  | 2015-05-01 | 2017-05-27 |  |  |  |  |  |  |  |  |  |  |  |  |  |  |
| A6010 |  | Общестроительные работы (земляные работы, фундамент) | 485d | 2015-05-01 A | 2016-11-27 |  | 63% | 180d | 2015-05-01 | 2016-08-27 | 1390d | 0d |  | 1. Standard 7 Day Workweek | 20.57 | ПР | 1 |  |  |
| A6020 |  | Металлические конструкции | 191.8d | 2015-09-02 A | 2016-06-11 |  | 94% | 10.8d | 2015-09-02 | 2016-03-11 | 1589.2d | 1590.2d |  | 1. Standard 7 Day Workweek | 40.38 | ПР | 1 |  |  |
| 167 |  | Общестроительные работы (стены, кровля) | 303.04d | 2016-02-01 A | 2016-12-02 |  | 39% | 184.85d | 2016-02-01 | 2016-11-30 | 1295.15d | 0d |  | 1. Standard 7 Day Workweek | 86.18 | ПР | 1 | 8 | СМР |
| A6030 |  | Дополнительные объемы работ по устройству временных дорог из дорожных плит. | 30d | 2016-11-28 | 2016-12-27 | A6010 |  |  |  |  | 1390d | 1391d |  | 1. Standard 7 Day Workweek | 4.71 | ПР | 1 |  |  |
| 172 |  | Система водопровода и канализации | 60d | 2016-12-02 | 2017-01-31 | 167, SMR-2.1.211 FS-60d |  |  |  |  | 1295.15d | 56.15d |  | 1. Standard 7 Day Workweek | 10.47 | ТПНДвк | 1 | 8 | ТМР |
| 209 |  | Технологическое оборудование | 40d | 2016-12-02 | 2017-01-11 | 167 |  |  |  |  | 1375.15d | 1376.15d |  | 1. Standard 7 Day Workweek |  | ПР | 1 |  |  |
| A6060 |  | Электросиловое оборудование. | 30d | 2016-12-02 | 2017-01-01 | 167 |  |  |  |  | 1328.15d | 0d |  | 1. Standard 7 Day Workweek | 9.7 | ЭЛЕКч | 1 |  |  |
| SMR-2.1.211 |  | Водоснабжение и канализация.Строительная часть | 0d | 2016-12-02 | 2017-01-31 | 167 |  |  | 2016-12-02 | 2016-12-02 | 1295.15d | 0d |  | 1. Standard 7 Day Workweek |  | ПР | 1 |  |  |
| SMR-8.1.1.4.12 |  | Осадочные марки | 15d | 2016-12-02 | 2016-12-17 | 167 |  |  |  |  | 1400.15d | 1401.15d |  | 1. Standard 7 Day Workweek | 0.06 | ПР | 1 |  |  |
| 171 |  | Электроосвещение | 30d | 2017-01-01 | 2017-01-31 | A6060 |  |  |  |  | 1355.15d | 1356.15d |  | 1. Standard 7 Day Workweek | 7.12 | ЭЛЕКч | 1 | 8 | ЭМР |
| 700 |  | Сети связи | 2d | 2017-01-01 | 2017-01-03 | A6060 |  |  |  |  | 1328.15d | 0d |  | 1. Standard 7 Day Workweek | 0.04 | ЭЛЕКч | 1 |  |  |
| A6050 |  | Столовая на 150 посадочных мест. Отключение вентоборудования от АПС | 5d | 2017-01-03 | 2017-01-08 | 700 |  |  |  |  | 1328.15d | 0d |  | 1. Standard 7 Day Workweek | 0.62 | ВентС | 1 |  |  |
| A6040 |  | Пожарная сигнализация. | 30d | 2017-01-08 | 2017-02-07 | A6050 |  |  |  |  | 1328.15d | 0d |  | 1. Standard 7 Day Workweek | 2.74 | ЭЛЕКч | 1 |  |  |
| 173 |  | Пусконаладочные работы | 20d | 2017-02-07 | 2017-02-27 | A6040 |  |  |  |  | 1328.15d | 1329.15d |  | 1. Standard 7 Day Workweek |  |  | 1 | 8 | _ПНР |
| 170 |  | Отопление и вентиляция | 60d | 2017-03-29 | 2017-05-27 | 172, V-104 FF |  |  |  |  | 1239d | 1240d |  | 1. Standard 7 Day Workweek | 26.55 | ВентС | 1 | 8 | ТМР |
|  | 1 | **Поставка оборудования** |  |  |  |  |  |  |  |  |  |  |  |  |  |  |  |  |  |
|  | 1 | **Здание штаба строительства(о/п)** |  | 2017-03-05 | 2017-11-24 |  |  |  |  |  |  |  |  |  |  |  |  |  |  |
| SMR-8.1.1.6.1 |  | Архитектурно-строительные решения (АС) | 90d | 2017-03-05 | 2017-06-02 |  |  |  |  |  | 1058d | 0d | start on or after 2017-03-05 | 1. Standard 7 Day Workweek |  | ПР | 1 | 8 | СМР |
| SMR-8.1.1.6.2 |  | Конструкции железобетонные (КЖ) | 60d | 2017-06-03 | 2017-08-01 | SMR-8.1.1.6.1 |  |  |  |  | 1058d | 0d |  | 1. Standard 7 Day Workweek |  | ПР | 1 | 8 | СМР |
| SMR-8.1.1.6.3 |  | Конструкции металлические (КМ) | 30d | 2017-08-02 | 2017-08-31 | SMR-8.1.1.6.2 |  |  |  |  | 1058d | 0d |  | 1. Standard 7 Day Workweek |  | ПР | 1 | 8 | СМР |
| SMR-8.1.1.6.4 |  | Отопление и вентиляция (ОВ) | 50d | 2017-09-01 | 2017-10-20 | SMR-8.1.1.6.3 |  |  |  |  | 1058d | 0d |  | 1. Standard 7 Day Workweek |  | ВентС | 1 | 8 | ТМР |
| SMR-8.1.1.6.5 |  | Водоснабжение и канализация (ВК) | 40d | 2017-09-01 | 2017-10-10 | SMR-8.1.1.6.4 SS |  |  |  |  | 1058d | 0d |  | 1. Standard 7 Day Workweek |  | ТПНДвк | 1 | 8 | СМР |
| SMR-8.1.1.6.6 |  | Силовое электрооборудование (ЭМ) | 30d | 2017-10-11 | 2017-11-09 | SMR-8.1.1.6.5 |  |  |  |  | 1058d | 0d |  | 1. Standard 7 Day Workweek |  | ЭЛЕКч | 1 | 8 | ЭМР |
| SMR-8.1.1.6.7 |  | Электроосвещение (ЭО) | 20d | 2017-10-11 | 2017-10-30 | SMR-8.1.1.6.6 SS |  |  |  |  | 1058d | 0d |  | 1. Standard 7 Day Workweek |  | ЭЛЕКч | 1 | 8 | ЭМР |
| SMR-8.1.1.6.8 |  | Электроснабжение (ЭС) | 40d | 2017-10-11 | 2017-11-19 | SMR-8.1.1.6.7 SS |  |  |  |  | 1058d | 0d |  | 1. Standard 7 Day Workweek |  | ЭЛЕКч | 1 | 8 | ЭМР |
| SMR-8.1.1.6.10 |  | Связь и сигнализация (СС) | 20d | 2017-10-26 | 2017-11-14 | SMR-8.1.1.6.9 SS |  |  |  |  | 1068d | 1069d |  | 1. Standard 7 Day Workweek |  | ЭЛЕКч | 1 | 8 | ЭМР |
| SMR-8.1.1.6.9 |  | Пожарная сигнализация (ПС) | 30d | 2017-10-26 | 2017-11-24 | SMR-8.1.1.6.8 SS+15d |  |  |  |  | 1058d | 0d |  | 1. Standard 7 Day Workweek |  | ЭЛЕКч | 1 | 8 | ЭМР |

| ID | WBS | Activity | Type | Duration | Start | Finish | Predecessors | Planned start | Planned finish | Total float | Free float | Constraint | Calendar | Cost | 01 - Глава ССР | 03 - Часть проекта | 05 - Вид работ | ОКСГ |
| --- | --- | --- | --- | --- | --- | --- | --- | --- | --- | --- | --- | --- | --- | --- | --- | --- | --- | --- |
|  | 10.1.1.6 | **Павильоны для ожидания автобусов** |  |  | 2017-02-01 | 2017-05-11 |  |  |  |  |  |  |  |  |  |  |  |  |
| 175 |  | Общестроительные работы. |  | 20d | 2017-02-01 | 2017-02-20 |  |  |  | 1255d | 0d | start on or after 2017-02-01 | 1. Standard 7 Day Workweek | 2.57 | 8 | ПР | СМР | 1 |
| A6090 |  | Общестроительные работы. |  | 20d | 2017-02-01 | 2017-02-20 | 175 SS |  |  | 1255d | 0d |  | 1. Standard 7 Day Workweek | 2.57 |  | ПР |  | 1 |
| A6100 |  | Общестроительные работы. |  | 20d | 2017-02-21 | 2017-03-12 | A6090 |  |  | 1255d | 0d |  | 1. Standard 7 Day Workweek | 3.34 |  | ПР |  | 1 |
| A6110 |  | Общестроительные работы. |  | 20d | 2017-03-13 | 2017-04-01 | A6100 |  |  | 1255d | 0d |  | 1. Standard 7 Day Workweek | 3.34 |  | ПР |  | 1 |
| A6120 |  | Общестроительные работы. |  | 20d | 2017-04-02 | 2017-04-21 | A6110 |  |  | 1255d | 0d |  | 1. Standard 7 Day Workweek | 3.34 |  | ПР |  | 1 |
| A6130 |  | Общестроительные работы. |  | 20d | 2017-04-22 | 2017-05-11 | A6120 |  |  | 1255d | 1256d |  | 1. Standard 7 Day Workweek | 3.34 |  | ПР |  | 1 |
|  | 2 | **Стоянка для легкового автотранспорта и разворота(о/п)** |  |  | 2017-09-12 | 2017-11-15 |  |  |  |  |  |  |  |  |  |  |  |  |
| SMR-8.1.1.7.1 |  | Архитектурно-строительные решения (АС) |  | 65d | 2017-09-12 | 2017-11-15 |  |  |  | 1067d | 1068d | start on or after 2017-09-12 | 1. Standard 7 Day Workweek | 28.29 | 8 | ПР | СМР | 1 |
|  | 10.1.2 | **Строительство комплекса общестроительных организаций** |  |  | 2015-03-07 | 2018-10-13 |  |  |  |  |  |  |  |  |  |  |  |  |
|  | 10.1.2.1 | **Административно-лабораторно-бытовой корпус (БРХ)** |  |  | 2016-06-02 | 2017-11-02 |  |  |  |  |  |  |  |  |  |  |  |  |
| 178 |  | Конструкции железобетонные |  | 60d | 2016-06-02 | 2016-07-31 |  |  |  | 270d | 0d | start on or after 2016-06-02 | 1. Standard 7 Day Workweek | 53.57 | 8 | ПР | СМР | 1 |
| A6150 |  | Металлический каркас корпуса |  | 160d | 2016-08-01 | 2017-01-07 | 178 |  |  | 270d | 0d |  | 1. Standard 7 Day Workweek | 45.32 |  | ПР |  | 1 |
| A6160 |  | Надземная часть. Общестроительные работы. |  | 199d | 2017-01-08 | 2017-07-25 | A6150 |  |  | 270d | 0d |  | 1. Standard 7 Day Workweek | 93.88 |  | ПР |  | 1 |
| 179 |  | Водопровод и канализация |  | 60d | 2017-05-27 | 2017-07-25 | A6160 FS-60d |  |  | 1135d | 0d |  | 1. Standard 7 Day Workweek | 5.84 | 8 | ТПНДвк | ТМР | 1 |
| 181 |  | Электроосвещение |  | 50d | 2017-07-06 | 2017-08-24 | A6160 FS-20d |  |  | 270d | 0d |  | 1. Standard 7 Day Workweek | 11.01 | 8 | ЭЛЕКч | ЭМР | 1 |
| 180 |  | Отопление и вентиляция |  | 45d | 2017-07-26 | 2017-09-08 | 179, V-104 |  |  | 1135d | 1136d |  | 1. Standard 7 Day Workweek | 22.65 | 8 | ВентС | ТМР | 1 |
| 228 |  | Технологическое оборудование(аннулирована) |  | 5d | 2017-07-26 | 2017-07-30 | A6160 |  |  | 1175d | 1176d |  | 1. Standard 7 Day Workweek |  |  | ПР |  | 1 |
| 239 |  | Осадочные марки |  | 15d | 2017-07-26 | 2017-07-30 | A6160 | 2017-07-26 | 2017-08-09 | 1175d | 1176d |  | 1. Standard 7 Day Workweek | 0.02 |  | ПР |  | 1 |
| A6180 |  | Электросиловое оборудование. |  | 35d | 2017-07-26 | 2017-08-29 | A6160 |  |  | 1145d | 1146d |  | 1. Standard 7 Day Workweek | 8.89 |  | ЭЛЕКч |  | 1 |
| 182 |  | Пожарная сигнализация |  | 20d | 2017-08-25 | 2017-09-13 | 181 |  |  | 270d | 0d |  | 1. Standard 7 Day Workweek | 3.5 | 8 | ЭЛЕКч | ЭМР | 1 |
| A6170 |  | Сети связи. |  | 30d | 2017-09-14 | 2017-10-13 | 182 |  |  | 270d | 0d |  | 1. Standard 7 Day Workweek | 3.61 |  | ЭЛЕКч |  | 1 |
| 183 |  | Пусконаладочные работы - 6,01% |  | 20d | 2017-10-14 | 2017-11-02 | A6170 |  |  | 270d | 1d |  | 1. Standard 7 Day Workweek |  | 8 |  | _ПНР | 1 |
|  | 1 | **Поставка оборудования** |  |  |  |  |  |  |  |  |  |  |  |  |  |  |  |  |
|  | 10.1.2.2 | **Бетоносмесительный узел производительностью 100 и 200мЗ/час** |  |  | 2016-06-01 | 2017-11-03 |  |  |  |  |  |  |  |  |  |  |  |  |
| SMR-8.2.2.4 |  | Конструкции железобетонные |  | 100d | 2016-06-01 | 2016-09-08 |  |  |  | 490d | 0d | start on or after 2016-05-01 | 1. Standard 7 Day Workweek | 30.7 |  | ПР |  | 1 |
| SMR-8.2.2.3 |  | Архитектурно-строительные решения узел №1 производительностью 100м3/час |  | 0d | 2016-07-01 | 2016-10-08 | SMR-8.2.2.4 SS+30d | 2016-07-01 | 2016-07-01 | 1470d | 1471d |  | 1. Standard 7 Day Workweek | 31.48 |  | ПР |  | 1 |
| SMR-8.2.2.14 |  | Монтаж технологического оборудования бетоносмесительный узел №1 |  | 100d | 2016-09-09 | 2016-12-17 | SMR-8.2.2.4 |  |  | 490d | 0d |  | 1. Standard 7 Day Workweek |  |  | ПР |  | 1 |
| SMR-8.2.2.24 |  | Монтаж технологического оборудования бетоносмесительный узел №2 |  | 100d | 2016-12-18 | 2017-03-27 | SMR-8.2.2.14 |  |  | 490d | 0d |  | 1. Standard 7 Day Workweek |  |  | ПР |  | 1 |
| SMR-8.2.2.5 |  | Осадочные марки |  | 15d | 2017-03-28 | 2017-04-01 | SMR-8.2.2.24 | 2017-03-28 | 2017-04-11 | 1295d | 1296d |  | 1. Standard 7 Day Workweek | 0.51 |  | ПР |  | 1 |
| V-100 |  | Готовность производства бетона | milestone | 0d | 2017-11-03 | 2017-11-03 | SMR-8.2.2.24, 183 FF, 389 FF, SMR-8.2.4.5 FF, 193 FF, A6250 FF, 195 FF, 201 |  |  | 269d |  |  | 1. Standard 7 Day Workweek |  |  |  |  | 1 |

| ID | WBS | Activity | Duration | Start | Finish | Predecessors | Planned start | Planned finish | Total float | Free float | Constraint | Calendar | Cost | 03 - Часть проекта | ОКСГ | 01 - Глава ССР | 05 - Вид работ |
| --- | --- | --- | --- | --- | --- | --- | --- | --- | --- | --- | --- | --- | --- | --- | --- | --- | --- |
|  | 1 | **Поставка оборудования** |  |  |  |  |  |  |  |  |  |  |  |  |  |  |  |
|  | 10.1.2.3 | **Склад цемента ёмкостью 4800т** |  | 2016-07-01 | 2017-05-06 |  |  |  |  |  |  |  |  |  |  |  |  |
| A6220 |  | Конструкции железобетонные (фундаменты) | 70d | 2016-07-01 | 2016-09-08 |  |  |  | 420d | 0d | start on or after 2016-07-01 | 1. Standard 7 Day Workweek | 20.16 | ПР | 1 |  |  |
| A6200 |  | Металлические конструкции (силосы, м/к) | 170d | 2016-09-09 | 2017-02-25 | A6220 |  |  | 420d | 0d |  | 1. Standard 7 Day Workweek | 176.81 | ПР | 1 |  |  |
| 189 |  | Общестроительные работы. | 90d | 2017-01-07 | 2017-04-06 | A6200 FS-50d |  |  | 420d | 0d |  | 1. Standard 7 Day Workweek | 13.87 | ПР | 1 | 8 | СМР |
| A6230 |  | Технологические трубопроводы цемента (фундаменты) | 10d | 2017-02-26 | 2017-03-07 | A6200 |  |  | 1290d | 0d |  | 1. Standard 7 Day Workweek | 1.01 | ПР | 1 |  |  |
| SMR-8.2.3.8 |  | Воздухоснабжение (фундаменты) | 10d | 2017-02-26 | 2017-03-07 | A6200 |  |  | 1290d | 0d |  | 1. Standard 7 Day Workweek | 1.29 | ПР | 1 |  |  |
| SMR-8.2.3.7.1 |  | Технологические трубопроводы цемента(строительные решения) | 30d | 2017-03-08 | 2017-04-06 | A6230 |  |  | 1290d | 1291d |  | 1. Standard 7 Day Workweek |  | ТПНДвк | 1 |  |  |
| SMR-8.2.3.7.2 |  | Технологические трубопроводы цемента | 10d | 2017-03-08 | 2017-03-17 | A6230 |  |  | 1310d | 1311d |  | 1. Standard 7 Day Workweek |  | ТПНДвк | 1 |  |  |
| SMR-8.2.3.9 |  | Воздухоснабжение | 30d | 2017-03-08 | 2017-04-06 | SMR-8.2.3.8 |  |  | 1290d | 1291d |  | 1. Standard 7 Day Workweek |  | ПР | 1 |  |  |
| 389 |  | Электроосвещение, силовое оборудование, системы связи, молниезащита, пожарная сигнализация | 30d | 2017-04-07 | 2017-05-06 | 189 |  |  | 450d | 181d |  | 1. Standard 7 Day Workweek | 5.15 | ЭЛЕКч | 1 |  |  |
| SMR-8.2.3.10 |  | Осадочные марки | 0d | 2017-04-07 | 2017-04-11 | 189 | 2017-04-07 | 2017-04-07 | 1285d | 1286d |  | 1. Standard 7 Day Workweek |  | ПР | 1 |  |  |
|  | 1 | **Поставка оборудования** |  |  |  |  |  |  |  |  |  |  |  |  |  |  |  |
|  | 3 | **Железнодорожный путь с эстакадой для разгрузки инертных материалов** |  | 2017-02-01 | 2017-06-30 |  |  |  |  |  |  |  |  |  |  |  |  |
| SMR-8.2.13.2 |  | Конструкции железобетонные (КЖ) | 90d | 2017-02-01 | 2017-05-01 |  |  |  | 1205d | 0d | start on or after 2017-02-01 | 1. Standard 7 Day Workweek | 0.01 | ПР | 1 |  |  |
| SMR-8.2.13.7 |  | Комплект ПЖ(жд путь) | 60d | 2017-04-02 | 2017-05-31 | SMR-8.2.13.2 FS-30d |  |  | 1235d | 1236d |  | 1. Standard 7 Day Workweek |  | ПР | 1 |  |  |
| SMR-8.2.13.12 |  | Конструкции металлические | 0d | 2017-05-02 | 2017-06-30 | SMR-8.2.13.2 | 2017-05-02 | 2017-05-02 | 1205d | 1206d |  | 1. Standard 7 Day Workweek | 4.56 | ПР | 1 |  |  |
|  | 10.1.2.4 | **Склад инертных материалов** |  | 2017-06-01 | 2017-10-28 |  |  |  |  |  |  |  |  |  |  |  |  |
| 191 |  | Общестроительные работы. | 150d | 2017-06-01 | 2017-10-28 | 189 SS |  |  | 275d | 0d | start on or after 2017-06-01 | 1. Standard 7 Day Workweek | 3.06 | ПР | 1 | 8 | СМР |
| SMR-8.2.4.5 |  | Корректировка ПСД в связи с новой ж/д эстакадой | 150d | 2017-06-01 | 2017-10-28 | 191 SS |  |  | 275d | 6d |  | 1. Standard 7 Day Workweek |  | ПР | 1 |  |  |
|  | 10.1.2.5 | **Склад для хранения химических добавок** |  | 2017-09-05 | 2017-10-14 |  |  |  |  |  |  |  |  |  |  |  |  |
| 193 |  | Монтаж Блок-модулей (4 шт.) | 40d | 2017-09-05 | 2017-10-14 |  |  |  | 289d | 20d | start on or after 2017-09-05 | 1. Standard 7 Day Workweek |  | ПР | 1 | 8 | ТМР |
|  | 1 | **Поставка оборудования** |  |  |  |  |  |  |  |  |  |  |  |  |  |  |  |
|  | 10.1.2.6 | **Компрессорная установка** |  | 2017-09-05 | 2017-11-03 |  |  |  |  |  |  |  |  |  |  |  |  |
| 195 |  | Монтаж технологического оборудования | 60d | 2017-09-05 | 2017-11-03 |  |  |  | 269d | 0d | start on or after 2017-09-05 | 1. Standard 7 Day Workweek |  | ПР | 1 | 8 | ТМР |

| ID | WBS | Activity | Type | Duration | Start | Finish | Predecessors | Complete | Remaining | Planned start | Planned finish | Total float | Free float | Constraint | Calendar | Cost | 01 - Глава ССР | 03 - Часть проекта | 05 - Вид работ | ОКСГ |
| --- | --- | --- | --- | --- | --- | --- | --- | --- | --- | --- | --- | --- | --- | --- | --- | --- | --- | --- | --- | --- |
|  | 10.1.2.7 | **Автовесы типа ВА-80-18 (1шт)** |  |  | 2017-04-01 | 2017-05-15 |  |  |  |  |  |  |  |  |  |  |  |  |  |  |
| 197 |  | Общестроительные работы (земляные работы, фундамент) |  | 30d | 2017-04-01 | 2017-04-30 |  |  |  |  |  | 1251d | 0d | start on or after 2017-04-01 | 1. Standard 7 Day Workweek | 2.62 | 8 | ПР | СМР | 1 |
| 247 |  | Монтаж технологического оборудования |  | 15d | 2017-05-01 | 2017-05-15 | 197 |  |  |  |  | 1251d | 1252d |  | 1. Standard 7 Day Workweek |  |  | ПР |  | 1 |
|  | 1 | **Поставка оборудования** |  |  |  |  |  |  |  |  |  |  |  |  |  |  |  |  |  |  |
|  | 10.1.2.8 | **Открытая площадка для отстоя и мойки миксеров** |  |  | 2016-09-01 | 2016-11-29 |  |  |  |  |  |  |  |  |  |  |  |  |  |  |
| 199 |  | Общестроительные работы (земляные работы, ж/б) |  | 40d | 2016-09-01 | 2016-10-10 |  |  |  |  |  | 608d | 0d | start on or after 2016-09-01 | 1. Standard 7 Day Workweek | 2.57 | 8 | ПР | СМР | 1 |
| A6240 |  | Строительные работы (площадка) |  | 30d | 2016-10-11 | 2016-11-09 | 199 |  |  |  |  | 608d | 0d |  | 1. Standard 7 Day Workweek | 3.82 |  | ПР |  | 1 |
| A6250 |  | Монтаж технологического оборудования |  | 20d | 2016-11-10 | 2016-11-29 | A6240 |  |  |  |  | 608d | 339d |  | 1. Standard 7 Day Workweek |  |  | ПР |  | 1 |
|  | 1 | **Поставка оборудования** |  |  |  |  |  |  |  |  |  |  |  |  |  |  |  |  |  |  |
|  | 10.1.2.9 | **Открытая площадка для размещения резервных емкостей для воды** |  |  | 2016-08-30 | 2016-10-28 |  |  |  |  |  |  |  |  |  |  |  |  |  |  |
| 201 |  | Общестроительные работы. |  | 60d | 2016-08-30 | 2016-10-28 |  |  |  |  |  | 640d | 371d | start on or after 2016-08-30 | 1. Standard 7 Day Workweek | 5.81 | 8 | ПР | СМР | 1 |
|  | 10.1.2.10 | **Цех изготовления армометаллоблоков** |  |  | 2015-03-07 | 2017-09-29 |  |  |  |  |  |  |  |  |  |  |  |  |  |  |
| 203 |  | Конструкции железобетонные |  | 439.42d | 2015-03-07 A | 2016-08-19 |  | 82% | 79.42d | 2015-03-07 | 2016-05-19 | 1520.58d | 1521.58d | start on or after 2015-03-07 | 1. Standard 7 Day Workweek | 180.8 | 8 | ПР | СМР | 1 |
| A6290 |  | Конструкции металлические |  | 242.4d | 2015-11-02 A | 2016-09-10 | 203 FS-50d | 58% | 101.81d | 2015-11-02 | 2016-07-01 | 344.19d | 0d |  | 1. Standard 7 Day Workweek | 628.75 |  | ПР |  | 1 |
| A6280 |  | Силовое электрооборудование. Строительная часть. |  | 90d | 2016-03-02 A | 2016-08-24 | A6270 FS-100d | 6% | 84.42d | 2016-09-29 | 2016-12-28 | 1515.58d | 1516.58d |  | 1. Standard 7 Day Workweek |  |  | ПР |  | 1 |
| A6270 |  | Общестроительные работы. |  | 250d | 2016-07-12 | 2017-03-19 | A6290 FS-60d |  |  |  |  | 344.19d | 0d |  | 1. Standard 7 Day Workweek | 657.13 |  | ПР |  | 1 |
| 206 |  | Силовое электрооборудование. |  | 40d | 2016-12-09 | 2017-01-18 | A6270 FS-100d |  |  |  |  | 1368.19d | 1369.19d |  | 1. Standard 7 Day Workweek | 169.75 | 8 | ЭЛЕКч | ЭМР | 1 |
| 207 |  | Технологическое оборудование |  | 90d | 2016-12-19 | 2017-03-19 | A6270 FS-90d |  |  |  |  | 1308.19d | 1309.19d |  | 1. Standard 7 Day Workweek | 303.02 | 8 | ПР | ТМР | 1 |
| A10040 |  | Водопровод и канализация. Строительная часть. |  | 10d | 2017-01-18 | 2017-01-28 | A6270 FS-60d |  |  |  |  | 1298.19d | 0d |  | 1. Standard 7 Day Workweek |  |  | ПР |  | 1 |
| A6360 |  | Электроосвещение (Строительная часть). |  | 15d | 2017-01-18 | 2017-02-02 | A6270 FS-60d |  |  |  |  | 344.19d | 0d |  | 1. Standard 7 Day Workweek | 5.7 |  | ЭЛЕКч |  | 1 |
| 205 |  | Водопровод и канализация |  | 60d | 2017-01-28 | 2017-03-29 | A10040 |  |  |  |  | 1298.19d | 1299.19d |  | 1. Standard 7 Day Workweek | 13.77 | 8 | ТПНДвк | ТМР | 1 |
| A6370 |  | Электроосвещение. |  | 40d | 2017-02-02 | 2017-03-14 | A6360 |  |  |  |  | 344.19d | 0d |  | 1. Standard 7 Day Workweek | 51.93 |  | ЭЛЕКч |  | 1 |
| A6350 |  | Сети связи |  | 5d | 2017-03-14 | 2017-03-19 | A6370 |  |  |  |  | 344.19d | 0d |  | 1. Standard 7 Day Workweek | 0.5 |  | ЭЛЕКч |  | 1 |
| A6340 |  | Пожарная сигнализация. |  | 20d | 2017-03-19 | 2017-04-08 | A6350 |  |  |  |  | 344.19d | 159.19d |  | 1. Standard 7 Day Workweek | 3.42 |  | ЭЛЕКч |  | 1 |
| SMR-8.2.10.11 |  | Осадочные марки |  | 15d | 2017-03-19 | 2017-04-03 | A6270 |  |  |  |  | 1293.19d | 1294.19d |  | 1. Standard 7 Day Workweek | 0.51 |  | ПР |  | 1 |
| 204 |  | Отопление и вентиляция. Строительная часть. |  | 20d | 2017-05-28 | 2017-06-16 | A6270 FS-90d, V-104 |  |  |  |  | 185d | 0d |  | 1. Standard 7 Day Workweek | 135.05 | 8 | ВентС | ТМР | 1 |
| A6320 |  | Отопление и вентиляция. |  | 90d | 2017-06-17 | 2017-09-14 | 204 |  |  |  |  | 185d | 0d |  | 1. Standard 7 Day Workweek |  |  | ВентС |  | 1 |
| 208 |  | Пусконаладочные работы - 6,01% |  | 15d | 2017-09-15 | 2017-09-29 | A6320, A6340 |  |  |  |  | 185d | 0d |  | 1. Standard 7 Day Workweek |  | 8 |  | _ПНР | 1 |
| V-102 |  | Готовность производства армометаллоблоков | milestone | 0d | 2017-09-29 | 2017-09-29 | 219 FF, SMR-8.14.1.14.2 FF, 208 |  |  |  |  | 185d |  |  | 1. Standard 7 Day Workweek |  |  |  |  | 1 |

| ID | WBS | Activity | Duration | Start | Finish | Predecessors | Complete | Remaining | Planned start | Planned finish | Total float | Free float | Constraint | Calendar | Cost | 03 - Часть проекта | ОКСГ | 01 - Глава ССР | 05 - Вид работ |
| --- | --- | --- | --- | --- | --- | --- | --- | --- | --- | --- | --- | --- | --- | --- | --- | --- | --- | --- | --- |
|  | 1 | **Поставка оборудования** |  |  |  |  |  |  |  |  |  |  |  |  |  |  |  |  |  |
|  | 10.1.2.12 | **Цех дробеструйной очистки и антикоррозионной защиты металлоконструкций** |  | 2015-04-24 | 2017-08-15 |  |  |  |  |  |  |  |  |  |  |  |  |  |  |
| A10030 |  | Конструкции железобетонные. | 364d | 2015-04-24 A | 2016-07-22 |  | 86% | 52d | 2015-04-24 | 2016-04-21 | 1548d | 1549d |  | 1. Standard 7 Day Workweek | 25.81 | ПР | 1 |  |  |
| A6400 |  | Металлические конструкции. | 150d | 2016-05-20 A | 2016-10-08 | A10030 FS-20d | 14% | 129.75d | 2016-06-02 | 2016-10-29 | 341.25d | 0d |  | 1. Standard 7 Day Workweek | 94.8 | ПР | 1 |  |  |
| 214 |  | Общестроительные работы. | 150d | 2016-08-29 | 2017-01-26 | A6400 FS-40d |  |  |  |  | 341.25d | 0d |  | 1. Standard 7 Day Workweek | 169.58 | ПР | 1 | 8 | СМР |
| 216 |  | Водопровод и канализация | 30d | 2016-11-17 | 2016-12-17 | 214 FS-70d |  |  |  |  | 1320.25d | 0d |  | 1. Standard 7 Day Workweek | 6.21 | ТПНДвк | 1 | 8 | ТМР |
| A6420 |  | Отопление и вентиляция (строительная часть). | 30d | 2016-11-17 | 2016-12-17 | 216 SS |  |  |  |  | 1320.25d | 161.25d |  | 1. Standard 7 Day Workweek | 8.16 | ВентС | 1 |  |  |
| 217 |  | Технологическое оборудование | 35d | 2017-01-26 | 2017-03-02 | 214 |  |  |  |  | 1325.25d | 0d |  | 1. Standard 7 Day Workweek |  | ПР | 1 | 8 | ТМР |
| 218 |  | Электроосвещение | 30d | 2017-01-26 | 2017-02-25 | 214 |  |  |  |  | 341.25d | 0d |  | 1. Standard 7 Day Workweek | 8.68 | ЭЛЕКч | 1 | 8 | ЭМР |
| 227 |  | Технологическое оборудование | 35d | 2017-01-26 | 2017-03-02 | 217 SS |  |  |  |  | 1325.25d | 1326.25d |  | 1. Standard 7 Day Workweek |  | ПР | 1 |  |  |
| SMR-8.2.12.13 |  | Осадочные марки. | 10d | 2017-01-26 | 2017-02-05 | 214 |  |  |  |  | 1350.25d | 1351.25d |  | 1. Standard 7 Day Workweek | 0.18 | ПР | 1 |  |  |
| A6430 |  | Пожарная сигнализация . | 25d | 2017-02-25 | 2017-03-22 | A6450 SS |  |  |  |  | 1295.25d | 0d |  | 1. Standard 7 Day Workweek | 7.94 | ЭЛЕКч | 1 |  |  |
| A6450 |  | Электросиловое оборудование. | 35d | 2017-02-25 | 2017-04-01 | 218 |  |  |  |  | 341.25d | 0d |  | 1. Standard 7 Day Workweek | 12.85 | ЭЛЕКч | 1 |  |  |
| A6480 |  | Система автоматического управления вентустановками. | 35d | 2017-02-25 | 2017-04-01 | A6450 SS |  |  |  |  | 341.25d | 0d |  | 1. Standard 7 Day Workweek | 12.49 | ЭЛЕКч | 1 |  |  |
| A6460 |  | Сети связи. | 10d | 2017-03-22 | 2017-04-01 | A6430 |  |  |  |  | 1295.25d | 1296.25d |  | 1. Standard 7 Day Workweek | 0.33 | ЭЛЕКч | 1 |  |  |
| A6470 |  | Автоматизация устройств отопления. | 5d | 2017-04-01 | 2017-04-06 | A6480 |  |  |  |  | 341.25d | 0d |  | 1. Standard 7 Day Workweek | 0.19 | ЭЛЕКч | 1 |  |  |
| 219 |  | Пусконаладочные работы - 6,01% | 20d | 2017-04-06 | 2017-04-26 | A6470 |  |  |  |  | 341.25d | 156.25d |  | 1. Standard 7 Day Workweek |  |  | 1 | 8 | _ПНР |
| 215 |  | Отопление и вентиляция | 80d | 2017-05-28 | 2017-08-15 | A6420, V-104 |  |  |  |  | 1159d | 1160d |  | 1. Standard 7 Day Workweek | 71.5 | ВентС | 1 | 8 | ТМР |
|  | 1 | **Поставка оборудования** |  |  |  |  |  |  |  |  |  |  |  |  |  |  |  |  |  |
|  | 4 | **Открытая площадка складирования с козловым краном г/п 50т** |  | 2017-03-01 | 2017-08-22 |  |  |  |  |  |  |  |  |  |  |  |  |  |  |
| A10060 |  | Устройство подкрановых путей | 130d | 2017-03-01 | 2017-07-08 |  |  |  |  |  | 223d | 0d | start on or after 2017-03-01 | 1. Standard 7 Day Workweek |  | ПР | 1 |  |  |
| A10050 |  | Электросиловое оборудование. | 20d | 2017-07-09 | 2017-07-28 | A10060 |  |  |  |  | 1177d | 1178d |  | 1. Standard 7 Day Workweek |  | ЭЛЕКч | 1 |  |  |
| SMR-8.14.1.14.2 |  | Питающая сеть 0,4 кВ | 45d | 2017-07-09 | 2017-08-22 | A10060 |  |  |  |  | 223d | 38d |  | 1. Standard 7 Day Workweek |  | ЭЛЕКч | 1 |  |  |
|  | 2 | **Комплекс изготовления конструкций реакторного отделения** |  | 2015-08-15 | 2018-10-13 |  |  |  |  |  |  |  |  |  |  |  |  |  |  |
|  | 1 | **Административно бытовой корпус(о/п)** |  | 2017-06-01 | 2018-10-13 |  |  |  |  |  |  |  |  |  |  |  |  |  |  |
| SMR-8.2.15.1.2 |  | Конструкции железобетонные (КЖ) | 50d | 2017-06-01 | 2017-07-20 |  |  |  |  |  | 735d | 0d | start on or after 2017-06-01 | 1. Standard 7 Day Workweek | 7.59 | ПР | 1 | 8 | СМР |
| SMR-8.2.15.1.3 |  | Конструкции металлические (КМ) | 150d | 2017-07-21 | 2017-12-17 | SMR-8.2.15.1.2 |  |  |  |  | 735d | 0d |  | 1. Standard 7 Day Workweek | 45.78 | ПР | 1 | 8 | СМР |
| SMR-8.2.15.1.1 |  | Архитектурно-строительные решения (АС) | 180d | 2017-12-18 | 2018-06-15 | SMR-8.2.15.1.3 |  |  |  |  | 735d | 0d |  | 1. Standard 7 Day Workweek | 106.27 | ПР | 1 | 8 | СМР |
| SMR-8.2.15.1.4 |  | Отопление и вентиляция (ОВ) | 60d | 2018-04-27 | 2018-06-25 | SMR-8.2.15.1.5 SS |  |  |  |  | 845d | 846d |  | 1. Standard 7 Day Workweek | 47.31 | ВентС | 1 | 8 | ТМР |
| SMR-8.2.15.1.5 |  | Водоснабжение и канализация (ВК) | 60d | 2018-04-27 | 2018-06-25 | SMR-8.2.15.1.1 FS-50d |  |  |  |  | 845d | 0d |  | 1. Standard 7 Day Workweek | 6.16 | ТПНДвк | 1 | 8 | СМР |
| A4040 |  | Электроосвещение (ЭО) | 30d | 2018-06-16 | 2018-07-15 | SMR-8.2.15.1.1 |  |  |  |  | 735d | 0d |  | 1. Standard 7 Day Workweek | 10.88 | ЭЛЕКч | 1 | 8 | ЭМР |
| SMR-8.2.15.1.10 |  | Технология производства (ТХ) | 20d | 2018-06-16 | 2018-07-05 | SMR-8.2.15.1.1 |  |  |  |  | 835d | 836d |  | 1. Standard 7 Day Workweek |  | ПР | 1 | 8 | ТМР |
| SMR-8.2.15.1.11 |  | Осадочные марки | 15d | 2018-06-16 | 2018-06-30 | SMR-8.2.15.1.1 |  |  |  |  | 840d | 841d |  | 1. Standard 7 Day Workweek | 0.02 | ПР | 1 |  |  |
| SMR-8.2.15.1.6 |  | Силовое электрооборудование (ЭМ) | 40d | 2018-07-16 | 2018-08-24 | A4040 |  |  |  |  | 735d | 0d |  | 1. Standard 7 Day Workweek | 5.73 | ЭЛЕКч | 1 | 8 | ЭМР |
| SMR-8.2.15.1.8 |  | Пожарная сигнализация (ПС) | 20d | 2018-08-25 | 2018-09-13 | SMR-8.2.15.1.6 |  |  |  |  | 735d | 0d |  | 1. Standard 7 Day Workweek | 1.81 | ЭЛЕКч | 1 | 8 | ЭМР |
| SMR-8.2.15.1.9 |  | Сети связи (СС) | 30d | 2018-09-14 | 2018-10-13 | SMR-8.2.15.1.8 |  |  |  |  | 735d | 736d |  | 1. Standard 7 Day Workweek | 4.65 | ЭЛЕКч | 1 | 8 | ЭМР |

| ID | WBS | Activity | Duration | Start | Finish | Predecessors | Complete | Remaining | Planned start | Planned finish | Total float | Free float | Constraint | Calendar | Cost | 01 - Глава ССР | 03 - Часть проекта | 05 - Вид работ | ОКСГ |
| --- | --- | --- | --- | --- | --- | --- | --- | --- | --- | --- | --- | --- | --- | --- | --- | --- | --- | --- | --- |
|  | 2 | **Мастерская с кузницей(о/п)** |  | 2016-06-01 | 2017-06-15 |  |  |  |  |  |  |  |  |  |  |  |  |  |  |
| A4100 |  | Конструкции железобетонные (КЖ) | 60d | 2016-06-01 | 2016-07-30 |  |  |  |  |  | 1220d | 0d |  | 1. Standard 7 Day Workweek | 6.88 | 8 | ПР | СМР | 1 |
| A4110 |  | Конструкции металлические (КМ) | 130d | 2016-07-31 | 2016-12-07 | A4100 |  |  |  |  | 1220d | 0d |  | 1. Standard 7 Day Workweek | 56.84 | 8 | ПР | СМР | 1 |
| A4090 |  | Архитектурно-строительные решения (АС) | 180d | 2016-12-08 | 2017-06-05 | A4110 |  |  |  |  | 1220d | 0d |  | 1. Standard 7 Day Workweek | 86.4 | 8 | ПР | СМР | 1 |
| A4140 |  | Силовое электрооборудование (ЭМ) | 50d | 2017-04-07 | 2017-05-26 | A4090 FS-60d |  |  |  |  | 1238d | 0d |  | 1. Standard 7 Day Workweek | 8.67 | 8 | ЭЛЕКч | ЭМР | 1 |
| A4150 |  | Электроосвещение (ЭО) | 30d | 2017-04-07 | 2017-05-06 | A4140 SS |  |  |  |  | 1238d | 0d |  | 1. Standard 7 Day Workweek | 6.65 | 8 | ЭЛЕКч | ЭМР | 1 |
| A4120 |  | Отопление и вентиляция (ОВ) | 40d | 2017-04-17 | 2017-05-26 | A4130 SS |  |  |  |  | 1240d | 1241d |  | 1. Standard 7 Day Workweek | 22.85 | 8 | ВентС | ТМР | 1 |
| A4130 |  | Водоснабжение и канализация (ВК) | 30d | 2017-04-17 | 2017-05-16 | A4090 FS-50d |  |  |  |  | 1240d | 0d |  | 1. Standard 7 Day Workweek | 3.59 | 8 | ТПНДвк | СМР | 1 |
| A4160 |  | Сети связи (СС) | 7d | 2017-05-07 | 2017-05-13 | A4150 |  |  |  |  | 1238d | 0d |  | 1. Standard 7 Day Workweek | 0.24 | 8 | ЭЛЕКч | ЭМР | 1 |
| A6490 |  | Пожарная сигнализация. | 15d | 2017-05-14 | 2017-05-28 | A4160 |  |  |  |  | 1238d | 1239d |  | 1. Standard 7 Day Workweek |  |  | ЭЛЕКч |  | 1 |
| SMR-8.2.15.4.11 |  | Осадочные марки | 0d | 2017-06-06 | 2017-06-15 | A4090 |  |  | 2017-06-06 | 2017-06-06 | 1220d | 1221d |  | 1. Standard 7 Day Workweek | 0.12 |  | ПР |  | 1 |
|  | 3 | **Открытая стоянка спецтехники(о/п)** |  | 2016-06-01 | 2016-12-21 |  |  |  |  |  |  |  |  |  |  |  |  |  |  |
| A4170 |  | Общестроительные работы | 204d | 2016-06-01 | 2016-12-21 |  |  |  |  |  | 1396d | 1397d | start on or after 2016-06-01 | 1. Standard 7 Day Workweek | 40.84 | 8 | ПР | СМР | 1 |
|  | 4 | **Открытая площадка готовой продукции(о/п)** |  | 2016-06-27 | 2017-01-20 |  |  |  |  |  |  |  |  |  |  |  |  |  |  |
| A4190 |  | Архитектурно-строительные решения (АС) | 190d | 2016-06-27 | 2017-01-02 |  |  |  |  |  | 1384d | 0d | start on or after 2016-06-27 | 1. Standard 7 Day Workweek | 118.85 | 8 | ПР | СМР | 1 |
| A10630 |  | Технологическое оборудование (собственные средства) | 68d | 2016-11-14 | 2017-01-20 |  |  |  |  |  | 1366d | 1367d | start on or after 2016-11-14 | 1. Standard 7 Day Workweek |  |  | ПР |  | 1 |
| A4200 |  | Силовое электрооборудование | 50d | 2016-11-14 | 2017-01-02 | A4190 FF |  |  |  |  | 1384d | 1385d |  | 1. Standard 7 Day Workweek | 1.46 | 8 | ЭЛЕКч | ЭМР | 1 |
|  | 10.1.2.111 | **Открытая площадка укрупнительной сборки армометаллоблоков(о/п)** |  | 2015-08-15 | 2017-11-30 |  |  |  |  |  |  |  |  |  |  |  |  |  |  |
| 410 |  | Общестроительные работы | 484d | 2015-08-15 A | 2017-06-13 |  | 22% | 377.52d | 2015-08-15 | 2016-12-10 | 1052.48d | 0d | start on or after 2015-08-15 | 1. Standard 7 Day Workweek | 163.23 | 8 | ПР | СМР | 1 |
| 430 |  | Монтаж технологического оборудования | 230d | 2017-03-15 | 2017-10-31 | 410 FS-90d |  |  |  |  | 1052.48d | 0d |  | 1. Standard 7 Day Workweek |  |  | ПР |  | 1 |
| 420 |  | Электросиловое оборудование | 15d | 2017-10-31 | 2017-11-15 | 430 |  |  |  |  | 1052.48d | 0d |  | 1. Standard 7 Day Workweek | 9.59 |  | ЭЛЕКч |  | 1 |
| 222 |  | Пусконаладочные работы - 6,01% | 15d | 2017-11-15 | 2017-11-30 | 420 |  |  |  |  | 1052.48d | 1053.48d |  | 1. Standard 7 Day Workweek |  | 8 |  | _ПНР | 1 |
|  | 1 | **Поставка оборудования** |  |  |  |  |  |  |  |  |  |  |  |  |  |  |  |  |  |
|  | 5 | **Материальный склад (теплый)(о/п)** |  | 2016-06-04 | 2017-11-25 |  |  |  |  |  |  |  |  |  |  |  |  |  |  |
| A4240 |  | Конструкции железобетонные (КЖ) | 89d | 2016-06-04 | 2016-08-31 |  |  |  |  |  | 1287d | 0d | start on or after 2016-06-04 | 1. Standard 7 Day Workweek | 2.44 | 8 | ПР | СМР | 1 |
| A4230 |  | Конструкции металлические (КМ) | 91d | 2016-09-01 | 2016-11-30 | A4240 |  |  |  |  | 1287d | 229.52d |  | 1. Standard 7 Day Workweek | 7.7 | 8 | ПР | СМР | 1 |
| A10640 |  | Технологическое оборудование (собственные средства) | 40d | 2017-03-01 | 2017-04-09 |  |  |  |  |  | 1287d | 1288d | start on or after 2017-03-01 | 1. Standard 7 Day Workweek |  |  | ПР |  | 1 |
| A4220 |  | Общестроительные работы | 120d | 2017-07-18 | 2017-11-15 | A4230, 420 FF |  |  |  |  | 1057.48d | 0d |  | 1. Standard 7 Day Workweek | 15.34 | 8 | ПР | СМР | 1 |
| A4250 |  | Отопление и вентиляция (ОВ) | 30d | 2017-08-17 | 2017-09-16 | A4220 SS+30d |  |  |  |  | 1127.48d | 1128.48d |  | 1. Standard 7 Day Workweek | 1.54 | 8 | ВентС | ТМР | 1 |
| A4210 |  | Водопровод | 40d | 2017-08-27 | 2017-10-06 | A4220 SS+40d |  |  |  |  | 1107.48d | 1108.48d |  | 1. Standard 7 Day Workweek | 0.18 | 8 | ТПНДвк | ТМР | 1 |
| A4270 |  | Электроосвещение (ЭО) | 30d | 2017-09-16 | 2017-10-16 | A4220 SS+60d |  |  |  |  | 1097.48d | 1098.48d |  | 1. Standard 7 Day Workweek | 0.52 | 8 | ЭЛЕКч | ЭМР | 1 |
| A4260 |  | Силовое электрооборудование (ЭМ) | 40d | 2017-10-16 | 2017-11-25 | A4220 SS+90d |  |  |  |  | 1057.48d | 1058.48d |  | 1. Standard 7 Day Workweek | 0.67 | 8 | ЭЛЕКч | ЭМР | 1 |
| A4280 |  | Пожарная сигнализация (ПС) | 20d | 2017-10-26 | 2017-11-15 | A4220 FF |  |  |  |  | 1067.48d | 1068.48d |  | 1. Standard 7 Day Workweek | 0.58 | 8 | ЭЛЕКч | ЭМР | 1 |
| A4290 |  | Сети связи (СС) | 20d | 2017-10-26 | 2017-11-15 | A4220 FF |  |  |  |  | 1067.48d | 1068.48d |  | 1. Standard 7 Day Workweek | 0.02 | 8 | ЭЛЕКч | ЭМР | 1 |
| SMR-8.2.15.8.11 |  | Осадочные марки | 0d | 2017-11-15 | 2017-11-20 | A4220 |  |  | 2017-11-15 | 2017-11-15 | 1062.48d | 1063.48d |  | 1. Standard 7 Day Workweek | 0.05 |  | ПР |  | 1 |

| ID | WBS | Activity | Type | Duration | Start | Finish | Predecessors | Planned start | Planned finish | Total float | Free float | Constraint | Calendar | Cost | 01 - Глава ССР | 03 - Часть проекта | 05 - Вид работ | ОКСГ |
| --- | --- | --- | --- | --- | --- | --- | --- | --- | --- | --- | --- | --- | --- | --- | --- | --- | --- | --- |
|  | 6 | **Материальный склад (холодный)(о/п)** |  |  | 2016-06-04 | 2017-04-25 |  |  |  |  |  |  |  |  |  |  |  |  |
| A4300 |  | Конструкции железобетонные (КЖ) |  | 89d | 2016-06-04 | 2016-08-31 |  |  |  | 1271d | 0d | start on or after 2016-06-04 | 1. Standard 7 Day Workweek | 3.14 | 8 | ПР | СМР | 1 |
| A4360 |  | Конструкции металлические (КМ) |  | 77d | 2016-09-01 | 2016-11-16 | A4300 |  |  | 1271d | 0d |  | 1. Standard 7 Day Workweek | 6.45 | 8 | ПР | СМР | 1 |
| A4350 |  | Общестроительные работы |  | 120d | 2016-11-17 | 2017-03-16 | A4360 |  |  | 1271d | 0d |  | 1. Standard 7 Day Workweek | 8.6 | 8 | ПР | СМР | 1 |
| A4330 |  | Пожарная сигнализация (ПС) |  | 10d | 2017-03-07 | 2017-03-16 | A4350 FF |  |  | 1311d | 1312d |  | 1. Standard 7 Day Workweek | 0.58 | 8 | ЭЛЕКч | ЭМР | 1 |
| A10650 |  | Технологическое оборудование (собственные средства) |  | 39d | 2017-03-17 | 2017-04-24 |  |  |  | 1272d | 1273d | start on or after 2017-03-17 | 1. Standard 7 Day Workweek |  |  | ПР |  | 1 |
| A4310 |  | Вентиляция (ОВ) |  | 30d | 2017-03-17 | 2017-04-15 | A4350 SS+120d |  |  | 1281d | 1282d |  | 1. Standard 7 Day Workweek | 0.29 | 8 | ЭЛЕКч | ТМР | 1 |
| A4320 |  | Электроосвещение (ЭО) |  | 30d | 2017-03-17 | 2017-04-15 | A4350 SS+120d |  |  | 1281d | 1282d |  | 1. Standard 7 Day Workweek | 0.96 | 8 | ЭЛЕКч | ЭМР | 1 |
| A4340 |  | Водопровод |  | 40d | 2017-03-17 | 2017-04-25 | A4350 SS+120d |  |  | 1271d | 0d |  | 1. Standard 7 Day Workweek | 0.18 | 8 | ТПНДвк | ТМР | 1 |
| A6520 |  | Силовое электрооборудование. |  | 40d | 2017-03-17 | 2017-04-25 | A4340 SS |  |  | 1271d | 1272d |  | 1. Standard 7 Day Workweek |  |  | ЭЛЕКч |  | 1 |
| SMR-8.2.15.9.11 |  | Осадочные марки |  | 0d | 2017-03-17 | 2017-03-21 | A4350 | 2017-03-17 | 2017-03-17 | 1306d | 1307d |  | 1. Standard 7 Day Workweek | 0.05 |  | ПР |  | 1 |
|  | 1 | **База бетонных и опалубочных работ(о/п)** |  |  | 2016-09-01 | 2017-09-02 |  |  |  |  |  |  |  |  |  |  |  |  |
|  | 1 | **Производственный цех(о/п)** |  |  | 2016-09-28 | 2017-09-02 |  |  |  |  |  |  |  |  |  |  |  |  |
| SMR-8.2.14.1.2 |  | Конструкции железобетонные (КЖ) |  | 80d | 2016-09-28 | 2016-12-16 |  |  |  | 212d | 0d | start on or after 2016-09-28 | 1. Standard 7 Day Workweek | 17.03 |  | ПР |  | 1 |
| A3870 |  | Конструкции металлические (КМ) |  | 50d | 2016-12-17 | 2017-02-04 | SMR-8.2.14.1.2 |  |  | 422d | 210d |  | 1. Standard 7 Day Workweek | 120.78 | 8 | ПР | СМР | 1 |
| А3871 |  | Общестроительные работы |  | 220d | 2016-12-17 | 2017-07-24 | SMR-8.2.14.1.2 |  |  | 212d | 0d |  | 1. Standard 7 Day Workweek | 142.35 | 8 | ПР | СМР | 1 |
| SMR-8.2.14.1.5 |  | Водоснабжение и канализация (ВК) |  | 80d | 2017-04-16 | 2017-07-04 | А3871 SS+120d |  |  | 212d | 0d |  | 1. Standard 7 Day Workweek |  | 8 | ТПНДвк | СМР | 1 |
| SMR-8.2.14.1.1 |  | Архитектурно-строительные решения (АС) |  | 50d | 2017-06-05 | 2017-07-24 | А3871 FS-50d |  |  | 252d | 40d |  | 1. Standard 7 Day Workweek |  |  | ПР |  | 1 |
| SMR-8.2.14.1.4 |  | Отопление и вентиляция (ОВ) |  | 60d | 2017-07-05 | 2017-09-02 | SMR-8.2.14.1.5 |  |  | 212d | 0d |  | 1. Standard 7 Day Workweek | 33.02 | 8 | ВентС | ТМР | 1 |
| A3840 |  | Сети связи (СС) |  | 20d | 2017-07-25 | 2017-08-13 | А3871 |  |  | 232d | 20d |  | 1. Standard 7 Day Workweek | 0.11 | 8 | ЭЛЕКч | ЭМР | 1 |
| A3910 |  | Электроосвещение (ЭО) |  | 20d | 2017-07-25 | 2017-08-13 | А3871 |  |  | 232d | 20d |  | 1. Standard 7 Day Workweek | 5.23 | 8 | ЭЛЕКч | ЭМР | 1 |
| A3930 |  | Пожарная сигнализация (ПС) |  | 20d | 2017-07-25 | 2017-08-13 | А3871 |  |  | 232d | 20d |  | 1. Standard 7 Day Workweek | 4.76 | 8 | ЭЛЕКч | ЭМР | 1 |
| SMR-8.2.14.1.11 |  | Осадочные марки |  | 15d | 2017-07-25 | 2017-08-08 | А3871 |  |  | 237d | 25d |  | 1. Standard 7 Day Workweek | 0.13 |  | ПР |  | 1 |
| SMR-8.2.14.1.12 |  | Автоматизация отопления и вентиляции |  | 0d | 2017-07-25 | 2017-08-08 | А3871 | 2017-07-25 | 2017-07-25 | 237d | 25d |  | 1. Standard 7 Day Workweek |  |  | ЭЛЕКч |  | 1 |
| SMR-8.2.14.1.13 |  | Технологические решения (ТХ) |  | 40d | 2017-07-25 | 2017-09-02 | А3871 |  |  | 212d | 0d |  | 1. Standard 7 Day Workweek |  |  | ПР |  | 1 |
| SMR-8.2.14.1.6 |  | Силовое электрооборудование (ЭМ) |  | 35d | 2017-07-25 | 2017-08-28 | А3871 |  |  | 217d | 5d |  | 1. Standard 7 Day Workweek |  | 8 | ЭЛЕКч | ЭМР | 1 |
| SMR-8.2.14.1.8 |  | Электроснабжение (ЭС) |  | 30d | 2017-07-25 | 2017-08-23 | А3871 |  |  | 222d | 10d |  | 1. Standard 7 Day Workweek |  | 8 | ЭЛЕКч | ЭМР | 1 |
| V-103 |  | Готовность выпуска сталефибробетонной опалубки | milestone | 0d | 2017-09-02 | 2017-09-02 | SMR-8.2.14.1.12, SMR-8.2.14.1.4, A3840, SMR-8.2.14.1.6, A3910, SMR-8.2.14.1.8, A3930, SMR-8.2.14.1.13, SMR-8.2.14.1.1, A3870, SMR-8.2.14.1.11 |  |  | 212d |  |  | 1. Standard 7 Day Workweek |  |  |  |  | 1 |

| ID | WBS | Activity | Type | Duration | Start | Finish | Predecessors | Planned start | Planned finish | Total float | Free float | Constraint | Calendar | Cost | Actual cost | 03 - Часть проекта | ОКСГ | 01 - Глава ССР | 05 - Вид работ |
| --- | --- | --- | --- | --- | --- | --- | --- | --- | --- | --- | --- | --- | --- | --- | --- | --- | --- | --- | --- |
|  | 2 | **Открытая площадка складирования с козловым краном грузоподъемностью 50т(о/п)** |  |  | 2016-09-01 | 2017-05-08 |  |  |  |  |  |  |  |  |  |  |  |  |  |
| SMR-8.14.1.14.1 |  | Архитектурно-строительные решения (АС) |  | 90d | 2016-09-01 | 2016-11-29 |  |  |  | 1258d | 0d | start on or after 2016-09-01 | 1. Standard 7 Day Workweek |  |  | ПР | 1 |  |  |
| A3950 |  | Устройство подкрановых путей |  | 120d | 2016-11-30 | 2017-03-29 | SMR-8.14.1.14.1 |  |  | 1258d | 0d |  | 1. Standard 7 Day Workweek | 79.65 |  | ПР | 1 | 8 | СМР |
| A3970 |  | Электроосвещение (ЭО) |  | 40d | 2017-03-30 | 2017-05-08 | A3950 |  |  | 1258d | 1259d |  | 1. Standard 7 Day Workweek | 0.88 |  | ЭЛЕКч | 1 | 8 | ЭМР |
|  | 10.1.3 | **Площадка под монтажный городок на 1000 человек на территории стройбазы** |  |  | 2017-01-09 | 2017-06-12 |  |  |  |  |  |  |  |  |  |  |  |  |  |
| 221 |  | Общестроительные работы |  | 110d | 2017-01-09 | 2017-04-28 |  |  |  | 1223d | 0d | start on or after 2017-01-09 | 1. Standard 7 Day Workweek | 55.67 |  | ПР | 1 | 8 | СМР |
| 261 |  | Электроснабжение |  | 45d | 2017-04-29 | 2017-06-12 | 221 |  |  | 1223d | 1224d | start on or after 2017-04-29 | 1. Standard 7 Day Workweek |  |  | ЭЛЕКч | 1 | 8 | ЭМР |
|  | 10.1.4 | **ОСР 08-04 Котельные** |  |  | 2016-06-01 | 2017-05-27 |  |  |  |  |  |  |  |  |  |  |  |  |  |
| 225 |  | Фундаменты |  | 50d | 2016-06-01 | 2016-07-20 |  |  |  | 185d | 0d | start on or after 2016-05-10 | 1. Standard 7 Day Workweek | 18.63 |  | ПР | 1 | 8 | СМР |
| A6560 |  | Наружное хозяйство. Конструкции железобетонные. |  | 50d | 2016-06-01 | 2016-07-20 | 225 SS |  |  | 1550d | 1551d |  | 1. Standard 7 Day Workweek | 23.42 |  | ПР | 1 |  |  |
| A6570 |  | Резервуарный парк. Конструкции металлические |  | 10d | 2016-07-21 | 2016-07-30 | 225 |  |  | 1450d | 0d |  | 1. Standard 7 Day Workweek |  |  | ПР | 1 |  |  |
| SMR-8.4.1.2.1 |  | Фундамент под парогенерирующую установку |  | 40d | 2016-07-21 | 2016-08-29 | 225 |  |  | 1240d | 0d |  | 1. Standard 7 Day Workweek |  |  | ПР | 1 |  |  |
| SMR-8.4.1.2.11 |  | Фундамент под молниеприемники парка СУГ |  | 15d | 2016-07-21 | 2016-08-04 | 225 |  |  | 1535d | 1536d |  | 1. Standard 7 Day Workweek | 1.48 |  | ПР | 1 |  |  |
| 477 |  | Дымоудаление |  | 30d | 2016-07-31 | 2016-08-29 | A6570 |  |  | 1450d | 0d |  | 1. Standard 7 Day Workweek | 0.38 | 0.38 | ПР | 1 | 8 | КИП |
| 627 |  | Резервуарная установка СУГ |  | 30d | 2016-08-30 | 2016-09-28 | 477 |  |  | 1450d | 0d |  | 1. Standard 7 Day Workweek | 1.41 |  | ПР | 1 | 8 | ТМР |
| SMR-8.4.1.2.10 |  | Внутриплощадочные автомобильне дорои |  | 90d | 2016-08-30 | 2016-11-27 | SMR-8.4.1.2.1 |  |  | 1420d | 1421d |  | 1. Standard 7 Day Workweek | 29.87 |  | ПР | 1 |  |  |
| SMR-8.4.1.2.8 |  | Фундамент под модульную КТП |  | 30d | 2016-08-30 | 2016-09-28 | SMR-8.4.1.2.1 |  |  | 1330d | 0d |  | 1. Standard 7 Day Workweek | 7.23 |  | ПР | 1 |  |  |
| SMR-8.4.1.1.7 |  | Трубопровод подачи газа от испарительной установки к котельным |  | 0d | 2016-09-29 | 2016-10-28 | SMR-8.4.1.1.8 SS | 2016-09-29 | 2016-09-29 | 1450d | 1451d |  | 1. Standard 7 Day Workweek |  |  | ТПНДвк | 1 |  |  |
| SMR-8.4.1.1.8 |  | Трубопроводи жидкой и паровой фазы СУГ. Дренажные и сбросные трубопроводы |  | 0d | 2016-09-29 | 2016-10-28 | 627 | 2016-09-29 | 2016-09-29 | 1450d | 0d |  | 1. Standard 7 Day Workweek |  |  | ТПНДвк | 1 |  |  |
| 226 |  | Ограждение. Конструкции железобетонные. |  | 5d | 2016-10-29 | 2016-11-02 | SMR-8.4.1.2.1 FS+60d |  |  | 1240d | 0d | finish on or after 2015-06-30 | 1. Standard 7 Day Workweek | 0.38 |  | ПР | 1 | 8 | СМР |
| A6620 |  | Ограждение. Конструкции металлические. |  | 30d | 2016-11-03 | 2016-12-02 | 226 |  |  | 1240d | 0d |  | 1. Standard 7 Day Workweek | 20.53 |  | ПР | 1 |  |  |
| 224 |  | Автономные источники теплоснабжения с резервуарным парком СУГ |  | 110d | 2016-11-28 | 2017-03-17 | 225 FS+130d |  |  | 185d | 0d |  | 1. Standard 7 Day Workweek | 1,057.92 |  | ПР | 1 | 8 | ТМР |
| 747 |  | Электроснабжение |  | 64d | 2016-11-28 | 2017-01-30 | SMR-8.4.1.3.1 SS |  |  | 1330d | 0d |  | 1. Standard 7 Day Workweek | 29.79 |  | ЭЛЕКч | 1 | 8 | ЭМР |
| SMR-8.4.1.2.9.1 |  | Разработка комплекта чертежей генерального плана (с учетом вводов/выводов) |  | 0d | 2016-11-28 | 2017-02-25 | 747 SS | 2016-11-28 | 2016-11-28 | 1330d | 1331d |  | 1. Standard 7 Day Workweek |  |  | ПР | 1 |  |  |
| SMR-8.4.1.3.1 |  | Модульная КТП схемы электрические |  | 30d | 2016-11-28 | 2016-12-27 | SMR-8.4.1.2.8 FS+60d |  |  | 1330d | 0d |  | 1. Standard 7 Day Workweek | 0.79 |  | ЭЛЕКч | 1 |  |  |
| 35468 |  | Благоустройство территори котельных |  | 0d | 2016-12-03 | 2017-01-01 | A6620 | 2016-12-03 | 2016-12-03 | 1325d | 0d |  | 1. Standard 7 Day Workweek | 6.21 |  | ПР | 1 |  |  |
| A6540 |  | Автоматизированная паровая блочно-модульная котельная. |  | 60d | 2016-12-30 | 2017-02-27 | SMR-8.4.1.2.1 FS+122d |  |  | 1298d | 0d |  | 1. Standard 7 Day Workweek | 202.65 |  | ПР | 1 |  |  |
| SMR-8.4.1.3.10 |  | Охранное освещение территории |  | 0d | 2017-01-02 | 2017-03-02 | 35468 | 2017-01-02 | 2017-01-02 | 1325d | 1326d |  | 1. Standard 7 Day Workweek |  |  | ЭЛЕКч | 1 |  |  |
| A6550 |  | Трубопроводы горячей воды на испарительную установку. |  | 20d | 2017-01-27 | 2017-02-15 | 224 SS+60d |  |  | 1340d | 1341d |  | 1. Standard 7 Day Workweek |  |  | ПР | 1 |  |  |
| SMR-8.4.1.3.3 |  | Расстановка кабельных металлоконструкций |  | 30d | 2017-02-26 | 2017-03-27 | 224 SS+90d |  |  | 185d | 0d |  | 1. Standard 7 Day Workweek | 1.55 |  | ПР | 1 |  |  |
| SMR-8.4.1.1.5 |  | Трубопроводы обвязки модульной парогенерирующей установки |  | 30d | 2017-02-28 | 2017-03-29 | A6540 |  |  | 1298d | 1299d |  | 1. Standard 7 Day Workweek |  |  | ПР | 1 |  |  |
| 343 |  | Комплект для доработки транспортабельной котельной установки типа АБМК |  | 30d | 2017-03-18 | 2017-04-16 | 224 |  |  | 1280d | 1281d |  | 1. Standard 7 Day Workweek | 1.3 |  | ПР | 1 | 8 | ТМР |
| SMR-8.4.1.3.2 |  | Задание заводу на КТП (Монтаж КТП) |  | 30d | 2017-03-28 | 2017-04-26 | SMR-8.4.1.3.9 SS |  |  | 185d | 0d |  | 1. Standard 7 Day Workweek | 139.86 |  | ПР | 1 |  |  |
| SMR-8.4.1.3.4 |  | Кабельное хозяйство в КТП |  | 30d | 2017-03-28 | 2017-04-26 | SMR-8.4.1.3.3 |  |  | 185d | 0d |  | 1. Standard 7 Day Workweek | 29.91 |  | ЭЛЕКч | 1 |  |  |
| SMR-8.4.1.3.5 |  | Раскладка кабелей по территории комплекса |  | 30d | 2017-03-28 | 2017-04-26 | SMR-8.4.1.3.4 SS |  |  | 185d | 0d |  | 1. Standard 7 Day Workweek | 2.56 |  | ЭЛЕКч | 1 |  |  |
| SMR-8.4.1.3.6 |  | Вторичная коммутация |  | 30d | 2017-03-28 | 2017-04-26 | SMR-8.4.1.3.5 SS |  |  | 185d | 0d |  | 1. Standard 7 Day Workweek | 0.49 |  | ЭЛЕКч | 1 |  |  |
| SMR-8.4.1.3.7 |  | Привязка КТП и модульной котельной в части пожарной сигнализации |  | 30d | 2017-03-28 | 2017-04-26 | SMR-8.4.1.3.6 SS |  |  | 185d | 0d |  | 1. Standard 7 Day Workweek |  |  | ЭЛЕКч | 1 |  |  |
| SMR-8.4.1.3.8 |  | Привязка КТП и модульной котельной систем связи к общестанционным системам |  | 30d | 2017-03-28 | 2017-04-26 | SMR-8.4.1.3.7 SS |  |  | 185d | 0d |  | 1. Standard 7 Day Workweek |  |  | ЭЛЕКч | 1 |  |  |
| SMR-8.4.1.3.9 |  | Привязка КТП и модульной котельной охранной сигнализации к оборудованию |  | 30d | 2017-03-28 | 2017-04-26 | SMR-8.4.1.3.8 SS |  |  | 185d | 0d |  | 1. Standard 7 Day Workweek |  |  | ЭЛЕКч | 1 |  |  |
| A10620 |  | Пусконаладочные работы |  | 20d | 2017-04-27 | 2017-05-16 | SMR-8.4.1.3.2 |  |  | 185d | 0d |  | 1. Standard 7 Day Workweek |  |  |  | 1 |  |  |
| PNR-120022 |  | Заполнение резервуаров смесью пропана и бутана технических (СПБТ) |  | 1d | 2017-04-27 | 2017-04-27 | A10620 SS |  |  | 185d | 0d |  | 1. Standard 7 Day Workweek |  |  |  | 1 |  |  |
| PNR-120864 |  | Заполнение резервуаров смесью пропана и бутана технических (СПБТ) |  | 1d | 2017-04-27 | 2017-05-27 | PNR-120022 SS | 2017-04-27 | 2017-04-27 | 185d | 0d |  | 1. Standard 7 Day Workweek |  |  |  | 1 |  |  |
| V-104 |  | Сдача объекта актом РПК | milestone | 0d | 2017-05-27 | 2017-05-27 | PNR-120864 |  |  | 185d | 0d |  | 1. Standard 7 Day Workweek |  |  |  | 1 |  |  |

| ID | WBS | Activity | Type | Duration | Start | Finish | Predecessors | Complete | Remaining | Planned start | Planned finish | Total float | Free float | Constraint | Calendar | Cost | 03 - Часть проекта | ОКСГ | 01 - Глава ССР | 05 - Вид работ |
| --- | --- | --- | --- | --- | --- | --- | --- | --- | --- | --- | --- | --- | --- | --- | --- | --- | --- | --- | --- | --- |
|  | 1 | **КПП** |  |  | 2016-12-03 | 2017-05-26 |  |  |  |  |  |  |  |  |  |  |  |  |  |  |
| SMR-8.4.1.4.3 |  | Фундаменты |  | 0d | 2016-12-03 | 2016-12-22 | A6620 |  |  | 2016-12-03 | 2016-12-03 | 1240d | 0d |  | 1. Standard 7 Day Workweek |  | ПР | 1 |  |  |
| SMR-8.4.1.4.4 |  | Надземная часть |  | 0d | 2016-12-23 | 2017-02-20 | SMR-8.4.1.4.3 |  |  | 2016-12-23 | 2016-12-23 | 1240d | 0d |  | 1. Standard 7 Day Workweek |  | ПР | 1 |  |  |
| SMR-8.4.1.4.1 |  | Архитектурные решения |  | 0d | 2017-02-21 | 2017-04-21 | SMR-8.4.1.4.4 |  |  | 2017-02-21 | 2017-02-21 | 1275d | 1276d |  | 1. Standard 7 Day Workweek |  | ПР | 1 |  |  |
| SMR-8.4.1.4.6 |  | Водопровод и канализация |  | 0d | 2017-04-22 | 2017-05-06 | SMR-8.4.1.4.4 FS+60d |  |  | 2017-04-22 | 2017-04-22 | 1240d | 0d |  | 1. Standard 7 Day Workweek |  | ТПНДвк | 1 |  |  |
| SMR-8.4.1.4.5 |  | Отопление и вентиляция |  | 0d | 2017-05-07 | 2017-05-16 | SMR-8.4.1.4.6 |  |  | 2017-05-07 | 2017-05-07 | 1240d | 0d |  | 1. Standard 7 Day Workweek |  | ВентС | 1 |  |  |
| SMR-8.4.1.4.10 |  | Комплекс технических средств охраны |  | 0d | 2017-05-17 | 2017-05-21 | SMR-8.4.1.4.5 |  |  | 2017-05-17 | 2017-05-17 | 1240d | 0d |  | 1. Standard 7 Day Workweek |  | ЭЛЕКч | 1 |  |  |
| SMR-8.4.1.4.7 |  | КПП электротехническая часть |  | 0d | 2017-05-17 | 2017-05-26 | SMR-8.4.1.4.8 SS |  |  | 2017-05-17 | 2017-05-17 | 1240d | 0d |  | 1. Standard 7 Day Workweek |  | ЭЛЕКч | 1 |  |  |
| SMR-8.4.1.4.8 |  | Пожарная сигнализация и оповещение людей о пожаре |  | 0d | 2017-05-17 | 2017-05-21 | SMR-8.4.1.4.10 SS |  |  | 2017-05-17 | 2017-05-17 | 1240d | 0d |  | 1. Standard 7 Day Workweek |  | ЭЛЕКч | 1 |  |  |
| SMR-8.4.1.4.9 |  | Сети связи |  | 0d | 2017-05-17 | 2017-05-26 | SMR-8.4.1.4.7 SS |  |  | 2017-05-17 | 2017-05-17 | 1240d | 1241d |  | 1. Standard 7 Day Workweek |  | ЭЛЕКч | 1 |  |  |
|  | 10.1.5 | **ОСР 08-05 Модульное здание КРУ-10кВ** |  |  | 2015-07-01 | 2017-10-31 |  |  |  |  |  |  |  |  |  |  |  |  |  |  |
| 229 |  | Фундамент модульного здания КРУ-10 кВ |  | 278.67d | 2015-07-01 A | 2016-07-05 |  | 88% | 34.67d | 2015-07-01 | 2016-04-04 | 1565.33d | 1566.33d | start on or after 2015-07-01 | 1. Standard 7 Day Workweek | 8.73 | ПР | 1 | 8 | СМР |
| A6700 |  | Техническое задание заводу на модульное здание КРУ-10 кВ. |  | 120d | 2015-11-20 A | 2016-06-18 | 229 | 85% | 18d | 2015-11-20 | 2016-03-18 | 1582d | 1583d |  | 1. Standard 7 Day Workweek | 529.34 | ПР | 1 |  |  |
| A6650 |  | Кабельные приямки, колодцы и блоки труб. |  | 106.5d | 2015-12-02 A | 2016-07-02 | A6630 | 70% | 31.95d | 2015-12-02 | 2016-03-17 | 1568.05d | 1569.05d |  | 1. Standard 7 Day Workweek | 6.26 | ПР | 1 |  |  |
| 230 |  | Техническое задание заводу на изготовление шкафа управления с питающими элементами |  | 87d | 2015-12-08 A | 2016-06-03 | A6700 | 97% | 3d | 2015-12-08 | 2016-03-03 | 1445d | 0d | finish on or after 2015-01-31 | 1. Standard 7 Day Workweek | 3.7 | ЭЛЕКч | 1 | 8 | ЭМР |
| A6670 |  | Техническое задание заводу на изготовление шкафов ввода оперативных шинок секции. |  | 84d | 2015-12-08 A | 2016-06-01 | A6650 | 100% | 0d | 2015-12-08 | 2016-02-29 | 1600d | 1601d |  | 1. Standard 7 Day Workweek | 2.11 | ПР | 1 |  |  |
| A6690 |  | Техническое задание заводу на изготовление шкафа оперативного тока серии ШОТ. |  | 84d | 2015-12-08 A | 2016-06-01 | A6670 SS | 100% | 0d | 2015-12-08 | 2016-02-29 | 1280d | 0d |  | 1. Standard 7 Day Workweek | 2.24 | ПР | 1 |  |  |
| A6710 |  | Приобретение и монтаж кабельной продукции. |  | 90d | 2016-06-01 | 2016-08-29 | A6690 |  |  |  |  | 1280d | 0d |  | 1. Standard 7 Day Workweek | 0.36 | ЭЛЕКч | 1 |  |  |
| A10070 |  | Электротехническая часть |  | 50d | 2016-07-16 | 2016-09-03 | 230 FS+42d |  |  |  |  | 1445d | 0d |  | 1. Standard 7 Day Workweek | 3.87 | ЭЛЕКч | 1 |  |  |
| SMR-8.5.2.2.3 |  | Кабельная трасса от ПС-330/10 кВ до модульного здания КРУ-10 кВ |  | 90d | 2016-08-11 | 2016-11-08 |  |  |  |  |  | 1439d | 1440d | start on or after 2016-08-11 | 1. Standard 7 Day Workweek |  | ЭЛЕКч | 1 |  |  |
| A6720 |  | Сети связи. |  | 60d | 2016-08-30 | 2016-10-28 | A6710 |  |  |  |  | 1280d | 0d |  | 1. Standard 7 Day Workweek | 0.41 | ЭЛЕКч | 1 |  |  |
| A6630 |  | Подъезд к модульному зданию КРУ-10кВ. |  | 60d | 2016-09-04 | 2016-11-02 | A10070 |  |  |  |  | 1445d | 1446d |  | 1. Standard 7 Day Workweek | 7.27 | ПР | 1 |  |  |
| A6730 |  | Пожарная сигнализация и оповещение людей о пожаре. |  | 60d | 2016-10-29 | 2016-12-27 | A6720 |  |  |  |  | 1280d | 0d |  | 1. Standard 7 Day Workweek | 0.09 | ЭЛЕКч | 1 |  |  |
| A6740 |  | Охранная сигнализация. |  | 30d | 2016-12-28 | 2017-01-26 | A6730 |  |  |  |  | 1280d | 0d |  | 1. Standard 7 Day Workweek | 0.02 | ЭЛЕКч | 1 |  |  |
| SMR-8.5.2.2.6 |  | Схемы внешних присоединений |  | 0d | 2017-01-27 | 2017-03-27 | A6740 |  |  | 2017-01-27 | 2017-01-27 | 1280d | 0d |  | 1. Standard 7 Day Workweek |  |  | 1 |  |  |
| 231 |  | Пусконаладочные работы - 6,01% |  | 20d | 2017-03-28 | 2017-04-16 | SMR-8.5.2.2.6 |  |  |  |  | 1280d | 1281d |  | 1. Standard 7 Day Workweek |  |  | 1 | 8 | _ПНР |
| SMR-8.5.2.2.13 |  | Готовность подачи напряжения от ПС-330 | milestone | 0d | 2017-10-31 | 2017-10-31 | PNR-4.1.1 |  |  |  |  | 1082d | 1083d |  | 1. Standard 7 Day Workweek |  |  | 1 |  |  |

| ID | WBS | Activity | Duration | Start | Finish | Predecessors | Complete | Remaining | Planned start | Planned finish | Total float | Free float | Constraint | Calendar | Cost | 03 - Часть проекта | ОКСГ | 01 - Глава ССР | 05 - Вид работ |
| --- | --- | --- | --- | --- | --- | --- | --- | --- | --- | --- | --- | --- | --- | --- | --- | --- | --- | --- | --- |
|  | 2 | **Участок электромонтажных работ Укрупнительно-сборочная и складская площадка с кабельным полем(о/п)** |  | 2017-03-01 | 2017-08-27 |  |  |  |  |  |  |  |  |  |  |  |  |  |  |
| SMR-8.29.3.1 |  | Архитектурно-строительные решения (АС) | 90d | 2017-03-01 | 2017-05-29 |  |  |  |  |  | 1147d | 0d | start on or after 2017-03-01 | 1. Standard 7 Day Workweek | 115.2 | ПР | 1 |  |  |
| SMR-8.29.3.8 |  | Технология производства | 90d | 2017-04-30 | 2017-07-28 | SMR-8.29.3.1 FS-30d |  |  |  |  | 1147d | 0d |  | 1. Standard 7 Day Workweek |  | ПР | 1 |  |  |
| SMR-8.29.3.4 |  | Силовое электрооборудование | 60d | 2017-06-29 | 2017-08-27 | SMR-8.29.3.8 FS-30d |  |  |  |  | 1147d | 1148d |  | 1. Standard 7 Day Workweek | 0.26 | ЭЛЕКч | 1 |  |  |
|  | 10.1.7 | **ОСР 08-07 Инженерные сети** |  | 2015-07-01 | 2017-12-22 |  |  |  |  |  |  |  |  |  |  |  |  |  |  |
| А239 |  | Наружные сети связи на участках: Здание кирпичного завода-модульное здание; Здание кирпичного завода | 281.52d | 2015-07-01 A | 2016-07-08 |  | 87% | 37.52d | 2015-07-01 | 2016-04-07 | 1562.48d | 1563.48d | start on or after 2015-04-01 | 1. Standard 7 Day Workweek | 12.41 | ЭЛЕКч | 1 | 8 | ЭМР |
| 238 |  | Наружное освещение | 90d | 2016-06-01 | 2016-08-29 |  |  |  |  |  | 1330d | 0d | start on or after 2016-03-01 | 1. Standard 7 Day Workweek | 8.35 | ЭЛЕКч | 1 | 8 | ЭМР |
| 240 |  | Электроснабжение | 450d | 2016-06-01 | 2017-08-24 |  |  |  |  |  | 1030d | 0d |  | 1. Standard 7 Day Workweek | 422.53 | ЭЛЕКч | 1 | 8 | ЭМР |
| 241 |  | Хозяйственно-противопожарный водопровод В1. Строительные решения. | 60d | 2016-06-01 | 2016-07-30 |  |  |  |  |  | 1340d | 0d | start on or after 2016-01-18 | 1. Standard 7 Day Workweek | 3.17 | ТПНДвк | 1 | 8 | ТМР |
| 242 |  | Хозяйственно-бытовая канализация К1 (1 этап ) | 150d | 2016-06-01 | 2016-10-28 |  |  |  |  |  | 1290d | 0d | start on or after 2016-04-01 | 1. Standard 7 Day Workweek | 44.07 | ТПНДвк | 1 | 8 | ТМР |
| A6860 |  | Тепловые сети (1-й этап проектирования). Строительные решения. | 60d | 2016-06-01 | 2016-07-30 |  |  |  |  |  | 1320d | 0d | start on or after 2016-02-01 | 1. Standard 7 Day Workweek | 22.88 | ТПНДвк | 1 |  |  |
| A6940 |  | Промышленно-ливневая канализация (1 этап ). | 260d | 2016-06-01 | 2017-02-15 |  |  |  |  |  | 1190d | 0d | start on or after 2016-03-01 | 1. Standard 7 Day Workweek | 46.28 | ТПНДвк | 1 |  |  |
| SMR-8.7.1.13 |  | Сети водопровода В1. Участок в районе водозаборных сооружений. | 90d | 2016-06-01 | 2016-08-29 |  |  |  |  |  | 1390d | 0d | start on or after 2016-05-01 | 1. Standard 7 Day Workweek | 1.72 | ТПНДвк | 1 |  |  |
| 243 |  | Тепловые сети (1-й этап проектирования). | 150d | 2016-07-31 | 2016-12-27 | A6860 |  |  |  |  | 1390d | 1391d |  | 1. Standard 7 Day Workweek | 62.45 | ВентС | 1 | 8 | ТМР |
| A6850 |  | Тепловые сети (2-й этап проектирования). Строительные решения. | 90d | 2016-07-31 | 2016-10-28 | A6860 |  |  |  |  | 1320d | 0d |  | 1. Standard 7 Day Workweek | 35.32 | ТПНДвк | 1 |  |  |
| A6900 |  | Хозяйственно-противопожарный водопровод В1. | 200d | 2016-07-31 | 2017-02-15 | 241 |  |  |  |  | 1340d | 0d |  | 1. Standard 7 Day Workweek | 130.63 | ТПНДвк | 1 |  |  |
| A6910 |  | Хозяйственно-противопожарный водопровод В1. | 200d | 2016-07-31 | 2017-02-15 | A6900 SS |  |  |  |  | 1340d | 1341d |  | 1. Standard 7 Day Workweek | 72.88 | ТПНДвк | 1 |  |  |
| 248 |  | Наружное электроосвещение | 90d | 2016-08-30 | 2016-11-27 | 238 |  |  |  |  | 1330d | 0d |  | 1. Standard 7 Day Workweek | 53.19 | ЭЛЕКч | 1 |  |  |
| SMR-8.7.1.15 |  | трубопроводы горячего водоснабжения | 120d | 2016-08-30 | 2016-12-27 | SMR-8.7.1.13 |  |  |  |  | 1390d | 1391d |  | 1. Standard 7 Day Workweek |  | ТПНДвк | 1 |  |  |
| A6830 |  | Тепловые сети (2-й этап проектирования). | 130d | 2016-10-29 | 2017-03-07 | A6850 |  |  |  |  | 1320d | 0d |  | 1. Standard 7 Day Workweek | 47.9 | ТПНДвк | 1 |  |  |
| A6870 |  | Тепловые сети (3-й этап проектирования). Строительные решения. | 40d | 2016-10-29 | 2016-12-07 | A6850 |  |  |  |  | 1335d | 0d |  | 1. Standard 7 Day Workweek | 12.49 | ТПНДвк | 1 |  |  |
| A6930 |  | Хозяйственно-бытовая канализация К1 (2 этап ). | 100d | 2016-10-29 | 2017-02-05 | 242 |  |  |  |  | 1290d | 0d |  | 1. Standard 7 Day Workweek | 16.47 | ТПНДвк | 1 |  |  |
| SMR-8.7.1.14 |  | тепловые сети | 90d | 2016-10-29 | 2017-01-26 | A6830 SS |  |  |  |  | 1360d | 1361d |  | 1. Standard 7 Day Workweek |  | ТПНДвк | 1 |  |  |
| A6800 |  | Наружное электроосвещение. | 90d | 2016-11-28 | 2017-02-25 | 248 |  |  |  |  | 1330d | 1331d |  | 1. Standard 7 Day Workweek | 13.54 | ЭЛЕКч | 1 |  |  |
| A6840 |  | Тепловые сети (3-й этап проектирования). | 75d | 2016-12-08 | 2017-02-20 | A6870 |  |  |  |  | 1335d | 1336d |  | 1. Standard 7 Day Workweek | 24.94 | ТПНДвк | 1 |  |  |
| A6990 |  | Промышленно-ливневая канализация К2 (1 этап ) (магистр. участок от кол. Л16 до кол. Л25) | 0d | 2016-12-18 | 2017-03-27 | A6940 FS-60d |  |  | 2016-12-18 | 2016-12-18 | 1300d | 1301d |  | 1. Standard 7 Day Workweek | 62.41 | ТПНДвк | 1 |  |  |
| SMR-8.7.1.12 |  | хозяйственно-бытовая канализация | 60d | 2017-02-06 | 2017-04-06 | A6930 |  |  |  |  | 1290d | 1291d |  | 1. Standard 7 Day Workweek |  | ТПНДвк | 1 |  |  |
| SMR-8.7.1.17 |  | Архитектурно-строительные решения | 0d | 2017-02-16 | 2017-05-16 | A6940 |  |  | 2017-02-16 | 2017-02-16 | 1250d | 1251d |  | 1. Standard 7 Day Workweek |  | ПР | 1 |  |  |
| SMR-8.7.1.3 |  | Промышленно-ливневая канализация (К2) - 2 этап | 150d | 2017-02-16 | 2017-07-15 | A6940 |  |  |  |  | 1190d | 1191d |  | 1. Standard 7 Day Workweek | 74.71 | ТПНДвк | 1 |  |  |
| SMR-8.7.1.18 |  | Система электроснабжения 10кВ. Подключение к сети 10кВ | 0d | 2017-05-27 | 2017-11-11 | 240 FS-90d |  |  | 2017-05-27 | 2017-05-27 | 1071.25d | 1072.25d |  | 1. Standard 7 Day Workweek | 10.41 | ЭЛЕКч | 1 |  |  |
| A6770 |  | Наружные сети связи. | 718d | 2017-07-21 | 2017-11-25 | A9180 SS+120d, A4990 SS+150d, A5180 SS+120d, 167 SS+120d, 214 SS+120d, A4090 SS+30d, A6270 SS+120d |  |  | 2017-07-21 | 2019-07-09 | 1057.38d | 1058.38d |  | 1. Standard 7 Day Workweek | 97.64 | ЭЛЕКч | 1 |  |  |
| SMR-8.7.1.10 |  | Электротехническая часть (сети 0,4 кВт) | 0d | 2017-08-25 | 2017-10-08 | 240 |  |  | 2017-08-25 | 2017-08-25 | 1105d | 1106d |  | 1. Standard 7 Day Workweek |  | ЭЛЕКч | 1 |  |  |
| SMR-8.7.1.10.3 |  | Электротехническая часть (сети 0,4 кВт). Участок 1 | 0d | 2017-08-25 | 2017-09-23 | 240 |  |  | 2017-08-25 | 2017-08-25 | 1030d | 0d |  | 1. Standard 7 Day Workweek | 31.42 | ЭЛЕКч | 1 |  |  |
| SMR-8.7.1.10.4 |  | Электротехническая часть (сети 0,4 кВт). Участок 2, 3 | 0d | 2017-09-24 | 2017-10-23 | SMR-8.7.1.10.3 |  |  | 2017-09-24 | 2017-09-24 | 1030d | 0d |  | 1. Standard 7 Day Workweek | 13.73 | ЭЛЕКч | 1 |  |  |
| SMR-8.7.1.10.2 |  | Электротехническая часть (сети 0,4 кВт). Участок 4 | 0d | 2017-10-24 | 2017-11-22 | SMR-8.7.1.10.4 |  |  | 2017-10-24 | 2017-10-24 | 1030d | 0d |  | 1. Standard 7 Day Workweek |  | ЭЛЕКч | 1 |  |  |
| SMR-8.7.1.10.1 |  | Электротехническая часть (сети 0,4 кВт). Участок 5, 8, 9 | 0d | 2017-11-23 | 2017-12-22 | SMR-8.7.1.10.2 |  |  | 2017-11-23 | 2017-11-23 | 1030d | 1031d |  | 1. Standard 7 Day Workweek | 18.41 | ЭЛЕКч | 1 |  |  |

| ID | WBS | Activity | Duration | Start | Finish | Predecessors | Complete | Remaining | Planned start | Planned finish | Total float | Free float | Constraint | Calendar | Cost | Actual cost | 01 - Глава ССР | 05 - Вид работ | ОКСГ | 03 - Часть проекта |
| --- | --- | --- | --- | --- | --- | --- | --- | --- | --- | --- | --- | --- | --- | --- | --- | --- | --- | --- | --- | --- |
|  | 10.1.8 | **Временные сети электроснабжения** |  | 2014-07-01 | 2019-08-19 |  |  |  |  |  |  |  |  |  |  |  |  |  |  |  |
| 245 |  | Временное электроснабжение СМР на промплощадке на территории 1 этапа. | 684.52d | 2014-07-01 A | 2016-08-15 |  | 89% | 75.53d | 2014-07-01 | 2016-05-15 | 425d | 1525.47d | start on or after 2014-06-01 | 1. Standard 7 Day Workweek | 196.7 | 118.52 | 8 | ЭМР | 1 |  |
| A6970 |  | Временное электроснабжение СМР на промплощадке на территории 1 этапа. | 91d | 2015-12-01 A | 2016-06-01 | A6960 SS | 100% | 0d | 2015-12-01 | 2016-02-29 | 500d | 1601d |  | 1. Standard 7 Day Workweek | 16.09 |  |  |  | 1 | ЭЛЕКч |
| 285 |  | Пусконаладочные работы ВЛЗ-10 кВ, ВЛИ-0,4 кВ (линия №1, линия №2) | 25d | 2016-06-01 | 2016-06-25 | 245 SS+100d |  |  |  |  | 425d | 0d |  | 1. Standard 7 Day Workweek | 0.52 |  |  |  | 1 |  |
| A4750 |  | Устройство временных сетей электроснабжения (анулирована) | 203d | 2016-06-01 | 2016-12-20 |  |  |  |  |  | 1397d | 1398d | start on or after 2016-01-01 | 1. Standard 7 Day Workweek | 3.42 |  |  |  | 1 | ПР |
| A6980 |  | Электроснабжение СМР при устройстве котлована. | 1100d | 2016-06-01 | 2019-06-05 | A6970 SS |  |  |  |  | 500d | 501d |  | 1. Standard 7 Day Workweek |  |  |  |  | 1 | ЭЛЕКч |
| 515 |  | Пусконаладочные работы трансформаторной подстанции КТПН 630-10/0,4 кВ (ТП-5) | 14d | 2016-06-26 | 2016-07-09 | 285 |  |  |  |  | 1519d | 0d |  | 1. Standard 7 Day Workweek | 0.18 |  |  |  | 1 |  |
| A6950 |  | Устройство временных сетей электроснабжения | 1100d | 2016-06-26 | 2019-06-30 | 285 |  |  |  |  | 425d | 0d |  | 1. Standard 7 Day Workweek | 3.21 |  |  |  | 1 | ЭЛЕКч |
| A6960 |  | Общестроительные работы. Временное электроснабжение и освещение промплощадки на территории 1 этапа | 1100d | 2016-06-26 | 2019-06-30 | A6950 SS |  |  |  |  | 425d | 0d |  | 1. Standard 7 Day Workweek | 44.06 |  |  |  | 1 | ПР |
| SMR-8.10.3 |  | Временное электроснабжение модульного здания КРУ-10кВ | 0d | 2016-07-01 | 2017-05-01 |  |  |  | 2016-07-01 | 2016-07-01 | 1265d | 1266d | start on or after 2016-07-01 | 1. Standard 7 Day Workweek |  |  |  |  | 1 |  |
| 665 |  | Пусконаладочные работы трансформаторной подстанции КТПН 400-10/0,4 кВ (ТП-6) | 14d | 2016-07-10 | 2016-07-23 | 515 |  |  |  |  | 1519d | 0d |  | 1. Standard 7 Day Workweek | 0.18 |  |  |  | 1 |  |
| 695 |  | Пусконаладочные работы трансформаторной подстанции КТПН 630-10/0,4 кВ (ТП-7) | 14d | 2016-07-24 | 2016-08-06 | 665 |  |  |  |  | 1519d | 0d |  | 1. Standard 7 Day Workweek | 0.18 |  |  |  | 1 |  |
| 725 |  | Пусконаладочные работы трансформаторной подстанции КТПН 400-10/0,4 кВ (ТП-8) | 14d | 2016-08-07 | 2016-08-20 | 695 |  |  |  |  | 1519d | 1520d |  | 1. Standard 7 Day Workweek | 0.18 |  |  |  | 1 |  |
| A10100 |  | Пусконаладочные работы ВЛЗ-10 кВ, ВЛИ-0,4 кВ (линия №1, линия №2) | 10d | 2019-07-01 | 2019-07-10 | A6960 |  |  |  |  | 425d | 0d |  | 1. Standard 7 Day Workweek |  |  |  |  | 1 |  |
| A10110 |  | Пусконаладочные работы трансформаторной подстанции КТПН 630-10/0,4 кВ (ТП-5) | 10d | 2019-07-11 | 2019-07-20 | A10100 |  |  |  |  | 425d | 0d |  | 1. Standard 7 Day Workweek |  |  |  |  | 1 |  |
| A10120 |  | Пусконаладочные работы трансформаторной подстанции КТПН 400-10/0,4 кВ (ТП-6) | 10d | 2019-07-21 | 2019-07-30 | A10110 |  |  |  |  | 425d | 0d |  | 1. Standard 7 Day Workweek |  |  |  |  | 1 |  |
| A10130 |  | Пусконаладочные работы трансформаторной подстанции КТПН 630-10/0,4 кВ (ТП-7) | 10d | 2019-07-31 | 2019-08-09 | A10120 |  |  |  |  | 425d | 0d |  | 1. Standard 7 Day Workweek |  |  |  |  | 1 |  |
| A10140 |  | Пусконаладочные работы трансформаторной подстанции КТПН 400-10/0,4 кВ (ТП-8) | 10d | 2019-08-10 | 2019-08-19 | A10130 |  |  |  |  | 425d | 426d |  | 1. Standard 7 Day Workweek |  |  |  |  | 1 |  |
|  | 10.1.6 | **ОСР 08-06 Временные автодороги** |  | 2016-02-01 | 2018-06-20 |  |  |  |  |  |  |  |  |  |  |  |  |  |  |  |
|  | 10.1.6.1 | **Автомобильные дороги в т.ч.** |  | 2016-02-01 | 2018-06-20 |  |  |  |  |  |  |  |  |  |  |  |  |  |  |  |
| A10080 |  | Автомобильные дороги (участок административно-бытового комплекса) | 199d | 2016-02-01 A | 2016-08-25 |  | 57% | 85.57d | 2016-02-01 | 2016-08-17 | 1514.43d | 1515.43d | start on or after 2016-03-01 | 1. Standard 7 Day Workweek | 57.1 |  |  |  | 1 | ПР |
| 234 |  | Автомобильные дороги (стройгородок) | 750d | 2016-06-01 | 2018-06-20 |  |  |  |  |  | 850d | 851d | start on or after 2015-11-01 | 1. Standard 7 Day Workweek | 174.62 |  | 8 | СМР | 1 | ПР |
| A10090 |  | Пешеходная дорожка | 50d | 2016-06-01 | 2016-07-20 |  |  |  |  |  | 1550d | 1551d | start on or after 2016-06-01 | 1. Standard 7 Day Workweek | 10.33 |  |  |  | 1 | ПР |
| A7020 |  | Автомобильные дороги. | 300d | 2016-06-01 | 2017-03-27 |  |  |  |  |  | 1180d | 0d |  | 1. Standard 7 Day Workweek | 374.46 |  |  |  | 1 | ПР |
| SMR-8.6.1.3 |  | Генеральный план стройбазы | 120d | 2017-03-28 | 2017-07-25 | A7020 |  |  |  |  | 1180d | 1181d |  | 1. Standard 7 Day Workweek |  |  |  |  | 1 | ПР |

| ID | WBS | Activity | Duration | Start | Finish | Predecessors | Planned start | Planned finish | Total float | Free float | Constraint | Calendar | Cost | 01 - Глава ССР | 03 - Часть проекта | 05 - Вид работ | ОКСГ |
| --- | --- | --- | --- | --- | --- | --- | --- | --- | --- | --- | --- | --- | --- | --- | --- | --- | --- |
|  | 3 | **Складской комплекс** |  | 2016-06-01 | 2017-10-28 |  |  |  |  |  |  |  |  |  |  |  |  |
|  | 1 | **Вновь возводимые объекты СМБ** |  | 2016-06-01 | 2017-10-28 |  |  |  |  |  |  |  |  |  |  |  |  |
|  | 1 | **Навес для хранения оборудования** |  | 2016-06-01 | 2016-12-07 |  |  |  |  |  |  |  |  |  |  |  |  |
| A2950 |  | Конструкции железобетонные (КЖ) | 65d | 2016-06-01 | 2016-08-04 |  |  |  | 1410d | 0d | start on or after 2016-04-25 | 1. Standard 7 Day Workweek | 10 | 8 | ПР | СМР | 1 |
| A2970 |  | Конструкции металлические (КМ) | 79d | 2016-08-05 | 2016-10-22 | A2950 |  |  | 1410d | 0d |  | 1. Standard 7 Day Workweek | 13.94 | 8 | ПР | СМР | 1 |
| A2960 |  | Электроосвещение (ЭО) | 46d | 2016-10-23 | 2016-12-07 | A2970 |  |  | 1410d | 1411d |  | 1. Standard 7 Day Workweek | 0.52 | 8 | ЭЛЕКч | ЭМР | 1 |
|  | 2 | **Площадки хранения трубопроводов и оборудования** |  | 2017-06-06 | 2017-10-28 |  |  |  |  |  |  |  |  |  |  |  |  |
| A2990 |  | Архитектурно-строительные решения (АС) | 145d | 2017-06-06 | 2017-10-28 |  |  |  | 1085d | 0d | start on or after 2017-06-06 | 1. Standard 7 Day Workweek | 115.7 | 8 | ПР | СМР | 1 |
| A2980 |  | Технологические решения (ТХ) | 60d | 2017-08-30 | 2017-10-28 | A2990 FF |  |  | 1085d | 1086d |  | 1. Standard 7 Day Workweek |  | 8 | ПР | ТМР | 1 |
| A3000 |  | Электроснабжение (ЭС) | 50d | 2017-09-09 | 2017-10-28 | A2990 FF |  |  | 1085d | 1086d |  | 1. Standard 7 Day Workweek | 2.54 | 8 | ЭЛЕКч | ЭМР | 1 |
| A3010 |  | Электроосвещение (ЭО) | 20d | 2017-10-09 | 2017-10-28 | A2990 FF |  |  | 1085d | 1086d |  | 1. Standard 7 Day Workweek | 0.63 | 8 | ЭЛЕКч | ЭМР | 1 |
|  | 3 | **Площадка разгрузки тяжеловесов** |  | 2017-02-01 | 2017-05-01 |  |  |  |  |  |  |  |  |  |  |  |  |
| SMR-8.28.3 |  | Площадка разгрузки тяжеловесов | 90d | 2017-02-01 | 2017-05-01 |  |  |  | 1265d | 1266d | start on or after 2017-02-01 | 1. Standard 7 Day Workweek |  |  | ПР |  | 1 |
|  | 4 | **Комплекс механомонтажных (тепломонтажных) работ(о/п)** |  | 2017-04-20 | 2018-07-06 |  |  |  |  |  |  |  |  |  |  |  |  |
|  | 4 | **Хранилище радиоактивных изотопов(о/п)** |  | 2017-04-20 | 2018-04-29 |  |  |  |  |  |  |  |  |  |  |  |  |
| SMR-8.30.4.2 |  | Конструкции железобетонные (КЖ) | 130d | 2017-04-20 | 2017-08-27 |  |  |  | 902d | 0d | start on or after 2017-04-20 | 1. Standard 7 Day Workweek |  |  | ПР |  | 1 |
| SMR-8.30.4.3 |  | Конструкции металлические (КМ) | 120d | 2017-08-28 | 2017-12-25 | SMR-8.30.4.2 |  |  | 902d | 0d |  | 1. Standard 7 Day Workweek |  |  | ПР |  | 1 |
| SMR-8.30.4.1 |  | Архитектурно-строительные решения | 60d | 2017-12-26 | 2018-02-23 | SMR-8.30.4.3 |  |  | 967d | 968d |  | 1. Standard 7 Day Workweek |  |  | ПР |  | 1 |
| SMR-8.30.4.5 |  | Водоснабжение и канализация | 30d | 2017-12-26 | 2018-01-24 | SMR-8.30.4.3 |  |  | 902d | 0d |  | 1. Standard 7 Day Workweek |  |  | ТПНДвк |  | 1 |
| SMR-8.30.4.10 |  | Технология производства (ТХ) | 0d | 2018-01-25 | 2018-03-10 | SMR-8.30.4.6 SS | 2018-01-25 | 2018-01-25 | 952d | 953d |  | 1. Standard 7 Day Workweek |  |  | ПР |  | 1 |
| SMR-8.30.4.4 |  | Отопление и вентиляция (ОВ) | 30d | 2018-01-25 | 2018-02-23 | SMR-8.30.4.5 |  |  | 902d | 0d |  | 1. Standard 7 Day Workweek |  |  | ВентС |  | 1 |
| SMR-8.30.4.6 |  | Силовое электрооборудование (ЭМ) | 30d | 2018-01-25 | 2018-02-23 | SMR-8.30.4.4 SS |  |  | 902d | 0d |  | 1. Standard 7 Day Workweek |  |  | ЭЛЕКч |  | 1 |
| SMR-8.30.4.7 |  | Электроосвещение (ЭО) | 30d | 2018-01-25 | 2018-02-23 | SMR-8.30.4.6 SS |  |  | 902d | 0d |  | 1. Standard 7 Day Workweek |  |  | ЭЛЕКч |  | 1 |
| SMR-8.30.4.8 |  | Пожарная сигнализация (ПС) | 30d | 2018-01-25 | 2018-02-23 | SMR-8.30.4.7 SS |  |  | 902d | 0d |  | 1. Standard 7 Day Workweek |  |  | ЭЛЕКч |  | 1 |
| SMR-8.30.4.9 |  | Сети связи (СС) | 20d | 2018-02-24 | 2018-03-15 | SMR-8.30.4.8 |  |  | 902d | 0d |  | 1. Standard 7 Day Workweek |  |  | ЭЛЕКч |  | 1 |
| SMR-8.30.6.4 |  | Ограждение | 45d | 2018-03-16 | 2018-04-29 | SMR-8.30.4.9 |  |  | 902d | 903d |  | 1. Standard 7 Day Workweek |  |  | ПР |  | 1 |

| ID | WBS | Activity | Duration | Start | Finish | Predecessors | Planned start | Planned finish | Total float | Free float | Constraint | Calendar | Cost | 01 - Глава ССР | 03 - Часть проекта | 05 - Вид работ | ОКСГ |
| --- | --- | --- | --- | --- | --- | --- | --- | --- | --- | --- | --- | --- | --- | --- | --- | --- | --- |
|  | 1 | **Цех предмонтажной подготовки конструкций главного корпуса(о/п)** |  | 2017-04-21 | 2018-07-06 |  |  |  |  |  |  |  |  |  |  |  |  |
| SMR-8.30.1.2 |  | Конструкции железобетонные (КЖ) | 150d | 2017-04-21 | 2017-09-17 |  |  |  | 834d | 0d | start on or after 2017-04-21 | 1. Standard 7 Day Workweek | 20.27 | 8 | ПР | СМР | 1 |
| SMR-8.30.1.3 |  | Конструкции металлические (КМ) | 72d | 2017-09-18 | 2017-11-28 | SMR-8.30.1.2 |  |  | 834d | 0d |  | 1. Standard 7 Day Workweek | 146.34 | 8 | ПР | СМР | 1 |
| SMR-8.30.1.1 |  | Архитектурно-строительные решения (АС) | 180d | 2017-11-29 | 2018-05-27 | SMR-8.30.1.3 |  |  | 834d | 0d |  | 1. Standard 7 Day Workweek | 259.29 | 8 | ПР | СМР | 1 |
| SMR-8.30.1.4 |  | Отопление и вентиляция (ОВ) | 60d | 2018-01-28 | 2018-03-28 | SMR-8.30.1.1 SS+60d |  |  | 874d | 0d |  | 1. Standard 7 Day Workweek | 44.6 | 8 | ТПНДвк | ТМР | 1 |
| SMR-8.30.1.5 |  | Водоснабжение и канализация (ВК) | 60d | 2018-01-28 | 2018-03-28 | SMR-8.30.1.1 SS+60d |  |  | 934d | 935d |  | 1. Standard 7 Day Workweek | 9.23 | 8 | ТПНДвк | СМР | 1 |
| SMR-8.30.1.10 |  | Технология производства (ТХ) | 30d | 2018-02-17 | 2018-03-18 | SMR-8.30.1.6 SS |  |  | 944d | 945d |  | 1. Standard 7 Day Workweek |  |  | ПР |  | 1 |
| SMR-8.30.1.6 |  | Силовое электрооборудование (ЭМ) | 50d | 2018-02-17 | 2018-04-07 | SMR-8.30.1.1 SS+80d |  |  | 904d | 0d |  | 1. Standard 7 Day Workweek | 24.81 | 8 | ЭЛЕКч | ЭМР | 1 |
| SMR-8.30.1.11 |  | Автоматизация отопления и вентиляции | 60d | 2018-03-29 | 2018-05-27 | SMR-8.30.1.4 |  |  | 874d | 875d |  | 1. Standard 7 Day Workweek | 2.14 |  | ЭЛЕКч |  | 1 |
| SMR-8.30.1.7 |  | Электроосвещение (ЭО) | 30d | 2018-03-29 | 2018-04-27 | SMR-8.30.1.6 SS+40d |  |  | 904d | 905d |  | 1. Standard 7 Day Workweek | 12.68 | 8 | ЭЛЕКч | ЭМР | 1 |
| SMR-8.30.1.9 |  | Сети связи (СС) | 22d | 2018-05-06 | 2018-05-27 | SMR-8.30.1.1 FF |  |  | 874d | 875d |  | 1. Standard 7 Day Workweek | 0.3 | 8 | ЭЛЕКч | ЭМР | 1 |
| SMR-8.30.1.12 |  | Автоматизированная система порошкового пожаротушения | 60d | 2018-05-08 | 2018-07-06 | SMR-8.30.1.8 SS |  |  | 834d | 835d |  | 1. Standard 7 Day Workweek | 3.73 |  | ЭЛЕКч |  | 1 |
| SMR-8.30.1.8 |  | Пожарная сигнализация (ПС) | 20d | 2018-05-08 | 2018-05-27 | SMR-8.30.1.1 FF |  |  | 834d | 0d |  | 1. Standard 7 Day Workweek | 1.53 | 8 | ЭЛЕКч | ЭМР | 1 |
| SMR-8.30.1.13 |  | Осадочные марки | 0d | 2018-05-28 | 2018-05-28 | SMR-8.30.1.1 |  |  | 873d | 874d |  | 1. Standard 7 Day Workweek | 0.12 |  | ПР |  | 1 |
|  | 2 | **Укрупнительно-сборочная и складская площадка(о/п)** |  | 2017-09-30 | 2018-02-21 |  |  |  |  |  |  |  |  |  |  |  |  |
| SMR-8.30.2.1 |  | Архитектурно-строительные решения (АС) | 120d | 2017-09-30 | 2018-01-27 |  |  |  | 969d | 0d | start on or after 2017-09-30 | 1. Standard 7 Day Workweek | 199.16 | 8 | ПР | СМР | 1 |
| SMR-8.30.2.2 |  | Технологические решения (ТХ) | 45d | 2018-01-08 | 2018-02-21 | SMR-8.30.2.1 FS-20d |  |  | 969d | 970d |  | 1. Standard 7 Day Workweek |  | 8 | ПР | ТМР | 1 |
| SMR-8.30.2.5 |  | Силовое электрооборудование (ЭМ) | 20d | 2018-01-28 | 2018-02-16 | SMR-8.30.2.1 |  |  | 974d | 975d |  | 1. Standard 7 Day Workweek | 1.36 |  | ЭЛЕКч |  | 1 |
|  | 3 | **Административно-лабораторный корпус(о/п)** |  | 2017-05-02 | 2018-06-15 |  |  |  |  |  |  |  |  |  |  |  |  |
| SMR-8.30.3.2 |  | Конструкции железобетонные (КЖ) | 150d | 2017-05-02 | 2017-09-28 |  |  |  | 855d | 0d | start on or after 2017-05-02 | 1. Standard 7 Day Workweek | 7.87 | 8 | ПР | СМР | 1 |
| SMR-8.30.3.3 |  | Конструкции металлические (КМ) | 155d | 2017-09-29 | 2018-03-02 | SMR-8.30.3.2 |  |  | 855d | 0d |  | 1. Standard 7 Day Workweek | 39.63 | 8 | ПР | СМР | 1 |
| SMR-8.30.3.1 |  | Архитектурно-строительные решения (АС) | 150d | 2018-01-12 | 2018-06-10 | SMR-8.30.3.3 FS-50d |  |  | 855d | 0d |  | 1. Standard 7 Day Workweek | 108.56 | 8 | ПР | СМР | 1 |
| SMR-8.30.3.4 |  | Отопление и вентиляция (ОВ) | 60d | 2018-02-14 | 2018-04-14 | SMR-8.30.3.1 SS+33d |  |  | 872d | 0d |  | 1. Standard 7 Day Workweek | 24.54 | 8 | ВентС | ТМР | 1 |
| SMR-8.30.3.5 |  | Водоснабжение и канализация (ВК) | 83d | 2018-02-14 | 2018-05-07 | SMR-8.30.3.1 SS+33d |  |  | 894d | 895d |  | 1. Standard 7 Day Workweek | 3.13 | 8 | ТПНДвк | СМР | 1 |
| SMR-8.30.3.10 |  | Технология производства (ТХ) | 50d | 2018-03-23 | 2018-05-11 | SMR-8.30.3.6 SS |  |  | 890d | 891d |  | 1. Standard 7 Day Workweek |  |  | ПР |  | 1 |
| SMR-8.30.3.6 |  | Силовое электрооборудование (ЭМ) | 46d | 2018-03-23 | 2018-05-07 | SMR-8.30.3.1 SS+70d |  |  | 890d | 0d |  | 1. Standard 7 Day Workweek | 5.46 | 8 | ЭЛЕКч | ЭМР | 1 |
| SMR-8.30.3.7 |  | Электроосвещение (ЭО) | 45d | 2018-03-23 | 2018-05-06 | SMR-8.30.3.6 SS |  |  | 895d | 896d |  | 1. Standard 7 Day Workweek | 7.79 | 8 | ЭЛЕКч | ЭМР | 1 |
| SMR-8.30.3.8 |  | Пожарная сигнализация (ПС) | 32d | 2018-04-06 | 2018-05-07 | SMR-8.30.3.1 SS+84d |  |  | 894d | 0d |  | 1. Standard 7 Day Workweek | 2.15 | 8 | ЭЛЕКч | ЭМР | 1 |
| SMR-8.30.3.9 |  | Сети связи (СС) | 30d | 2018-04-06 | 2018-05-05 | SMR-8.30.3.8 SS |  |  | 896d | 897d |  | 1. Standard 7 Day Workweek | 2.78 | 8 | ЭЛЕКч | ЭМР | 1 |
| SMR-8.30.3.11 |  | Автоматизация отопления и вентиляции | 45d | 2018-04-15 | 2018-05-29 | SMR-8.30.3.4 |  |  | 872d | 873d |  | 1. Standard 7 Day Workweek | 0.23 |  | ЭЛЕКч |  | 1 |
| SMR-8.30.3.12 |  | Осадочные марки | 0d | 2018-06-11 | 2018-06-15 | SMR-8.30.3.1 | 2018-06-11 | 2018-06-11 | 855d | 856d |  | 1. Standard 7 Day Workweek | 0.05 |  | ПР |  | 1 |

| ID | WBS | Activity | Duration | Start | Finish | Predecessors | Planned start | Planned finish | Total float | Free float | Constraint | Calendar | Cost | 01 - Глава ССР | 03 - Часть проекта | 05 - Вид работ | ОКСГ |
| --- | --- | --- | --- | --- | --- | --- | --- | --- | --- | --- | --- | --- | --- | --- | --- | --- | --- |
|  | 5 | **Участок антикоррозионных и теплоизоляционных работ(о/п)** |  | 2017-02-23 | 2018-05-20 |  |  |  |  |  |  |  |  |  |  |  |  |
|  | 5 | **Мастерская антикоррозионных работ(о/п)** |  |  |  |  |  |  |  |  |  |  |  |  |  |  |  |
|  | 1 | **Административно-бытовой корпус(о/п)** |  | 2017-02-23 | 2018-03-17 |  |  |  |  |  |  |  |  |  |  |  |  |
| SMR-8.31.1.2 |  | Конструкции железобетонные (КЖ) | 90d | 2017-02-23 | 2017-05-23 |  |  |  | 945d | 0d | start on or after 2017-02-23 | 1. Standard 7 Day Workweek | 3.45 | 8 | ПР | СМР | 1 |
| SMR-8.31.1.3 |  | Конструкции металлические (КМ) | 90d | 2017-05-24 | 2017-08-21 | SMR-8.31.1.2 |  |  | 945d | 0d |  | 1. Standard 7 Day Workweek | 20.92 | 8 | ПР | СМР | 1 |
| SMR-8.31.1.1 |  | Архитектурно-строительные решения (АС) | 120d | 2017-08-22 | 2017-12-19 | SMR-8.31.1.3 |  |  | 945d | 0d |  | 1. Standard 7 Day Workweek | 60.28 | 8 | ПР | СМР | 1 |
| SMR-8.31.1.4 |  | Отопление и вентиляция (ОВ) | 30d | 2017-11-20 | 2017-12-19 | SMR-8.31.1.1 FS-30d |  |  | 1033d | 1034d |  | 1. Standard 7 Day Workweek | 10.62 | 8 | ТПНДвк | ТМР | 1 |
| SMR-8.31.1.11 |  | Осадочные марки | 0d | 2017-12-20 | 2017-12-24 | SMR-8.31.1.1 | 2017-12-20 | 2017-12-20 | 1028d | 1029d |  | 1. Standard 7 Day Workweek | 0.01 |  | ПР |  | 1 |
| SMR-8.31.1.5 |  | Водоснабжение и канализация (ВК) | 30d | 2017-12-20 | 2018-01-18 | SMR-8.31.1.1 |  |  | 1003d | 1004d |  | 1. Standard 7 Day Workweek | 2.42 | 8 | ТПНДвк | СМР | 1 |
| SMR-8.31.1.6 |  | Силовое электрооборудование (ЭМ) | 40d | 2017-12-20 | 2018-01-28 | SMR-8.31.1.1 |  |  | 945d | 0d |  | 1. Standard 7 Day Workweek | 1.22 | 8 | ЭЛЕКч | ЭМР | 1 |
| SMR-8.31.1.7 |  | Электроосвещение (ЭО) | 30d | 2018-01-29 | 2018-02-27 | SMR-8.31.1.6 |  |  | 945d | 0d |  | 1. Standard 7 Day Workweek | 8.01 | 8 | ЭЛЕКч | ЭМР | 1 |
| SMR-8.31.1.9 |  | Сети связи (СС) | 27d | 2018-01-29 | 2018-02-24 | SMR-8.31.1.6 |  |  | 966d | 967d |  | 1. Standard 7 Day Workweek | 1.83 | 8 | ЭЛЕКч | ЭМР | 1 |
| SMR-8.31.1.8 |  | Пожарная сигнализация (ПС) | 18d | 2018-02-28 | 2018-03-17 | SMR-8.31.1.7 |  |  | 945d | 946d |  | 1. Standard 7 Day Workweek | 2.07 | 8 | ЭЛЕКч | ЭМР | 1 |
|  | 2 | **Мастерская теплоизоляционных работ(о/п)** |  | 2017-04-01 | 2018-05-20 |  |  |  |  |  |  |  |  |  |  |  |  |
| SMR-8.31.2.2 |  | Конструкции железобетонные (КЖ) | 150d | 2017-04-01 | 2017-08-28 |  |  |  | 881d | 0d | start on or after 2017-04-01 | 1. Standard 7 Day Workweek | 2.56 | 8 | ПР | СМР | 1 |
| SMR-8.31.2.3 |  | Конструкции металлические (КМ) | 120d | 2017-08-29 | 2017-12-26 | SMR-8.31.2.2 |  |  | 881d | 0d |  | 1. Standard 7 Day Workweek | 15.35 | 8 | ПР | СМР | 1 |
| SMR-8.31.2.1 |  | Архитектурно-строительные решения (АС) | 140d | 2017-12-27 | 2018-05-15 | SMR-8.31.2.3 |  |  | 881d | 0d |  | 1. Standard 7 Day Workweek |  | 8 | ПР | СМР | 1 |
| SMR-8.31.2.5 |  | Водоснабжение и канализация (ВК) | 30d | 2018-03-17 | 2018-04-15 | SMR-8.31.2.1 SS+80d |  |  | 886d | 0d |  | 1. Standard 7 Day Workweek | 0.91 | 8 | ТПНДвк | СМР | 1 |
| SMR-8.31.2.6 |  | Силовое электрооборудование (ЭМ) | 35d | 2018-04-11 | 2018-05-15 | SMR-8.31.2.1 FF |  |  | 886d | 887d |  | 1. Standard 7 Day Workweek | 1.03 | 8 | ЭЛЕКч | ЭМР | 1 |
| SMR-8.31.2.10 |  | Технологические решения (ТХ) | 30d | 2018-04-16 | 2018-05-15 | SMR-8.31.2.1 FF |  |  | 886d | 887d |  | 1. Standard 7 Day Workweek |  | 8 | ПР | ТМР | 1 |
| SMR-8.31.2.4 |  | Отопление и вентиляция (ОВ) | 30d | 2018-04-16 | 2018-05-15 | SMR-8.31.2.5 |  |  | 886d | 887d |  | 1. Standard 7 Day Workweek | 5.35 | 8 | ВентС | ТМР | 1 |
| SMR-8.31.2.7 |  | Электроосвещение (ЭО) | 30d | 2018-04-16 | 2018-05-15 | SMR-8.31.2.1 FF |  |  | 886d | 887d |  | 1. Standard 7 Day Workweek | 1.08 | 8 | ЭЛЕКч | ЭМР | 1 |
| SMR-8.31.2.8 |  | Пожарная сигнализация (ПС) | 20d | 2018-04-26 | 2018-05-15 | SMR-8.31.2.1 FF |  |  | 886d | 887d |  | 1. Standard 7 Day Workweek | 2.3 | 8 | ЭЛЕКч | ЭМР | 1 |
| SMR-8.31.2.9 |  | Сети связи (СС) | 20d | 2018-04-26 | 2018-05-15 | SMR-8.31.2.1 FF |  |  | 886d | 887d |  | 1. Standard 7 Day Workweek | 0.04 |  | ЭЛЕКч |  | 1 |
| SMR-8.31.2.12 |  | Осадочные марки | 0d | 2018-05-16 | 2018-05-20 | SMR-8.31.2.1 | 2018-05-16 | 2018-05-16 | 881d | 882d |  | 1. Standard 7 Day Workweek | 0.04 |  | ПР |  | 1 |

| ID | WBS | Activity | Duration | Start | Finish | Predecessors | Planned start | Planned finish | Total float | Free float | Constraint | Calendar | Cost | 01 - Глава ССР | 03 - Часть проекта | 05 - Вид работ | ОКСГ |
| --- | --- | --- | --- | --- | --- | --- | --- | --- | --- | --- | --- | --- | --- | --- | --- | --- | --- |
|  | 3 | **Открытая площадка складирования(о/п)** |  | 2017-03-01 | 2017-10-26 |  |  |  |  |  |  |  |  |  |  |  |  |
| SMR-8.31.3.1 |  | Архитектурно-строительные решения (АС) | 180d | 2017-03-01 | 2017-08-27 |  |  |  | 1087d | 0d | start on or after 2017-03-01 | 1. Standard 7 Day Workweek | 20.11 | 8 | ПР | СМР | 1 |
| SMR-8.31.3.2 |  | Электроосвещение (ЭО) | 30d | 2017-07-29 | 2017-08-27 | SMR-8.31.3.1 FS-30d |  |  | 1147d | 1148d |  | 1. Standard 7 Day Workweek |  | 8 | ЭЛЕКч | ЭМР | 1 |
| SMR-8.31.3.3 |  | Технологические решения (ТХ) | 60d | 2017-08-28 | 2017-10-26 | SMR-8.31.3.1 |  |  | 1087d | 1088d |  | 1. Standard 7 Day Workweek |  |  | ПР |  | 1 |
|  | 4 | **Склад растворителей и лаков(о/п)** |  | 2017-02-28 | 2018-05-18 |  |  |  |  |  |  |  |  |  |  |  |  |
| SMR-8.31.4.2 |  | Конструкции железобетонные (КЖ) | 150d | 2017-02-28 | 2017-07-27 |  |  |  | 883d | 0d | start on or after 2017-02-28 | 1. Standard 7 Day Workweek | 2.93 | 8 | ПР | СМР | 1 |
| SMR-8.31.4.3 |  | Конструкции металлические (КМ) | 120d | 2017-07-28 | 2017-11-24 | SMR-8.31.4.2 |  |  | 883d | 0d |  | 1. Standard 7 Day Workweek | 13.34 | 8 | ПР | СМР | 1 |
| SMR-8.31.4.1 |  | Архитектурно-строительные решения (АС) | 100d | 2017-11-25 | 2018-03-04 | SMR-8.31.4.3 |  |  | 883d | 0d |  | 1. Standard 7 Day Workweek | 21.17 | 8 | ПР | СМР | 1 |
| SMR-8.31.4.4 |  | Отопление и вентиляция (ОВ) | 20d | 2018-02-13 | 2018-03-04 | SMR-8.31.4.1 FS-20d |  |  | 928d | 0d |  | 1. Standard 7 Day Workweek | 2.96 | 8 | ВентС | ТМР | 1 |
| SMR-8.31.4.12 |  | Автоматизация вентиляции. | 0d | 2018-03-05 | 2018-04-03 | SMR-8.31.4.4 | 2018-03-05 | 2018-03-05 | 928d | 929d |  | 1. Standard 7 Day Workweek | 0.73 |  | ЭЛЕКч |  | 1 |
| SMR-8.31.4.13 |  | Осадочные марки | 0d | 2018-03-05 | 2018-03-09 | SMR-8.31.4.1 | 2018-03-05 | 2018-03-05 | 953d | 954d |  | 1. Standard 7 Day Workweek | 0.01 |  | ПР |  | 1 |
| SMR-8.31.4.15 |  | Водоснабжение и канализация (ВК) | 30d | 2018-03-05 | 2018-04-03 | SMR-8.31.4.1 |  |  | 928d | 929d |  | 1. Standard 7 Day Workweek |  |  | ТПНДвк |  | 1 |
| SMR-8.31.4.6 |  | Электроосвещение (ЭО) | 10d | 2018-03-05 | 2018-03-14 | SMR-8.31.4.1 |  |  | 883d | 0d |  | 1. Standard 7 Day Workweek | 1.93 | 8 | ЭЛЕКч | ЭМР | 1 |
| SMR-8.31.4.9 |  | Технологические решения (ТХ) | 20d | 2018-03-05 | 2018-03-24 | SMR-8.31.4.4 |  |  | 938d | 939d |  | 1. Standard 7 Day Workweek |  | 8 | ПР | ТМР | 1 |
| SMR-8.31.4.5 |  | Силовое электрооборудование (ЭМ) | 30d | 2018-03-15 | 2018-04-13 | SMR-8.31.4.6 |  |  | 883d | 0d |  | 1. Standard 7 Day Workweek | 0.9 | 8 | ЭЛЕКч | ЭМР | 1 |
| A3390 |  | Пожарная сигнализация (ПС) | 20d | 2018-04-14 | 2018-05-03 | SMR-8.31.4.5 |  |  | 883d | 0d |  | 1. Standard 7 Day Workweek |  | 8 | ЭЛЕКч | ЭМР | 1 |
| A3400 |  | Сети связи (СС) | 15d | 2018-05-04 | 2018-05-18 | A3390 |  |  | 883d | 884d |  | 1. Standard 7 Day Workweek | 0.04 | 8 | ЭЛЕКч | ЭМР | 1 |
|  | 6 | **Комплекс вентиляционных работ(о/п)** |  | 2017-03-01 | 2018-04-25 |  |  |  |  |  |  |  |  |  |  |  |  |
|  | 1 | **Производственный корпус(о/п)** |  | 2017-03-01 | 2018-04-19 |  |  |  |  |  |  |  |  |  |  |  |  |
| SMR-8.32.1.2 |  | Конструкции железобетонные (КЖ) | 150d | 2017-03-01 | 2017-07-28 |  |  |  | 912d | 0d | start on or after 2017-03-01 | 1. Standard 7 Day Workweek | 5.31 | 8 | ПР | СМР | 1 |
| SMR-8.32.1.3 |  | Конструкции металлические (КМ) | 120d | 2017-07-29 | 2017-11-25 | SMR-8.32.1.2 |  |  | 912d | 0d |  | 1. Standard 7 Day Workweek | 49.86 | 8 | ПР | СМР | 1 |
| SMR-8.32.1.1 |  | Архитектурно-строительные решения (АС) | 120d | 2017-11-26 | 2018-03-25 | SMR-8.32.1.3 |  |  | 912d | 0d |  | 1. Standard 7 Day Workweek | 153.67 | 8 | ПР | СМР | 1 |
| SMR-8.32.1.6 |  | Силовое электрооборудование (ЭМ) | 60d | 2018-01-25 | 2018-03-25 | SMR-8.32.1.1 FF |  |  | 937d | 938d |  | 1. Standard 7 Day Workweek | 4.83 | 8 | ЭЛЕКч | ЭМР | 1 |
| SMR-8.32.1.10 |  | Технологические решения (ТХ) | 40d | 2018-02-14 | 2018-03-25 | SMR-8.32.1.1 FF |  |  | 937d | 938d |  | 1. Standard 7 Day Workweek | 8.09 | 8 | ПР | ТМР | 1 |
| SMR-8.32.1.5 |  | Водоснабжение и канализация (ВК) | 20d | 2018-02-24 | 2018-03-15 | SMR-8.32.1.1 SS+90d |  |  | 912d | 0d |  | 1. Standard 7 Day Workweek | 4.2 | 8 | ТПНДвк | СМР | 1 |
| SMR-8.32.1.8 |  | Пожарная сигнализация (ПС) | 30d | 2018-02-24 | 2018-03-25 | SMR-8.32.1.1 FF |  |  | 937d | 938d |  | 1. Standard 7 Day Workweek | 3.02 | 8 | ЭЛЕКч | ЭМР | 1 |
| SMR-8.32.1.9 |  | Сети связи (СС) | 30d | 2018-02-24 | 2018-03-25 | SMR-8.32.1.1 FF |  |  | 937d | 938d |  | 1. Standard 7 Day Workweek | 1.9 | 8 | ЭЛЕКч | ЭМР | 1 |
| SMR-8.32.1.7 |  | Электроосвещение (ЭО) | 20d | 2018-03-06 | 2018-03-25 | SMR-8.32.1.1 FF |  |  | 937d | 938d |  | 1. Standard 7 Day Workweek | 2.35 | 8 | ЭЛЕКч | ЭМР | 1 |
| SMR-8.32.1.4 |  | Отопление и вентиляция (ОВ) | 20d | 2018-03-16 | 2018-04-04 | SMR-8.32.1.5 |  |  | 912d | 0d |  | 1. Standard 7 Day Workweek | 15.84 | 8 | ВентС | ТМР | 1 |
| SMR-8.32.1.12 |  | Осадочные марки | 0d | 2018-03-26 | 2018-03-30 | SMR-8.32.1.1 | 2018-03-26 | 2018-03-26 | 932d | 933d |  | 1. Standard 7 Day Workweek | 0.09 |  | ПР |  | 1 |
| SMR-8.32.1.11 |  | Автоматизация отопления и вентиляции | 15d | 2018-04-05 | 2018-04-19 | SMR-8.32.1.4 |  |  | 912d | 913d |  | 1. Standard 7 Day Workweek | 0.23 |  | ЭЛЕКч |  | 1 |

| ID | WBS | Activity | Duration | Start | Finish | Predecessors | Planned start | Planned finish | Total float | Free float | Constraint | Calendar | Cost | 01 - Глава ССР | 03 - Часть проекта | 05 - Вид работ | ОКСГ |
| --- | --- | --- | --- | --- | --- | --- | --- | --- | --- | --- | --- | --- | --- | --- | --- | --- | --- |
|  | 2 | **Административно-бытовой корпус(о/п)** |  | 2017-04-01 | 2018-04-25 |  |  |  |  |  |  |  |  |  |  |  |  |
| SMR-8.32.2.2 |  | Конструкции железобетонные (КЖ) | 175d | 2017-04-01 | 2017-09-22 |  |  |  | 906d | 0d | start on or after 2017-04-01 | 1. Standard 7 Day Workweek | 3.59 | 8 | ПР | СМР | 1 |
| SMR-8.32.2.3 |  | Конструкции металлические (КМ) | 140d | 2017-09-23 | 2018-02-09 | SMR-8.32.2.2 |  |  | 906d | 0d |  | 1. Standard 7 Day Workweek | 20.65 | 8 | ПР | СМР | 1 |
| SMR-8.32.2.1 |  | Архитектурно-строительные решения (АС) | 70d | 2018-02-10 | 2018-04-20 | SMR-8.32.2.3 |  |  | 906d | 0d |  | 1. Standard 7 Day Workweek |  | 8 | ПР | СМР | 1 |
| SMR-8.32.2.4 |  | Отопление и вентиляция (ОВ) | 20d | 2018-03-02 | 2018-03-22 | SMR-8.32.2.1 FF-30d | 2018-03-02 | 2018-03-21 | 941d | 942d |  | 1. Standard 7 Day Workweek | 10.69 | 8 | ВентС | ТМР | 1 |
| SMR-8.32.2.5 |  | Водоснабжение и канализация (ВК) | 20d | 2018-03-02 | 2018-03-22 | SMR-8.32.2.1 FF-30d | 2018-03-02 | 2018-03-21 | 941d | 942d |  | 1. Standard 7 Day Workweek | 2.47 | 8 | ТПНДвк | СМР | 1 |
| SMR-8.32.2.6 |  | Силовое электрооборудование (ЭМ) | 20d | 2018-03-12 | 2018-04-01 | SMR-8.32.2.1 FF-20d | 2018-03-12 | 2018-03-31 | 931d | 932d |  | 1. Standard 7 Day Workweek | 1.64 | 8 | ЭЛЕКч | ЭМР | 1 |
| SMR-8.32.2.7 |  | Электроосвещение (ЭО) | 20d | 2018-04-01 | 2018-04-20 | SMR-8.32.2.1 FF |  |  | 911d | 912d |  | 1. Standard 7 Day Workweek | 6.91 | 8 | ЭЛЕКч | ЭМР | 1 |
| SMR-8.32.2.8 |  | Пожарная сигнализация (ПС) | 20d | 2018-04-01 | 2018-04-20 | SMR-8.32.2.1 FF |  |  | 911d | 912d |  | 1. Standard 7 Day Workweek |  | 8 | ЭЛЕКч | ЭМР | 1 |
| SMR-8.32.2.9 |  | Сети связи (СС) | 10d | 2018-04-11 | 2018-04-20 | SMR-8.32.2.1 FF |  |  | 911d | 912d |  | 1. Standard 7 Day Workweek |  | 8 | ЭЛЕКч | ЭМР | 1 |
| SMR-8.32.2.10 |  | Осадочные марки | 0d | 2018-04-21 | 2018-04-25 | SMR-8.32.2.1 | 2018-04-21 | 2018-04-21 | 906d | 907d |  | 1. Standard 7 Day Workweek |  |  | ПР |  | 1 |
|  | 1 | **Административный корпус Заказчика(о/п)** |  | 2016-10-01 | 2018-11-19 |  |  |  |  |  |  |  |  |  |  |  |  |
|  | 2 | **Строительная часть** |  | 2016-10-01 | 2018-10-10 |  |  |  |  |  |  |  |  |  |  |  |  |
| SMR-8.35.2.2 |  | Геометрические размеры котлована | 120d | 2016-10-01 | 2017-01-28 |  |  |  | 698d | 0d | start on or after 2016-10-01 | 1. Standard 7 Day Workweek |  |  | ПР |  | 1 |
| SMR-8.35.2.3 |  | Фундаментная плита | 100d | 2017-01-29 | 2017-05-08 | SMR-8.35.2.2 |  |  | 698d | 0d |  | 1. Standard 7 Day Workweek |  |  | ПР |  | 1 |
| SMR-8.35.2.5 |  | Каркас подземной части до отметки 0,000 | 100d | 2017-05-09 | 2017-08-16 | SMR-8.35.2.3 |  |  | 698d | 0d |  | 1. Standard 7 Day Workweek |  |  | ПР |  | 1 |
| SMR-8.35.2.4 |  | Цокольные стены | 90d | 2017-05-19 | 2017-08-16 | SMR-8.35.2.5 FF |  |  | 1158d | 1159d |  | 1. Standard 7 Day Workweek |  |  | ПР |  | 1 |
| SMR-8.35.2.7 |  | Перекрытие на отметке 0,000 | 60d | 2017-08-17 | 2017-10-15 | SMR-8.35.2.5 |  |  | 698d | 0d |  | 1. Standard 7 Day Workweek |  |  | ПР |  | 1 |
| SMR-8.35.2.13 |  | Металлоконструкции | 180d | 2017-10-16 | 2018-04-13 | SMR-8.35.2.6 SS |  |  | 918d | 919d |  | 1. Standard 7 Day Workweek |  |  | ПР |  | 1 |
| SMR-8.35.2.6 |  | Каркас | 180d | 2017-10-16 | 2018-04-13 | SMR-8.35.2.7 |  |  | 698d | 0d |  | 1. Standard 7 Day Workweek |  |  | ПР |  | 1 |
| SMR-8.35.2.11 |  | Наружные стены | 150d | 2017-12-15 | 2018-05-13 | SMR-8.35.2.6 SS+60d |  |  | 698d | 0d |  | 1. Standard 7 Day Workweek |  |  | ПР |  | 1 |
| SMR-8.35.2.15 |  | Входы | 30d | 2017-12-15 | 2018-01-13 | SMR-8.35.2.8 SS |  |  | 1008d | 1009d |  | 1. Standard 7 Day Workweek |  |  | ПР |  | 1 |
| SMR-8.35.2.8 |  | Перекрытия и покрытие выше отметки 0,000 | 180d | 2017-12-15 | 2018-06-12 | SMR-8.35.2.6 SS+60d |  |  | 858d | 0d |  | 1. Standard 7 Day Workweek |  |  | ПР |  | 1 |
| SMR-8.35.2.12 |  | Внутренние стены | 190d | 2018-02-13 | 2018-08-21 | SMR-8.35.2.11 SS+60d |  |  | 738d | 0d |  | 1. Standard 7 Day Workweek |  |  | ПР |  | 1 |
| SMR-8.35.2.9 |  | Лестничные клетки | 120d | 2018-04-14 | 2018-08-11 | SMR-8.35.2.6 SS+180d |  |  | 798d | 799d |  | 1. Standard 7 Day Workweek |  |  | ПР |  | 1 |
| SMR-8.35.2.16 |  | Молниезащита | 30d | 2018-05-14 | 2018-06-12 | SMR-8.35.2.11 |  |  | 858d | 859d |  | 1. Standard 7 Day Workweek |  |  | ПР |  | 1 |
| SMR-8.35.2.10 |  | Шахты лифтов | 90d | 2018-06-23 | 2018-09-20 | SMR-8.35.2.6 SS+250d |  |  | 728d | 0d |  | 1. Standard 7 Day Workweek |  |  | ПР |  | 1 |
| SMR-8.35.2.14 |  | Полы | 90d | 2018-07-13 | 2018-10-10 | SMR-8.35.2.12 SS+150d |  |  | 738d | 739d |  | 1. Standard 7 Day Workweek |  |  | ПР |  | 1 |

| ID | WBS | Activity | Duration | Start | Finish | Predecessors | Planned start | Planned finish | Total float | Free float | Calendar | Cost | 03 - Часть проекта | ОКСГ |
| --- | --- | --- | --- | --- | --- | --- | --- | --- | --- | --- | --- | --- | --- | --- |
|  | 1 | **Архитектурно-строительные решения** |  | 2018-05-14 | 2018-11-19 |  |  |  |  |  |  |  |  |  |
| SMR-8.35.1.12 |  | Наружная отделка | 120d | 2018-05-14 | 2018-09-10 | SMR-8.35.2.11 |  |  | 768d | 769d | 1. Standard 7 Day Workweek |  | ПР | 1 |
| SMR-8.35.1.3 |  | Архитектурные решения | 100d | 2018-05-14 | 2018-08-21 | SMR-8.35.2.11 SS+150d |  |  | 698d | 0d | 1. Standard 7 Day Workweek |  | ПР | 1 |
| SMR-8.35.1.5 |  | Внутренняя отделка отдельных помещений | 60d | 2018-08-22 | 2018-10-20 | SMR-8.35.1.6 SS |  |  | 698d | 0d | 1. Standard 7 Day Workweek |  | ПР | 1 |
| SMR-8.35.1.6 |  | Внутренняя отделка помещений. Полы. | 90d | 2018-08-22 | 2018-11-19 | SMR-8.35.1.3 |  |  | 698d | 0d | 1. Standard 7 Day Workweek |  | ПР | 1 |
| SMR-8.35.1.13 |  | Монтаж лифтов | 30d | 2018-09-21 | 2018-10-20 | SMR-8.35.2.10 |  |  | 728d | 729d | 1. Standard 7 Day Workweek |  | ПР | 1 |
| SMR-8.35.1.10 |  | Витражи внутренние | 30d | 2018-10-21 | 2018-11-19 | SMR-8.35.1.5 SS+60d |  |  | 698d | 699d | 1. Standard 7 Day Workweek |  | ПР | 1 |
| SMR-8.35.1.4 |  | Технологические решения ТХ-1. Планы расстановки мебели и оборудования. | 30d | 2018-10-21 | 2018-11-19 | SMR-8.35.1.5 |  |  | 698d | 699d | 1. Standard 7 Day Workweek |  | ПР | 1 |
| SMR-8.35.1.7 |  | Подвесные потолки | 30d | 2018-10-21 | 2018-11-19 | SMR-8.35.1.5 |  |  | 698d | 699d | 1. Standard 7 Day Workweek |  | ПР | 1 |
| SMR-8.35.1.8 |  | Архитектурные решения крылец входов и стилобатной части здания | 30d | 2018-10-21 | 2018-11-19 | SMR-8.35.1.5 |  |  | 698d | 699d | 1. Standard 7 Day Workweek |  | ПР | 1 |
| SMR-8.35.1.9 |  | Пути эвакуации | 30d | 2018-10-21 | 2018-11-19 | SMR-8.35.1.5 |  |  | 698d | 699d | 1. Standard 7 Day Workweek | 0.26 | ПР | 1 |
|  | 3 | **Водопровод и канализация, АУП** |  | 2018-05-24 | 2018-10-20 |  |  |  |  |  |  |  |  |  |
| SMR-8.35.3.1 |  | Внутренние скти водопровода и канализации | 60d | 2018-05-24 | 2018-07-23 | SMR-8.35.1.5 FF-90d | 2018-05-24 | 2018-07-22 | 818d | 0d | 1. Standard 7 Day Workweek |  | ТПНДвк | 1 |
| SMR-8.35.3.2 |  | Автоматическая установка пожаротушения Технологическая часть | 30d | 2018-09-21 | 2018-10-20 | SMR-8.35.1.5 FF |  |  | 728d | 729d | 1. Standard 7 Day Workweek |  | ТПНДвк | 1 |
|  | 4 | **Отопление и вентиляция** |  | 2018-05-24 | 2018-07-22 |  |  |  |  |  |  |  |  |  |
| SMR-8.35.4.1 |  | РД по отоплению | 60d | 2018-05-24 | 2018-07-22 | SMR-8.35.3.1 SS |  |  | 818d | 819d | 1. Standard 7 Day Workweek |  | ВентС | 1 |
| SMR-8.35.4.2 |  | РД по теплоснабжению | 60d | 2018-05-24 | 2018-07-22 | SMR-8.35.3.1 SS |  |  | 818d | 819d | 1. Standard 7 Day Workweek |  | ВентС | 1 |
| SMR-8.35.4.3 |  | РД по вентиляции | 60d | 2018-05-24 | 2018-07-22 | SMR-8.35.3.1 SS |  |  | 818d | 819d | 1. Standard 7 Day Workweek |  | ВентС | 1 |
| SMR-8.35.4.4 |  | Установочные чертежи оборудования | 60d | 2018-05-24 | 2018-07-22 | SMR-8.35.3.1 SS |  |  | 818d | 819d | 1. Standard 7 Day Workweek |  | ВентС | 1 |
|  | 5 | **Электротехническая часть и КИПиА** |  | 2018-08-22 | 2018-10-20 |  |  |  |  |  |  |  |  |  |
| SMR-8.35.5.7 |  | Расстановка кабельных металлоконструкций | 30d | 2018-08-22 | 2018-09-20 | SMR-8.35.1.3 |  |  | 728d | 0d | 1. Standard 7 Day Workweek |  | ЭЛЕКч | 1 |
| SMR-8.35.5.1 |  | Компоновочные чертежи электрооборудования. Заземление | 30d | 2018-09-21 | 2018-10-20 | SMR-8.35.5.7 |  |  | 728d | 729d | 1. Standard 7 Day Workweek |  | ЭЛЕКч | 1 |
| SMR-8.35.5.10 |  | Вторичные соединения элементов питания сборок 0,4 кВ. Схемы электрические полные. | 30d | 2018-09-21 | 2018-10-20 | SMR-8.35.5.7 |  |  | 728d | 729d | 1. Standard 7 Day Workweek |  | ЭЛЕКч | 1 |
| SMR-8.35.5.11 |  | Вторичные соединения элементов питания сборок 0,4 кВ. Схемы подключения кабелей | 30d | 2018-09-21 | 2018-10-20 | SMR-8.35.5.7 |  |  | 728d | 729d | 1. Standard 7 Day Workweek |  | ЭЛЕКч | 1 |
| SMR-8.35.5.12 |  | Журналы контрольных кабелей в части вторичных соединений | 30d | 2018-09-21 | 2018-10-20 | SMR-8.35.5.7 |  |  | 728d | 729d | 1. Standard 7 Day Workweek |  | ЭЛЕКч | 1 |
| SMR-8.35.5.13 |  | Рабочие чертежи КИП | 30d | 2018-09-21 | 2018-10-20 | SMR-8.35.5.7 |  |  | 728d | 729d | 1. Standard 7 Day Workweek |  | ЭЛЕКч | 1 |
| SMR-8.35.5.14 |  | 00 UYC. Система оповещения и поиска персонала / Система проводного радиотрансляционного вещания. | 30d | 2018-09-21 | 2018-10-20 | SMR-8.35.5.7 |  |  | 728d | 729d | 1. Standard 7 Day Workweek |  | ЭЛЕКч | 1 |
| SMR-8.35.5.15 |  | 00 UYC. Система оповещения и поиска персонала. Система проводного радиотрансляционного вещания. Кабельные журналы | 30d | 2018-09-21 | 2018-10-20 | SMR-8.35.5.7 |  |  | 728d | 729d | 1. Standard 7 Day Workweek |  | ЭЛЕКч | 1 |
| SMR-8.35.5.16 |  | Локальная вычислительная система | 30d | 2018-09-21 | 2018-10-20 | SMR-8.35.5.7 |  |  | 728d | 729d | 1. Standard 7 Day Workweek |  | ЭЛЕКч | 1 |
| SMR-8.35.5.17 |  | Локальная вычислительная система Кабельные журналы | 30d | 2018-09-21 | 2018-10-20 | SMR-8.35.5.7 |  |  | 728d | 729d | 1. Standard 7 Day Workweek |  | ЭЛЕКч | 1 |
| SMR-8.35.5.18 |  | РД по связи и сигнализации | 30d | 2018-09-21 | 2018-10-20 | SMR-8.35.5.7 |  |  | 728d | 729d | 1. Standard 7 Day Workweek |  | ЭЛЕКч | 1 |
| SMR-8.35.5.19 |  | РД по связи и сигнализации. Кабельные журналы | 30d | 2018-09-21 | 2018-10-20 | SMR-8.35.5.7 |  |  | 728d | 729d | 1. Standard 7 Day Workweek |  | ЭЛЕКч | 1 |
| SMR-8.35.5.2 |  | Бытовая и компьютерная розеточная сеть | 30d | 2018-09-21 | 2018-10-20 | SMR-8.35.5.7 |  |  | 728d | 729d | 1. Standard 7 Day Workweek |  | ЭЛЕКч | 1 |
| SMR-8.35.5.20 |  | Система охранного видеонаблюдения (СВН) | 30d | 2018-09-21 | 2018-10-20 | SMR-8.35.5.7 |  |  | 728d | 729d | 1. Standard 7 Day Workweek |  | ЭЛЕКч | 1 |
| SMR-8.35.5.21 |  | Система охранного видеонаблюдения (СВН). Журнал контрольных кабелей | 30d | 2018-09-21 | 2018-10-20 | SMR-8.35.5.7 |  |  | 728d | 729d | 1. Standard 7 Day Workweek |  | ЭЛЕКч | 1 |
| SMR-8.35.5.22 |  | Схемы автоматизации | 30d | 2018-09-21 | 2018-10-20 | SMR-8.35.5.7 |  |  | 728d | 729d | 1. Standard 7 Day Workweek |  | ЭЛЕКч | 1 |
| SMR-8.35.5.23 |  | Схемы внешних присоединений к шкафам автоматики | 30d | 2018-09-21 | 2018-10-20 | SMR-8.35.5.7 |  |  | 728d | 729d | 1. Standard 7 Day Workweek |  | ЭЛЕКч | 1 |
| SMR-8.35.5.24 |  | Схемы заполнения и внешние присоединения к сборкам в части автоматики | 30d | 2018-09-21 | 2018-10-20 | SMR-8.35.5.7 |  |  | 728d | 729d | 1. Standard 7 Day Workweek |  | ЭЛЕКч | 1 |
| SMR-8.35.5.25 |  | Задание заводу на щитовые устройства | 30d | 2018-09-21 | 2018-10-20 | SMR-8.35.5.7 |  |  | 728d | 729d | 1. Standard 7 Day Workweek |  | ЭЛЕКч | 1 |
| SMR-8.35.5.26 |  | Журналы контрольных кабелей в части автоматики | 30d | 2018-09-21 | 2018-10-20 | SMR-8.35.5.7 |  |  | 728d | 729d | 1. Standard 7 Day Workweek |  | ЭЛЕКч | 1 |
| SMR-8.35.5.27 |  | Задание заводу на шкафы преобразователей КИП | 30d | 2018-09-21 | 2018-10-20 | SMR-8.35.5.7 |  |  | 728d | 729d | 1. Standard 7 Day Workweek |  | ЭЛЕКч | 1 |
| SMR-8.35.5.28 |  | Журналы контрольных кабелей в части КИП | 30d | 2018-09-21 | 2018-10-20 | SMR-8.35.5.7 |  |  | 728d | 729d | 1. Standard 7 Day Workweek |  | ЭЛЕКч | 1 |
| SMR-8.35.5.29 |  | Система охранного видеонаблюдения (СВН). Строительная часть | 30d | 2018-09-21 | 2018-10-20 | SMR-8.35.5.7 |  |  | 728d | 729d | 1. Standard 7 Day Workweek |  | ЭЛЕКч | 1 |
| SMR-8.35.5.3 |  | Схемы электрических соединений вторичных сборок 0,4 кВ | 30d | 2018-09-21 | 2018-10-20 | SMR-8.35.5.7 |  |  | 728d | 729d | 1. Standard 7 Day Workweek |  | ЭЛЕКч | 1 |
| SMR-8.35.5.30 |  | РД по речевому оповещению о пожаре | 30d | 2018-09-21 | 2018-10-20 | SMR-8.35.5.7 |  |  | 728d | 729d | 1. Standard 7 Day Workweek |  | ЭЛЕКч | 1 |
| SMR-8.35.5.31 |  | РД по речевому оповещению о пожаре. Кабельные журналы | 30d | 2018-09-21 | 2018-10-20 | SMR-8.35.5.7 |  |  | 728d | 729d | 1. Standard 7 Day Workweek |  | ЭЛЕКч | 1 |
| SMR-8.35.5.32 |  | Система контроля и управления противопожарной защитой (СКУ ПЗ) | 30d | 2018-09-21 | 2018-10-20 | SMR-8.35.5.7 |  |  | 728d | 729d | 1. Standard 7 Day Workweek |  | ЭЛЕКч | 1 |
| SMR-8.35.5.33 |  | Система контроля и управления противопожарной защитой (СКУ ПЗ). Журнал контрольных кабелей | 30d | 2018-09-21 | 2018-10-20 | SMR-8.35.5.7 |  |  | 728d | 729d | 1. Standard 7 Day Workweek |  | ЭЛЕКч | 1 |
| SMR-8.35.5.34 |  | Система контроля и управления противопожарной защитой (СКУ ПЗ). Техническое задание заводу на изготовление и программное | 30d | 2018-09-21 | 2018-10-20 | SMR-8.35.5.7 |  |  | 728d | 729d | 1. Standard 7 Day Workweek |  | ЭЛЕКч | 1 |
| SMR-8.35.5.4 |  | Техническое задание заводу на вторичные сборки 0,4 кВ | 30d | 2018-09-21 | 2018-10-20 | SMR-8.35.5.7 |  |  | 728d | 729d | 1. Standard 7 Day Workweek |  | ЭЛЕКч | 1 |
| SMR-8.35.5.5 |  | Планы кабельных трасс. Журналы силовых кабелей | 30d | 2018-09-21 | 2018-10-20 | SMR-8.35.5.7 |  |  | 728d | 729d | 1. Standard 7 Day Workweek |  | ЭЛЕКч | 1 |
| SMR-8.35.5.6 |  | Электротехнические чертежи. Освещение | 30d | 2018-09-21 | 2018-10-20 | SMR-8.35.5.7 |  |  | 728d | 729d | 1. Standard 7 Day Workweek |  | ЭЛЕКч | 1 |
| SMR-8.35.5.8 |  | Вторичные соединения в части электродвигателей. Схемы электрические полные. | 30d | 2018-09-21 | 2018-10-20 | SMR-8.35.5.7 |  |  | 728d | 729d | 1. Standard 7 Day Workweek |  | ЭЛЕКч | 1 |
| SMR-8.35.5.9 |  | Вторичные соединения в части электродвигателей. Схемы подключения кабелей | 30d | 2018-09-21 | 2018-10-20 | SMR-8.35.5.7 |  |  | 728d | 729d | 1. Standard 7 Day Workweek |  | ЭЛЕКч | 1 |
| SMR-8.36 |  | Площадка стоянки строительной техники и автотранспорта | 30d | 2018-09-21 | 2018-10-20 | SMR-8.35.5.7 |  |  | 728d | 729d | 1. Standard 7 Day Workweek |  | ЭЛЕКч | 1 |

| ID | WBS | Activity | Duration | Start | Finish | Predecessors | Complete | Remaining | Planned start | Planned finish | Total float | Free float | Constraint | Calendar | Cost | Actual cost | 01 - Глава ССР | 03 - Часть проекта | 05 - Вид работ | ОКСГ |
| --- | --- | --- | --- | --- | --- | --- | --- | --- | --- | --- | --- | --- | --- | --- | --- | --- | --- | --- | --- | --- |
|  | 10.2 | **8.2. Временные здания и сооружения, приспосабливаемые из состава существующей базы** |  | 2014-01-02 | 2017-08-16 |  |  |  |  |  |  |  |  |  |  |  |  |  |  |  |
|  | 10.2.1 | **База Главного энергетика** |  | 2014-02-01 | 2016-06-02 |  |  |  |  |  |  |  |  |  |  |  |  |  |  |  |
|  | 10.2.1.1 | **Административно-бытовой корпус с мастерскими служб ОГМ и ОГЭ** |  | 2014-02-01 | 2016-06-02 |  |  |  |  |  |  |  |  |  |  |  |  |  |  |  |
| 251 |  | Демонтажные и общестроительные работы | 244d | 2014-02-01 A | 2014-09-30 A | 250 SS | 100% |  |  |  |  |  | finish on or after 2013-12-31 | 1. Standard 7 Day Workweek | 12.09 | 12.09 | 8 | ПР | СМР | 1 |
| A7100 |  | База Главного энергетика. Бетонные площадки и ограждение. | 296d | 2014-02-01 A | 2014-11-21 A |  | 100% |  |  |  |  |  |  | 1. Standard 7 Day Workweek | 2.52 |  |  | ПР |  | 1 |
| A10160 |  | Электроснабжение | 200d | 2014-02-01 A | 2014-08-17 A |  | 100% |  |  |  |  |  |  | 1. Standard 7 Day Workweek | 12.47 |  |  | ЭЛЕКч |  | 1 |
| A10170 |  | Сети электроснабжения 0,4 кВ. | 90d | 2014-02-01 A | 2014-04-29 A |  | 100% |  |  |  |  |  |  | 1. Standard 7 Day Workweek | 4.14 |  |  | ЭЛЕКч |  | 1 |
| A10200 |  | Электроснабжение | 200d | 2014-02-01 A | 2014-08-17 A |  | 100% |  |  |  |  |  |  | 1. Standard 7 Day Workweek | 1.14 |  |  | ЭЛЕКч |  | 1 |
| A10220 |  | Электроснабжение | 314d | 2014-02-01 A | 2014-12-09 A |  | 100% |  |  |  |  |  |  | 1. Standard 7 Day Workweek | 2.25 |  |  | ЭЛЕКч |  | 1 |
| A10290 |  | Электроснабжение. КТП-Т-400-10/0,4 кВ. База главного энергетика | 60d | 2014-02-01 A | 2014-04-01 A |  | 100% |  |  |  |  |  |  | 1. Standard 7 Day Workweek | 4.84 |  |  | ЭЛЕКч |  | 1 |
| A7060 |  | Электроосвещение. | 265d | 2014-02-01 A | 2014-10-21 A |  | 100% |  |  |  |  |  |  | 1. Standard 7 Day Workweek |  |  |  | ЭЛЕКч |  | 1 |
| A7090 |  | Общестроительные работы. | 265d | 2014-02-01 A | 2014-10-21 A |  | 100% |  |  |  |  |  |  | 1. Standard 7 Day Workweek | 5.35 |  |  | ПР |  | 1 |
| A7110 |  | База Главного энергетика. Бетонные площадки и ограждение. | 265d | 2014-02-01 A | 2014-10-21 A |  | 100% |  |  |  |  |  |  | 1. Standard 7 Day Workweek | 5.91 |  |  | ПР |  | 1 |
| A7120 |  | Теплоснабжение (строительная часть). | 265d | 2014-02-01 A | 2014-10-21 A |  | 100% |  |  |  |  |  |  | 1. Standard 7 Day Workweek | 4.14 |  |  | ПР |  | 1 |
| A7130 |  | Общестроительные работы. | 265d | 2014-02-01 A | 2014-10-21 A |  | 100% |  |  |  |  |  |  | 1. Standard 7 Day Workweek | 80.22 |  |  | ПР |  | 1 |
| A7140 |  | Общестроительные работы. | 265d | 2014-02-01 A | 2014-10-21 A |  | 100% |  |  |  |  |  |  | 1. Standard 7 Day Workweek | 0.96 |  |  | ПР |  | 1 |
| A7150 |  | Общестроительные работы. | 265d | 2014-02-01 A | 2014-10-21 A |  | 100% |  |  |  |  |  |  | 1. Standard 7 Day Workweek | 2.67 |  |  | ПР |  | 1 |
| A7170 |  | Общестроительные работы. | 265d | 2014-02-01 A | 2014-10-21 A |  | 100% |  |  |  |  |  |  | 1. Standard 7 Day Workweek |  |  |  | ПР |  | 1 |
| A7190 |  | Отопление и вентиляция. | 265d | 2014-02-01 A | 2014-10-21 A |  | 100% |  |  |  |  |  |  | 1. Standard 7 Day Workweek |  |  |  | ВентС |  | 1 |
| A7200 |  | Отопление и вентиляция. | 265d | 2014-02-01 A | 2014-10-21 A |  | 100% |  |  |  |  |  |  | 1. Standard 7 Day Workweek | 1.25 |  |  | ВентС |  | 1 |
| A7220 |  | Теплоснабжение. | 265d | 2014-02-01 A | 2014-10-21 A |  | 100% |  |  |  |  |  |  | 1. Standard 7 Day Workweek | 2.37 |  |  | ВентС |  | 1 |
| A7230 |  | Теплоснабжение. | 265d | 2014-02-01 A | 2014-10-21 A |  | 100% |  |  |  |  |  |  | 1. Standard 7 Day Workweek | 0.36 |  |  | ВентС |  | 1 |
| 256 |  | Элетроосвещение. | 256d | 2014-02-04 A | 2014-10-15 A | 250 FF | 100% |  |  |  |  |  | start on or after 2014-02-04 | 1. Standard 7 Day Workweek | 0.29 | 0.29 | 8 | ЭЛЕКч | ЭМР | 1 |
| A10230 |  | Электроснабжение КНС | 60d | 2014-02-05 A | 2014-04-05 A |  | 100% |  |  |  |  |  |  | 1. Standard 7 Day Workweek | 3.12 |  |  | ЭЛЕКч |  | 1 |
| 250 |  | Общестроительные работы. | 264.6d | 2014-02-12 A | 2014-11-01 A |  | 100% |  |  |  |  |  | start on or after 2014-01-31 | 1. Standard 7 Day Workweek | 45.06 | 43.76 | 8 | ПР | СМР | 1 |
| A7070 |  | Электроосвещение. | 283d | 2014-02-13 A | 2014-11-20 A |  | 100% |  |  |  |  |  |  | 1. Standard 7 Day Workweek | 18.58 |  |  | ЭЛЕКч |  | 1 |
| 252 |  | Отопление и вентиляция | 406d | 2014-02-20 A | 2015-03-30 A | 250 FF-270d | 100% |  |  |  |  |  | finish on or after 2014-08-31 | 1. Standard 7 Day Workweek | 26.28 | 24.08 | 8 | ВентС | ТМР | 1 |
| A10300 |  | КТПH-П-400/10/0,4-У1. База главного энергетика. Электроснабжение. | 30d | 2014-03-01 A | 2014-03-30 A |  | 100% |  |  |  |  |  |  | 1. Standard 7 Day Workweek |  |  |  | ЭЛЕКч |  | 1 |
| A10310 |  | КТПH-П400/10/0,4-У1. База главного энергетика. Электроснабжение. | 30d | 2014-03-01 A | 2014-03-30 A |  | 100% |  |  |  |  |  |  | 1. Standard 7 Day Workweek |  |  |  | ЭЛЕКч |  | 1 |
| 255 |  | Электроснабжение | 246.3d | 2014-03-05 A | 2014-11-04 A | 256 SS | 100% |  |  |  |  |  | start on or after 2014-02-04 | 1. Standard 7 Day Workweek | 0.8 | 0.8 | 8 | ЭЛЕКч | ЭМР | 1 |
| 253 |  | Водопровод и канализация | 571d | 2014-03-06 A | 2015-09-25 A | 252 FF | 100% |  |  |  |  |  |  | 1. Standard 7 Day Workweek | 6.89 | 6.53 | 8 | ТПНДвк | ТМР | 1 |
| A10190 |  | Наружные сети водоснабжения и канализации | 281d | 2014-03-06 A | 2014-12-09 A |  | 100% |  |  |  |  |  |  | 1. Standard 7 Day Workweek | 30.82 |  |  | ТПНДвк |  | 1 |
| A10270 |  | Водопровод и канализация | 30d | 2014-03-06 A | 2014-04-04 A |  | 100% |  |  |  |  |  |  | 1. Standard 7 Day Workweek |  |  |  | ТПНДвк |  | 1 |
| A10280 |  | Наружные сети водопровода и каналицации | 60d | 2014-03-14 A | 2014-05-10 A |  | 100% |  |  |  |  |  |  | 1. Standard 7 Day Workweek | 17.02 |  |  | ТПНДвк |  | 1 |
| A10150 |  | Устройство вентилируемого фасада | 60d | 2014-04-01 A | 2014-05-28 A | A7130 SS+90d | 100% |  |  |  |  |  |  | 1. Standard 7 Day Workweek |  |  |  | ПР |  | 1 |
| 254 |  | Технологическое оборудование | 60d | 2014-04-02 A | 2014-05-29 A |  | 100% |  |  |  |  |  | finish on or after 2014-11-30 | 1. Standard 7 Day Workweek | 36.99 |  | 8 | ПР | ТМР | 1 |
| 259 |  | Электротехническое оборудование и материалы | 302.43d | 2014-04-09 A | 2015-02-03 A |  | 100% |  |  |  |  |  | start on or after 2014-06-10 | 1. Standard 7 Day Workweek | 1.28 | 1.08 | 8 | ЭЛЕКч | ЭМР | 1 |
| 258 |  | Автоматическая пожарная сигнализация и оповещение людей о пожаре | 433d | 2014-04-24 A | 2015-06-30 A |  | 100% |  |  |  |  |  |  | 1. Standard 7 Day Workweek | 2.64 | 2.03 | 8 | ЭЛЕКч | ЭМР | 1 |
| A10180 |  | Электроснабжение. КТП-Т-400-10/0,4 кВ. Пусконаладочные работы | 10d | 2014-04-30 A | 2014-05-09 A | A10170 | 100% |  |  |  |  |  |  | 1. Standard 7 Day Workweek | 0.22 |  |  | ЭЛЕКч |  | 1 |
| A7040 |  | Навес. Общестроительные работы. | 265d | 2014-05-07 A | 2015-01-26 A |  | 100% |  |  |  |  |  |  | 1. Standard 7 Day Workweek | 2.72 |  |  | ПР |  | 1 |
| A10210 |  | Подключение огнезащитных клапанов и клапанов дымоудаления | 47d | 2014-10-21 A | 2014-12-06 A | A7150 | 100% |  |  |  |  |  |  | 1. Standard 7 Day Workweek |  |  |  | ПР |  | 1 |
| A7160 |  | Наружные сети водопровода и канализации. Архитектурно-строительные решения. | 265d | 2015-02-01 A | 2015-10-23 A |  | 100% |  |  |  |  |  |  | 1. Standard 7 Day Workweek | 0.38 |  |  | ТПНДвк |  | 1 |
| 260 |  | Пусконаладочные работы систем вентиляции | 245.52d | 2015-07-01 A | 2016-06-02 | 253 FF | 99% | 1.52d | 2015-07-01 | 2016-03-02 | 1598.48d | 1599.48d | start on or after 2014-12-01 | 1. Standard 7 Day Workweek | 1.44 |  | 8 |  | _ПНР | 1 |
| A10240 |  | Электродиагностические испытания электрооборудования. Пусконаладочные работы | 90d | 2015-07-01 A | 2015-09-28 A | 260 SS | 100% |  |  |  |  |  |  | 1. Standard 7 Day Workweek | 0.53 |  |  | ЭЛЕКч |  | 1 |
| A10250 |  | Система автоматической пожарной сигнализации и оповещения людей о пожаре. Пусконаладочные работы. | 90d | 2015-07-01 A | 2015-09-28 A | 260 SS | 100% |  |  |  |  |  |  | 1. Standard 7 Day Workweek | 1.63 |  |  | ЭЛЕКч |  | 1 |
| A10260 |  | Отопление | 488.04d | 2015-07-01 A | 2016-03-31 A | 260 SS | 100% |  | 2015-07-01 | 2016-10-31 |  |  |  | 1. Standard 7 Day Workweek | 0.09 |  |  | ТПНДвк |  | 1 |

| ID | WBS | Activity | Duration | Start | Finish | Predecessors | Complete | Total float | Free float | Constraint | Calendar | Cost | Actual cost | 01 - Глава ССР | 03 - Часть проекта | 05 - Вид работ | ОКСГ |
| --- | --- | --- | --- | --- | --- | --- | --- | --- | --- | --- | --- | --- | --- | --- | --- | --- | --- |
|  | 10.2.2 | **Склады базы УПТК Генподрядчика (Склады базы УПТК).** |  | 2014-01-02 | 2017-05-16 |  |  |  |  |  |  |  |  |  |  |  |  |
|  | 10.2.2.1 | **1.Прирельсовый отапливаемый склад с двухсторонней рампой для хранения технол. оборудов (литер Б)** |  | 2014-01-31 | 2017-05-16 |  |  |  |  |  |  |  |  |  |  |  |  |
| 263 |  | Общестроительные работы | 148d | 2014-01-31 A | 2014-06-25 A |  | 100% |  |  | start on or after 2014-01-31 | 1. Standard 7 Day Workweek | 118.67 | 118.67 | 8 | ПР | СМР | 1 |
| 264 |  | Демонтажные и общестроительные работы | 57d | 2014-02-01 A | 2014-03-29 A | 263 SS | 100% |  |  | finish on or after 2014-01-31 | 1. Standard 7 Day Workweek |  |  | 8 | ПР | СМР | 1 |
| 266 |  | Отопление и вентиляция | 204d | 2014-02-05 A | 2014-08-25 A | 265 FF | 100% |  |  |  | 1. Standard 7 Day Workweek | 0.21 |  | 8 | ВентС | ТМР | 1 |
| A7250 |  | Теплоснабжение (строительная часть). | 143d | 2014-02-05 A | 2014-06-25 A |  | 100% |  |  |  | 1. Standard 7 Day Workweek | 1.98 |  |  | ПР |  | 1 |
| 267 |  | Водопровод и канализация | 210d | 2014-03-01 A | 2014-09-24 A | 266 FF | 100% |  |  |  | 1. Standard 7 Day Workweek | 4.43 |  | 8 | ТПНДвк | ТМР | 1 |
| 268 |  | Электроосвещение | 180d | 2014-03-04 A | 2014-08-28 A | 267 FF | 100% |  |  |  | 1. Standard 7 Day Workweek | 9.91 | 9.91 | 8 | ЭЛЕКч | ЭМР | 1 |
| 269 |  | Силовое электрооборудование | 156.95d | 2014-04-03 A | 2014-09-04 A | 265 SS | 100% |  |  | finish on or after 2014-03-31 | 1. Standard 7 Day Workweek | 3.36 | 3.36 | 8 | ЭЛЕКч | ЭМР | 1 |
| 271 |  | Сети связи | 358d | 2014-04-09 A | 2015-03-30 A | 270 FF | 100% |  |  |  | 1. Standard 7 Day Workweek |  |  | 8 | ЭЛЕКч | ЭМР | 1 |
| 272 |  | Электротехническая часть | 348d | 2014-04-17 A | 2015-03-30 A | 271 FF | 100% |  |  | start on or after 2014-05-06 | 1. Standard 7 Day Workweek | 5.03 | 0.8 | 8 | ЭЛЕКч | ЭМР | 1 |
| A7390 |  | Теплоснабжение (трубопроводы). | 62d | 2014-05-01 A | 2014-07-01 A |  | 100% |  |  |  | 1. Standard 7 Day Workweek | 3.12 |  |  | ВентС |  | 1 |
| 270 |  | Автоматическая пожарная сигнализация и оповещение людей о пожаре | 123.65d | 2014-05-02 A | 2014-09-02 A |  | 100% |  |  |  | 1. Standard 7 Day Workweek | 1.81 | 1.71 | 8 | ЭЛЕКч | ЭМР | 1 |
| A7300 |  | Отопление и вентиляция. | 25d | 2014-06-01 A | 2014-06-25 A |  | 100% |  |  |  | 1. Standard 7 Day Workweek | 8.15 |  |  | ВентС |  | 1 |
| 265 |  | Технологические решения | 27d | 2014-09-03 A | 2014-09-29 A |  | 100% |  |  | start on or after 2014-05-03 | 1. Standard 7 Day Workweek | 6.52 |  | 8 | ПР | ТМР | 1 |
| 273 |  | Пусконаладочные работы - 6,01% | 58d | 2015-02-01 A | 2015-03-30 A | 265 | 100% |  |  |  | 1. Standard 7 Day Workweek | 0.11 |  | 8 |  | _ПНР | 1 |
| A7260 |  | Общестроительные работы. | 100d | 2016-06-01 | 2016-09-08 |  |  | 1250d | 0d |  | 1. Standard 7 Day Workweek | 0.36 |  |  | ПР |  | 1 |
| A7270 |  | Общестроительные работы. | 100d | 2016-06-01 | 2016-09-08 | A7260 SS |  | 1250d | 0d |  | 1. Standard 7 Day Workweek |  |  |  | ПР |  | 1 |
| A7290 |  | Строительные работы. | 100d | 2016-09-09 | 2016-12-17 | A7270 |  | 1250d | 0d |  | 1. Standard 7 Day Workweek | 0.94 |  |  | ПР |  | 1 |
| A7330 |  | Наружные сети водопровода и канализации. | 100d | 2016-10-29 | 2017-02-05 | A7290 FS-50d |  | 1250d | 0d |  | 1. Standard 7 Day Workweek | 23.21 |  |  | ТПНДвк |  | 1 |
| A7370 |  | Электроснабжение. | 100d | 2016-12-18 | 2017-03-27 | A7350 SS-50d |  | 1300d | 0d |  | 1. Standard 7 Day Workweek |  |  |  | ЭЛЕКч |  | 1 |
| A9120 |  | Система автоматической пожарной сигнализации и оповещения людей о пожаре. Пуско-наладочные | 100d | 2016-12-18 | 2017-03-27 | A7370 SS |  | 1300d | 0d |  | 1. Standard 7 Day Workweek | 0.44 |  |  | ЭЛЕКч |  | 1 |
| A9140 |  | Электроснабжение. КТПП-630-10/0,4 кВ Пусконаладочные работы | 100d | 2016-12-18 | 2017-03-27 | A9120 SS |  | 1300d | 1301d |  | 1. Standard 7 Day Workweek | 0.22 |  |  | ЭЛЕКч |  | 1 |
| A7350 |  | Силовое электрооборудование. | 100d | 2017-02-06 | 2017-05-16 | A7330 |  | 1250d | 0d |  | 1. Standard 7 Day Workweek | 0.79 |  |  | ЭЛЕКч |  | 1 |

| ID | WBS | Activity | Duration | Start | Finish | Predecessors | Complete | Remaining | Planned start | Planned finish | Total float | Free float | Constraint | Calendar | Cost | Actual cost | 01 - Глава ССР | 03 - Часть проекта | 05 - Вид работ | ОКСГ |
| --- | --- | --- | --- | --- | --- | --- | --- | --- | --- | --- | --- | --- | --- | --- | --- | --- | --- | --- | --- | --- |
|  | 10.2.2.2 | **2. Прирельсовый отапливаемый склад с двухсторонней рампой для хранения технол. оборудов (литер Б1)** |  | 2014-01-02 | 2016-11-19 |  |  |  |  |  |  |  |  |  |  |  |  |  |  |  |
| 276 |  | Демонтажные и общестроительные работы | 89d | 2014-01-02 A | 2014-03-31 A | 275 SS | 100% |  |  |  |  |  | finish on or after 2014-03-31 | 1. Standard 7 Day Workweek |  |  | 8 | ПР | СМР | 1 |
| 275 |  | Архитектурно-строительные решения | 453d | 2014-01-04 A | 2015-03-30 A | 263 SS | 100% |  |  |  |  |  | finish on or after 2014-05-31 | 1. Standard 7 Day Workweek | 3.09 |  | 8 | ПР | СМР | 1 |
| 278 |  | Отопление и вентиляция | 87d | 2014-01-04 A | 2014-03-31 A | 277 FF | 100% |  |  |  |  |  | finish on or after 2014-05-31 | 1. Standard 7 Day Workweek |  |  | 8 | ВентС | ТМР | 1 |
| A7410 |  | Прирельсовый отапливаемый склад. (Лит.Б1) Общестроительные работы | 453d | 2014-01-04 A | 2015-03-30 A |  | 100% |  |  |  |  |  |  | 1. Standard 7 Day Workweek | 45.17 |  |  | ПР |  | 1 |
| 281 |  | Силовое электрооборудование | 165d | 2014-02-04 A | 2014-07-16 A | 280 FF | 100% |  |  |  |  |  | finish on or after 2014-05-31 | 1. Standard 7 Day Workweek | 1.03 | 1.03 | 8 | ЭЛЕКч | ЭМР | 1 |
| 279 |  | Водопровод и канализация | 228d | 2014-02-07 A | 2014-09-20 A | 278 FF | 100% |  |  |  |  |  |  | 1. Standard 7 Day Workweek | 1.68 |  | 8 | ТПНДвк | ТМР | 1 |
| 280 |  | Электроосвещение | 225d | 2014-02-10 A | 2014-09-20 A | 279 FF | 100% |  |  |  |  |  |  | 1. Standard 7 Day Workweek | 0.34 | 0.34 | 8 | ЭЛЕКч | ЭМР | 1 |
| A7430 |  | Электроосвещение | 225d | 2014-02-10 A | 2014-09-20 A |  | 100% |  |  |  |  |  |  | 1. Standard 7 Day Workweek | 4.11 |  |  | ЭЛЕКч |  | 1 |
| A7440 |  | Электроснабжение внешнее | 225d | 2014-02-10 A | 2014-09-20 A |  | 100% |  |  |  |  |  |  | 1. Standard 7 Day Workweek | 9.07 |  |  | ЭЛЕКч |  | 1 |
| A7450 |  | Электроснабжение внешнее | 225d | 2014-02-10 A | 2014-09-20 A |  | 100% |  |  |  |  |  |  | 1. Standard 7 Day Workweek | 2.86 |  |  | ЭЛЕКч |  | 1 |
| 283 |  | Сети связи | 42d | 2014-04-10 A | 2014-05-21 A | 282 FF | 100% |  |  |  |  |  | finish on or after 2014-05-31 | 1. Standard 7 Day Workweek |  |  | 8 | ЭЛЕКч | ЭМР | 1 |
| 282 |  | Автоматическая пожарная сигнализация и оповещение людей о пожаре | 143.83d | 2014-04-16 A | 2014-09-06 A | 281 FF | 100% |  |  |  |  |  | start on or after 2014-05-13 | 1. Standard 7 Day Workweek | 1.26 | 1.16 | 8 | ЭЛЕКч | ЭМР | 1 |
| A9700 |  | Перенос магистральной т/сети с территории базы УПТК. Строительные решение. | 274d | 2014-06-01 A | 2015-03-01 A |  | 100% |  |  |  |  |  |  | 1. Standard 7 Day Workweek | 2.33 |  |  | ПР |  | 1 |
| 571 |  | Благоустройство территории | 489d | 2015-01-07 A | 2016-06-12 |  | 98% | 11.7d | 2015-01-07 | 2016-05-09 | 1428.3d | 0d | as late as possible | 1. Standard 7 Day Workweek | 65.43 |  |  | ПР |  | 1 |
| 371 |  | Перенос магистральной теплосети с территории базы УПТК | 335d | 2015-04-01 A | 2016-06-01 |  | 100% | 0d | 2015-04-01 | 2016-02-29 | 1600d | 1601d |  | 1. Standard 7 Day Workweek | 20.37 | 7.96 |  | ПР |  | 1 |
| SMR-8.12.2.10 |  | Полы | 0d | 2016-04-01 A | 2016-06-01 | 277 |  | 0d | 2016-07-11 | 2016-07-11 | 1600d | 1601d |  | 1. Standard 7 Day Workweek | 5.6 |  |  | ПР |  | 1 |
| SMR-8.12.2.9 |  | Ограждение территории. Участок 5. Архитектурно-строительные решения | 0d | 2016-05-10 A | 2016-07-08 |  |  | 38d | 2016-06-01 | 2016-06-01 | 1562d | 1563d |  | 1. Standard 7 Day Workweek |  |  |  | ПР |  | 1 |
| SMR-8.12.3.16.1 |  | Благоустройство территории | 0d | 2016-05-25 A | 2016-07-23 | SMR-8.12.2.10 |  | 53d | 2016-06-01 | 2016-06-01 | 1547d | 1548d |  | 1. Standard 7 Day Workweek | 4.81 |  |  | ПР |  | 1 |
| A10320 |  | Технологическое оборудование | 40d | 2016-06-01 | 2016-07-10 |  |  |  |  |  | 1560d | 1561d |  | 1. Standard 7 Day Workweek |  |  |  | ПР |  | 1 |
| A7470 |  | Лит. Б1. Сети электроснабжения. Пусконаладочные работы. Пусконаладочные работы | 70d | 2016-06-01 | 2016-08-09 | 571 FF |  |  |  |  | 1530d | 1531d |  | 1. Standard 7 Day Workweek | 0.04 |  |  |  |  | 1 |
| A9710 |  | Ограждение территории | 70d | 2016-06-01 | 2016-08-09 | 571 FF |  |  |  |  | 1530d | 1531d |  | 1. Standard 7 Day Workweek | 19 |  |  | ПР |  | 1 |
| 277 |  | Технологические решения | 90d | 2016-06-12 | 2016-09-10 | 276 SS, 571 |  |  |  |  | 1428.3d | 0d | start on or after 2014-06-05 | 1. Standard 7 Day Workweek | 6.52 |  | 8 | ПР | ТМР | 1 |
| 284 |  | Пусконаладочные работы - 6,01% | 70d | 2016-07-02 | 2016-09-10 | 277 FF, 571 FF |  |  |  |  | 1498.3d | 1499.3d |  | 1. Standard 7 Day Workweek | 0.27 |  | 8 |  | _ПНР | 1 |
| A9720 |  | Ограждение территории. Дополнительные работы. | 70d | 2016-09-10 | 2016-11-19 | 277 |  |  |  |  | 1428.3d | 1429.3d |  | 1. Standard 7 Day Workweek |  |  |  | ПР |  | 1 |

| ID | WBS | Activity | Duration | Start | Finish | Predecessors | Complete | Remaining | Planned start | Planned finish | Total float | Free float | Constraint | Calendar | Cost | Actual cost | 01 - Глава ССР | 03 - Часть проекта | 05 - Вид работ | ОКСГ |
| --- | --- | --- | --- | --- | --- | --- | --- | --- | --- | --- | --- | --- | --- | --- | --- | --- | --- | --- | --- | --- |
|  | 10.2.2.3 | **3. Прирельсовый отапливаемый склад с двухсторонней рампой для хранения технол. оборудов. (литер Б2)** |  | 2014-01-31 | 2015-03-30 |  |  |  |  |  |  |  |  |  |  |  |  |  |  |  |
| 287 |  | Демонтажные и ремонтно-восстановительные работы | 60d | 2014-01-31 A | 2014-03-31 A | 286 SS | 100% |  |  |  |  |  | finish on or after 2014-03-31 | 1. Standard 7 Day Workweek |  |  | 8 | ПР | РВР | 1 |
| A7500 |  | Общестроительные работы | 239d | 2014-01-31 A | 2014-09-24 A |  | 100% |  |  |  |  |  |  | 1. Standard 7 Day Workweek | 67.17 |  |  | ПР |  | 1 |
| A7510 |  | Общестроительные работы | 239d | 2014-01-31 A | 2014-09-24 A |  | 100% |  |  |  |  |  |  | 1. Standard 7 Day Workweek |  |  |  | ПР |  | 1 |
| 286 |  | Полы в помещениях 1а и 1б | 395d | 2014-02-01 A | 2015-02-28 A |  | 100% |  |  |  |  |  | start on or after 2014-01-31 | 1. Standard 7 Day Workweek | 3.87 | 3.87 | 8 | ПР | СМР | 1 |
| 289 |  | Отопление и вентиляция | 236.8d | 2014-02-04 A | 2014-09-26 A | 288 FF | 100% |  |  |  |  |  | finish on or after 2014-05-31 | 1. Standard 7 Day Workweek | 3.64 |  | 8 | ВентС | ТМР | 1 |
| A7490 |  | Теплоснабжение (строительная часть) | 235d | 2014-02-04 A | 2014-09-24 A |  | 100% |  |  |  |  |  |  | 1. Standard 7 Day Workweek | 1.93 |  |  | ВентС |  | 1 |
| A7540 |  | Отопление и вентиляция | 235d | 2014-02-04 A | 2014-09-24 A |  | 100% |  |  |  |  |  |  | 1. Standard 7 Day Workweek | 0.51 |  |  | ВентС |  | 1 |
| A7550 |  | Отопление и вентиляция | 235d | 2014-02-04 A | 2014-09-24 A |  | 100% |  |  |  |  |  |  | 1. Standard 7 Day Workweek | 4.32 |  |  | ВентС |  | 1 |
| A7520 |  | Теплоснабжение (строительная часть) | 215d | 2014-02-24 A | 2014-09-24 A |  | 100% |  |  |  |  |  |  | 1. Standard 7 Day Workweek | 0.32 |  |  | ПР |  | 1 |
| 288 |  | Монтаж технологического оборудования | 180.8d | 2014-04-01 A | 2014-09-26 A | 287 FS-258d | 100% |  |  |  |  |  | finish on or after 2014-05-31 | 1. Standard 7 Day Workweek | 0.84 |  | 8 | ПР | ТМР | 1 |
| 290 |  | Внутренний водопровод | 338d | 2014-04-01 A | 2015-03-02 A | 289 SS-135d | 100% |  |  |  |  |  |  | 1. Standard 7 Day Workweek | 1.93 | 1.9 | 8 | ТПНДвк | ТМР | 1 |
| 291 |  | Электроосвещение | 366d | 2014-04-01 A | 2015-03-30 A | 290 FS-90d | 100% |  |  |  |  |  | finish on or after 2014-05-31 | 1. Standard 7 Day Workweek | 4.57 | 4.34 | 8 | ЭЛЕКч | ЭМР | 1 |
| 294 |  | Сети связи | 61d | 2014-04-01 A | 2014-05-29 A | 293 FF | 100% |  |  |  |  |  | finish on or after 2014-05-31 | 1. Standard 7 Day Workweek | 0.12 | 0.12 | 8 | ЭЛЕКч | ЭМР | 1 |
| A10330 |  | Электроосвещение | 60d | 2014-04-01 A | 2014-05-28 A |  | 100% |  |  |  |  |  |  | 1. Standard 7 Day Workweek |  |  |  | ЭЛЕКч |  | 1 |
| A10340 |  | Автоматическая пожарная сигнализация | 60d | 2014-04-01 A | 2014-05-28 A |  | 100% |  |  |  |  |  |  | 1. Standard 7 Day Workweek |  |  |  | ЭЛЕКч |  | 1 |
| 293 |  | Автоматическая пожарная сигнализация и оповещение людей о пожаре | 117.8d | 2014-05-08 A | 2014-09-02 A |  | 100% |  |  |  |  |  | finish on or after 2014-05-31 | 1. Standard 7 Day Workweek | 1.38 | 1.28 | 8 | ЭЛЕКч | ЭМР | 1 |
| 257 |  | Структурированные кабельные системы | 182d | 2014-06-01 A | 2014-11-29 A |  | 100% |  |  |  |  |  | start on or after 2014-06-01 | 1. Standard 7 Day Workweek | 1.93 | 1.1 | 8 | ЭЛЕКч | ЭМР | 1 |
| 292 |  | Подключение вентиляционного оборудования складского помещения и бытовых помещений | 115d | 2014-06-01 A | 2014-09-23 A | 291 FF | 100% |  |  |  |  |  | finish on or after 2014-05-31 | 1. Standard 7 Day Workweek | 2.68 | 2.68 | 8 | ВентС | ТМР | 1 |
| 295 |  | Пусконаладочные работы - 6,01% | 68d | 2015-01-22 A | 2015-03-30 A | 294 FF | 100% |  |  |  |  |  | start on or after 2014-05-01 | 1. Standard 7 Day Workweek | 0.32 |  | 8 |  | СМР | 1 |
| A7570 |  | Лит. Б2. Сети электроснабжения. Пусконаладочные работы | 68d | 2015-01-22 A | 2015-03-30 A |  | 100% |  |  |  |  |  |  | 1. Standard 7 Day Workweek | 0.07 |  |  | ЭЛЕКч |  | 1 |
|  | 10.2.2.4 | **4. Навес для хранения оборудования** |  | 2015-07-08 | 2016-09-23 |  |  |  |  |  |  |  |  |  |  |  |  |  |  |  |
| 297 |  | Общестроительные работы | 352d | 2015-07-08 A | 2016-09-23 |  | 67% | 115d | 2015-07-08 | 2016-06-23 | 1485d | 1486d | start on or after 2016-06-06 | 1. Standard 7 Day Workweek | 11.86 | 0.57 | 8 | ПР | СМР | 1 |
| 298 |  | Электроосвещение | 202.5d | 2015-09-10 A | 2016-06-30 | 297 SS+60d | 85% | 29.5d | 2015-09-10 | 2016-03-30 | 1570.5d | 1571.5d |  | 1. Standard 7 Day Workweek | 1.45 |  | 8 | ЭЛЕКч | ЭМР | 1 |
| A7580 |  | Конструкции металлические | 99.1d | 2016-02-02 A | 2016-06-30 | 297 FS-60d | 70% | 29.73d | 2016-02-02 | 2016-05-11 | 1570.27d | 1571.27d |  | 1. Standard 7 Day Workweek | 17.41 |  |  | ПР |  | 1 |

| ID | WBS | Activity | Duration | Start | Finish | Predecessors | Complete | Remaining | Planned start | Planned finish | Total float | Free float | Constraint | Calendar | Cost | Actual cost | 03 - Часть проекта | ОКСГ | 01 - Глава ССР | 05 - Вид работ |
| --- | --- | --- | --- | --- | --- | --- | --- | --- | --- | --- | --- | --- | --- | --- | --- | --- | --- | --- | --- | --- |
|  | 10.2.3 | **АБК Кирпичного завода** |  | 2014-02-01 | 2017-01-22 |  |  |  |  |  |  |  |  |  |  |  |  |  |  |  |
| A7630 |  | Устройство металлоконструкций под оборудование ОВК | 215d | 2014-02-01 A | 2014-09-01 A |  | 100% |  |  |  |  |  |  | 1. Standard 7 Day Workweek | 1.1 |  | ПР | 1 |  |  |
| A7640 |  | Общестроительные работы | 215d | 2014-02-01 A | 2014-09-01 A |  | 100% |  |  |  |  |  |  | 1. Standard 7 Day Workweek | 19.78 |  | ПР | 1 |  |  |
| A7670 |  | Отделка помещений | 134d | 2014-02-01 A | 2014-06-12 A |  | 100% |  |  |  |  |  |  | 1. Standard 7 Day Workweek | 57.24 |  | ПР | 1 |  |  |
| A7710 |  | Благоустройство территории | 604d | 2014-02-01 A | 2015-09-25 A |  | 100% |  |  |  |  |  |  | 1. Standard 7 Day Workweek | 59.23 |  | ПР | 1 |  |  |
| A7730 |  | Общестроительные работы | 237d | 2014-02-01 A | 2014-09-23 A |  | 100% |  |  |  |  |  |  | 1. Standard 7 Day Workweek | 6.86 |  | ПР | 1 |  |  |
| A7770 |  | Общестроительные работы | 215d | 2014-02-01 A | 2014-09-01 A |  | 100% |  |  |  |  |  |  | 1. Standard 7 Day Workweek |  |  | ПР | 1 |  |  |
| A7820 |  | Отопление, кондиционирование и теплоснабжение | 184d | 2014-02-01 A | 2014-08-01 A |  | 100% |  |  |  |  |  |  | 1. Standard 7 Day Workweek | 10.81 |  | ВентС | 1 |  |  |
| A7760 |  | Общестроительные работы | 200d | 2014-02-04 A | 2014-08-20 A |  | 100% |  |  |  |  |  |  | 1. Standard 7 Day Workweek |  |  | ПР | 1 |  |  |
| A7650 |  | Устройство наружного тамбура | 137d | 2014-02-05 A | 2014-06-19 A |  | 100% |  |  |  |  |  |  | 1. Standard 7 Day Workweek | 2.62 |  | ПР | 1 |  |  |
| A7740 |  | Общестроительные работы | 227d | 2014-02-06 A | 2014-09-18 A |  | 100% |  |  |  |  |  |  | 1. Standard 7 Day Workweek | 27.81 |  | ПР | 1 |  |  |
| 301 |  | Наружные стены. Фасад | 218d | 2014-02-15 A | 2014-09-18 A | 300 SS+153d | 100% |  |  |  |  |  | finish on or after 2014-02-28 | 1. Standard 7 Day Workweek | 1.29 | 1.29 | ПР | 1 | 8 | СМР |
| 391 |  | Фасад | 218d | 2014-02-15 A | 2014-09-18 A |  | 100% |  |  |  |  |  |  | 1. Standard 7 Day Workweek | 42.75 |  | ПР | 1 |  |  |
| A7840 |  | Водопровод и канализацию | 278d | 2014-04-01 A | 2015-01-01 A |  | 100% |  |  |  |  |  |  | 1. Standard 7 Day Workweek | 5.94 |  | ТПНДвк | 1 |  |  |
| 300 |  | Приобретение оргтехники | 54d | 2014-05-07 A | 2014-06-29 A |  | 100% |  |  |  |  |  | start on or after 2014-04-29 | 1. Standard 7 Day Workweek | 4.27 |  | ПР | 1 | 8 | СМР |
| 308 |  | Автоматическая пожарная сигнализация и оповещение людей о пожаре | 211d | 2014-09-01 A | 2015-03-30 A |  | 100% |  |  |  |  |  | start on or after 2014-06-01 | 1. Standard 7 Day Workweek | 2.65 | 2.55 | ЭЛЕКч | 1 | 8 | ЭМР |
| 302 |  | Отопление, вентиляция и кондиционирование | 247d | 2014-09-01 A | 2015-05-05 A | 489 SF | 100% |  |  |  |  |  | start on or after 2014-05-15 | 1. Standard 7 Day Workweek | 24.43 | 24.43 | ВентС | 1 | 8 | ТМР |
| 304 |  | Технологическое оборудование | 211d | 2014-09-01 A | 2015-03-30 A | 303 FF | 100% |  |  |  |  |  | start on or after 2014-07-16 | 1. Standard 7 Day Workweek | 5.93 |  | ПР | 1 | 8 | ТМР |
| 306 |  | Электроосвещение | 211d | 2014-09-01 A | 2015-03-30 A |  | 100% |  |  |  |  |  | start on or after 2014-06-01 | 1. Standard 7 Day Workweek | 16.68 | 13.05 | ЭЛЕКч | 1 | 8 | ЭМР |
| A7610 |  | Общестроительные работы | 211d | 2014-09-01 A | 2015-03-30 A |  | 100% |  |  |  |  |  |  | 1. Standard 7 Day Workweek | 1.18 |  | ПР | 1 |  |  |
| A7620 |  | Общестроительные работы | 211d | 2014-09-01 A | 2015-03-30 A |  | 100% |  |  |  |  |  |  | 1. Standard 7 Day Workweek | 5.52 |  | ПР | 1 |  |  |
| A7700 |  | Отделка помещений | 182d | 2014-09-01 A | 2015-03-01 A |  | 100% |  |  |  |  |  |  | 1. Standard 7 Day Workweek | 18.2 |  | ПР | 1 |  |  |
| A7790 |  | Отопление, кондиционирование и теплоснабжение | 243d | 2014-09-01 A | 2015-05-01 A |  | 100% |  |  |  |  |  |  | 1. Standard 7 Day Workweek | 143.86 |  | ВентС | 1 |  |  |
| A7810 |  | Отопление и вентиляция (часть "Вентиляция") | 243d | 2014-09-01 A | 2015-05-01 A |  | 100% |  |  |  |  |  |  | 1. Standard 7 Day Workweek | 1.35 |  | ВентС | 1 |  |  |
| 303 |  | Водопровод и канализация | 113d | 2014-10-01 A | 2015-01-21 A | 302 FF, A7840 FF | 100% |  |  |  |  |  | finish on or after 2014-04-30 | 1. Standard 7 Day Workweek | 3.17 | 3.16 | ТПНДвк | 1 | 8 | ТМР |
| 765 |  | Наружное освещение | 149d | 2014-10-06 A | 2015-03-03 A |  | 100% |  |  |  |  |  |  | 1. Standard 7 Day Workweek | 0.19 | 0.19 | ЭЛЕКч | 1 |  |  |
| 489 |  | Система радиовещания и речевого оповещения | 126d | 2014-10-07 A | 2015-02-09 A | 308 | 100% |  |  |  |  |  | as late as possible | 1. Standard 7 Day Workweek | 1.45 | 0.47 | ЭЛЕКч | 1 | 8 | ЭМР |
| 307 |  | Локальная вычислительная сеть | 426d | 2014-11-01 A | 2015-12-31 A |  | 100% |  |  |  |  |  |  | 1. Standard 7 Day Workweek | 197.31 |  | ЭЛЕКч | 1 | 8 | ЭМР |
| A7660 |  | Приобретение мебели и оргтехники | 50d | 2014-12-25 A | 2015-02-12 A |  | 100% |  |  |  |  |  |  | 1. Standard 7 Day Workweek | 183.78 |  | ПР | 1 |  |  |
| A7930 |  | Силовое электрооборудование. | 78d | 2015-01-01 A | 2015-03-19 A |  | 100% |  |  |  |  |  |  | 1. Standard 7 Day Workweek | 110.23 |  | ЭЛЕКч | 1 |  |  |
| 341 |  | Силовое электрооборудование. | 77d | 2015-01-07 A | 2015-03-24 A |  | 100% |  |  |  |  |  |  | 1. Standard 7 Day Workweek | 1.79 | 1.12 | ЭЛЕКч | 1 |  |  |
| 309 |  | Силовое электрооборудование | 72d | 2015-01-12 A | 2015-03-24 A | 308 FF | 100% |  |  |  |  |  | finish on or after 2014-04-30 | 1. Standard 7 Day Workweek | 32.75 |  | ЭЛЕКч | 1 | 8 | ЭМР |
| 570 |  | Система телевизионного вещания | 47d | 2015-01-12 A | 2015-02-27 A | 480 FF | 100% |  |  |  |  |  |  | 1. Standard 7 Day Workweek | 0.48 | 0.16 | ЭЛЕКч | 1 | 8 | ЭМР |
| 305 |  | Сеть электроснабжения 0,4 кВ | 45d | 2015-02-01 A | 2015-03-17 A |  | 100% |  |  |  |  |  | start on or after 2014-07-01 | 1. Standard 7 Day Workweek | 4.99 |  | ЭЛЕКч | 1 | 8 | ЭМР |
| 480 |  | Система видеонаблюдения | 98d | 2015-02-01 A | 2015-05-09 A | 489 FF | 100% |  |  |  |  |  |  | 1. Standard 7 Day Workweek | 5.98 | 0.47 | ЭЛЕКч | 1 | 8 | ЭМР |
| A7680 |  | Отделка помещений | 62.5d | 2015-02-01 A | 2015-04-04 A |  | 100% |  |  |  |  |  |  | 1. Standard 7 Day Workweek | 4.8 |  | ПР | 1 |  |  |
| A7850 |  | Сеть электроснабжения 0,4 кВ | 54d | 2015-02-01 A | 2015-03-26 A |  | 100% |  |  |  |  |  |  | 1. Standard 7 Day Workweek |  |  | ЭЛЕКч | 1 |  |  |
| A7860 |  | Сеть электроснабжения 0,4 кВ | 54d | 2015-02-01 A | 2015-03-26 A |  | 100% |  |  |  |  |  |  | 1. Standard 7 Day Workweek | 1.52 |  | ЭЛЕКч | 1 |  |  |
| A7880 |  | Электроосвещение | 55d | 2015-02-01 A | 2015-03-27 A |  | 100% |  |  |  |  |  |  | 1. Standard 7 Day Workweek | 2.48 |  | ЭЛЕКч | 1 |  |  |
| A7950 |  | Сети связи | 54d | 2015-02-01 A | 2015-03-26 A |  | 100% |  |  |  |  |  |  | 1. Standard 7 Day Workweek | 12.81 |  | ЭЛЕКч | 1 |  |  |
| A8000 |  | Наружное электроосвещение | 55d | 2015-02-01 A | 2015-03-27 A |  | 100% |  |  |  |  |  |  | 1. Standard 7 Day Workweek | 4.94 |  | ЭЛЕКч | 1 |  |  |
| A7900 |  | Локальная вычислительная сеть | 331d | 2015-02-04 A | 2015-12-31 A |  | 100% |  |  |  |  |  |  | 1. Standard 7 Day Workweek |  |  | ЭЛЕКч | 1 |  |  |
| A7920 |  | Автоматизация ИТП с узлом учета тепла | 46d | 2015-02-10 A | 2015-03-27 A |  | 100% |  |  |  |  |  |  | 1. Standard 7 Day Workweek | 5.41 |  | ЭЛЕКч | 1 |  |  |
| 495 |  | Наружные сети 10кВ электроснабжения. | 273.78d | 2015-06-03 A | 2016-06-02 | 305 SS | 99% | 1.78d | 2015-06-03 | 2016-03-02 | 1598.22d | 1599.22d | start on or after 2015-06-03 | 1. Standard 7 Day Workweek | 29.82 |  | ЭЛЕКч | 1 |  |  |

| ID | WBS | Activity | Duration | Start | Finish | Predecessors | Complete | Remaining | Planned start | Planned finish | Total float | Free float | Constraint | Calendar | Cost | 03 - Часть проекта | ОКСГ | 01 - Глава ССР | 05 - Вид работ |
| --- | --- | --- | --- | --- | --- | --- | --- | --- | --- | --- | --- | --- | --- | --- | --- | --- | --- | --- | --- |
|  | 1 | **Буфет** |  | 2016-01-01 | 2017-01-22 |  |  |  |  |  |  |  |  |  |  |  |  |  |  |
| 745 |  | Общестроительные работы. Буфет | 211.2d | 2016-01-01 A | 2016-09-23 |  | 46% | 114.05d | 2016-01-01 | 2016-07-30 | 1465.95d | 0d | start on or after 2015-09-06 | 1. Standard 7 Day Workweek | 44.61 | ПР | 1 |  |  |
| 755 |  | Водопровод и канализация. Буфет | 180d | 2016-05-20 A | 2016-11-18 | 745 FS-90d | 5% | 171d | 2016-06-27 | 2016-12-24 | 1364d | 0d |  | 1. Standard 7 Day Workweek | 1.52 | ТПНДвк | 1 |  |  |
| A7970 |  | Буфет. Наружные сети канализации | 130d | 2016-05-20 A | 2016-09-16 | A7690 FS-50d | 17% | 107.9d | 2016-09-10 | 2017-01-18 | 1458.1d | 0d | start on or after 2016-02-09 | 1. Standard 7 Day Workweek | 0.28 | ТПНДвк | 1 |  |  |
| A8020 |  | Буфет. Электроснабжение | 123d | 2016-07-28 | 2016-09-26 | A7970 FS-50d |  |  | 2016-07-28 | 2016-11-28 | 1458.1d | 0d | start on or after 2016-03-23 | 1. Standard 7 Day Workweek | 1.74 | ЭЛЕКч | 1 |  |  |
| A7800 |  | Вентиляция, отопление и кондиционирование | 103d | 2016-08-04 | 2016-10-03 | 745 FS-50d |  |  | 2016-08-04 | 2016-11-15 | 1475.95d | 1476.95d |  | 1. Standard 7 Day Workweek | 14.77 | ВентС | 1 |  |  |
| A7980 |  | Система отопления гаража | 150d | 2016-08-04 | 2016-10-13 | 745 FS-50d |  |  | 2016-08-04 | 2017-01-01 | 1465.95d | 1466.95d |  | 1. Standard 7 Day Workweek | 1.73 | ВентС | 1 |  |  |
| SMR-8.12.4.8.9 |  | Отопление и вентиляция. Архитектурно-строительные решения | 0d | 2016-08-04 | 2016-10-13 | 745 FS-50d |  |  | 2016-08-04 | 2016-08-04 | 1465.95d | 1466.95d |  | 1. Standard 7 Day Workweek |  | ПР | 1 |  |  |
| A10350 |  | Технологическое оборудование. Буфет | 90d | 2016-08-07 | 2016-09-06 | A8020 FS-50d |  |  | 2016-08-07 | 2016-11-05 | 1458.1d | 0d |  | 1. Standard 7 Day Workweek |  | ПР | 1 |  |  |
| 310 |  | Пусконаладочные работы - 6,01% | 60.42d | 2016-09-06 | 2016-10-06 | A10350 |  |  | 2016-09-06 | 2016-11-06 | 1472.1d | 1473.1d | start on or after 2014-03-01 | 1. Standard 7 Day Workweek |  |  | 1 | 8 | _ПНР |
| A8030 |  | Пожарная сигнализация.Буфет | 44d | 2016-09-06 | 2016-10-20 | A10350 |  |  |  |  | 1458.1d | 1459.1d | start on or after 2016-05-03 | 1. Standard 7 Day Workweek | 0.57 | ЭЛЕКч | 1 |  |  |
| 775 |  | Электромонтажные работы. Буфет | 180d | 2016-10-05 | 2016-12-03 | 755 FS-45d |  |  | 2016-10-05 | 2017-04-02 | 1364d | 0d |  | 1. Standard 7 Day Workweek | 2.49 | ЭЛЕКч | 1 |  |  |
| A7690 |  | Переоборудование помещения гаража | 122d | 2016-12-04 | 2017-01-22 | 775 |  |  | 2016-12-04 | 2017-04-04 | 1364d | 1365d | start on or after 2016-02-16 | 1. Standard 7 Day Workweek | 3.53 | ПР | 1 |  |  |
|  | 2 | **АБК Кирпичного завода (вторая часть здания)** |  | 2016-09-01 | 2017-05-15 |  |  |  |  |  |  |  |  |  |  |  |  |  |  |
| SMR-8.12.4.10.1 |  | Архитектурно-строительные решения | 90d | 2016-09-01 | 2016-11-29 |  |  |  |  |  | 1251d | 0d | start on or after 2016-09-01 | 1. Standard 7 Day Workweek | 32.1 | ПР | 1 |  |  |
| SMR-8.12.4.10.11 |  | Отопление, вентиляция и централизованное кондиционирование. Архитектурно-строительные решения. | 0d | 2016-11-30 | 2017-01-13 | SMR-8.12.4.10.1 |  |  | 2016-11-30 | 2016-11-30 | 1251d | 0d |  | 1. Standard 7 Day Workweek |  | ПР | 1 |  |  |
| SMR-8.12.4.10.3 |  | Водоснабжение и канализация | 45d | 2016-11-30 | 2017-01-13 | SMR-8.12.4.10.1 |  |  |  |  | 1251d | 0d |  | 1. Standard 7 Day Workweek | 0.98 | ТПНДвк | 1 |  |  |
| SMR-8.12.4.10.2 |  | Отопление и вентиляция (ОВ) | 30d | 2017-01-14 | 2017-02-12 | SMR-8.12.4.10.3, SMR-8.12.4.10.11 |  |  |  |  | 1251d | 0d |  | 1. Standard 7 Day Workweek |  | ВентС | 1 |  |  |
| SMR-8.12.4.10.4 |  | Электроосвещение (ЭО) | 30d | 2017-02-13 | 2017-03-14 | SMR-8.12.4.10.2 |  |  |  |  | 1251d | 0d |  | 1. Standard 7 Day Workweek | 3.9 | ЭЛЕКч | 1 |  |  |
| SMR-8.12.4.10.5 |  | Пожарная сигнализация | 30d | 2017-03-15 | 2017-05-15 | SMR-8.12.4.10.4 |  |  | 2017-03-15 | 2017-04-13 | 1251d | 1252d |  | 1. Standard 7 Day Workweek | 0.63 | ЭЛЕКч | 1 |  |  |
| SMR-8.12.4.10.7 |  | АБК кирпичного завода - 2-ой этап. Сети связи | 0d | 2017-03-15 | 2017-05-03 | SMR-8.12.4.10.4 |  |  | 2017-03-15 | 2017-03-15 | 1263d | 1264d |  | 1. Standard 7 Day Workweek |  | ЭЛЕКч | 1 |  |  |
|  | 10.2.4 | **База Гидромеханизации** |  | 2015-05-25 | 2016-12-22 |  |  |  |  |  |  |  |  |  |  |  |  |  |  |
| 312 |  | Архитектурно-строительные работы | 372d | 2015-05-25 A | 2016-12-22 |  | 45% | 204.6d | 2015-05-25 | 2016-05-30 | 1395.4d | 1396.4d |  | 1. Standard 7 Day Workweek | 45.43 | ПР | 1 | 8 | СМР |
| A10440 |  | Теплоснабжение (трубопроводы) | 68.8d | 2016-01-01 A | 2016-06-09 |  | 87% | 8.8d | 2016-01-01 | 2016-03-09 | 1591.2d | 1592.2d |  | 1. Standard 7 Day Workweek | 0.48 | ТПНДвк | 1 |  |  |
| A8050 |  | Открытая площадка складирования с козловым краном грузоподъемностью 50 т. Архитектурно-строительные решения | 156.8d | 2016-01-01 A | 2016-09-28 |  | 24% | 119.17d | 2016-01-01 | 2016-06-05 | 1480.83d | 1481.83d | start on or after 2016-04-01 | 1. Standard 7 Day Workweek | 72.79 | ПР | 1 |  |  |
| A8110 |  | Наружные сети водопровода и канализации | 60d | 2016-02-01 A | 2016-06-30 | 316 SS, 312 SS | 50% | 30d | 2016-04-01 | 2016-05-30 | 1570d | 1571d |  | 1. Standard 7 Day Workweek |  | ТПНДвк | 1 |  |  |
| A8130 |  | Наружное освещение | 36.5d | 2016-02-01 A | 2016-04-08 A | 317 SS, A8090 | 100% |  | 2016-02-01 | 2016-03-08 |  |  |  | 1. Standard 7 Day Workweek |  | ЭЛЕКч | 1 |  |  |
| 313 |  | Теплоснабжение (строительная часть) | 34d | 2016-02-02 A | 2016-06-06 | 312 | 82% | 6d | 2016-02-02 | 2016-03-06 | 1564d | 0d | finish on or after 2014-09-30 | 1. Standard 7 Day Workweek | 0.26 | ВентС | 1 | 8 | СМР |
| A8070 |  | Отопление и вентиляция (строительная часть) | 79.8d | 2016-02-03 A | 2016-07-21 | 315 SS, 312 | 37% | 50.27d | 2016-02-03 | 2016-04-22 | 1549.72d | 1550.72d |  | 1. Standard 7 Day Workweek | 2.49 | ВентС | 1 |  |  |
| 315 |  | Отопление и вентиляция | 60d | 2016-04-01 A | 2016-07-10 |  | 34% | 39.6d | 2016-04-01 | 2016-05-30 | 1550d | 1561.4d | finish on or after 2014-11-30 | 1. Standard 7 Day Workweek | 6.05 | ТПНДвк | 1 | 8 | ТМР |
| 316 |  | Водопровод и канализация | 60.42d | 2016-04-01 A | 2016-07-20 |  | 18% | 49.54d | 2016-04-01 | 2016-05-31 | 1550.46d | 1551.46d | start on or after 2014-11-01 | 1. Standard 7 Day Workweek | 1.67 | ТПНДвк | 1 | 8 | ТМР |
| A10380 |  | Электроосвещение | 30d | 2016-05-03 A | 2016-06-02 | 312 | 95% | 1.5d | 2016-05-03 | 2016-06-01 | 1598.5d | 1599.5d | start on or after 2016-05-03 | 1. Standard 7 Day Workweek | 2.91 | ЭЛЕКч | 1 |  |  |
| A10450 |  | Открытая площадка складирования с козловым краном грузоподъемностью 50 тн. Питающая сеть 0,4 кВ. | 10d | 2016-05-09 A | 2016-06-01 | A8050 | 95% | 0.5d | 2016-09-09 | 2016-09-19 | 1599.5d | 1600.5d |  | 1. Standard 7 Day Workweek | 6.03 | ПР | 1 |  |  |
| A10420 |  | Пожарная сигнализация. | 20d | 2016-05-10 A | 2016-06-12 | 312 | 40% | 12d | 2016-12-10 | 2016-12-30 | 1588d | 1589d |  | 1. Standard 7 Day Workweek |  | ЭЛЕКч | 1 |  |  |
| 317 |  | Электроосвещение | 50d | 2016-06-01 | 2016-07-20 | 315 SS |  |  |  |  | 1550d | 1551d | start on or after 2014-11-01 | 1. Standard 7 Day Workweek | 16.88 | ЭЛЕКч | 1 | 8 | ЭМР |
| 318 |  | Силовое электрооборудование | 70d | 2016-06-01 | 2016-08-09 | 321 SS |  |  |  |  | 1530d | 1531d | start on or after 2014-11-01 | 1. Standard 7 Day Workweek | 1.79 | ЭЛЕКч | 1 | 8 | ЭМР |
| 319 |  | Автоматическая пожарная сигнализация и оповещение людей о пожаре | 29.42d | 2016-06-01 | 2016-06-30 |  |  |  |  |  | 1570.58d | 1571.58d | start on or after 2014-12-01 | 1. Standard 7 Day Workweek | 1.02 | ЭЛЕКч | 1 | 8 | ЭМР |
| 321 |  | Электротехническая часть | 130d | 2016-06-01 | 2016-10-08 |  |  |  |  |  | 1470d | 0d | finish on or after 2014-11-30 | 1. Standard 7 Day Workweek | 11.38 | ЭЛЕКч | 1 | 8 | ЭМР |
| A10430 |  | Сети электроснабжения 0,4 кВ | 40d | 2016-06-01 | 2016-07-10 |  |  |  |  |  | 1530d | 0d |  | 1. Standard 7 Day Workweek |  | ЭЛЕКч | 1 |  |  |
| A10470 |  | Технологическое оборудование | 30d | 2016-06-01 | 2016-06-30 |  |  |  |  |  | 1570d | 1571d |  | 1. Standard 7 Day Workweek |  | ПР | 1 |  |  |
| A10490 |  | Технологическое оборудование | 30d | 2016-06-01 | 2016-06-30 |  |  |  |  |  | 1570d | 1571d |  | 1. Standard 7 Day Workweek |  | ПР | 1 |  |  |
| A8090 |  | Наружное освещение. Архитектурно-строительные решения. | 50d | 2016-06-01 | 2016-07-20 |  |  |  |  |  | 1550d | 1551d |  | 1. Standard 7 Day Workweek | 1.46 | ЭЛЕКч | 1 |  |  |
| SMR-8.14.1.15 |  | Электроснабжение внешнее | 0d | 2016-06-01 | 2016-07-30 |  |  |  | 2016-06-01 | 2016-06-01 | 1540d | 1541d |  | 1. Standard 7 Day Workweek | 13.07 | ЭЛЕКч | 1 |  |  |
| A10390 |  | Водоснабжение и канализацию | 30d | 2016-06-07 | 2016-07-06 | 313 |  |  |  |  | 1564d | 1565d |  | 1. Standard 7 Day Workweek | 1.09 | ТПНДвк | 1 |  |  |
| A10410 |  | СИЛОВОЕ ЭЛЕКТРООБОРУДОВАНИЕ | 30d | 2016-07-11 | 2016-08-09 | A10430 |  |  |  |  | 1530d | 1531d |  | 1. Standard 7 Day Workweek |  | ЭЛЕКч | 1 |  |  |

| ID | WBS | Activity | Type | Duration | Start | Finish | Predecessors | Complete | Total float | Free float | Constraint | Calendar | Cost | Actual cost | 01 - Глава ССР | 03 - Часть проекта | 05 - Вид работ | ОКСГ |
| --- | --- | --- | --- | --- | --- | --- | --- | --- | --- | --- | --- | --- | --- | --- | --- | --- | --- | --- |
|  | 1 | **Поставка оборудования** |  |  |  |  |  |  |  |  |  |  |  |  |  |  |  |  |
|  | 10.2.5 | **КРП-2** |  |  | 2016-12-20 | 2017-08-16 |  |  |  |  |  |  |  |  |  |  |  |  |
| 323 |  | КРП-2 | WBS summary | 240d | 2016-12-20 | 2017-08-16 |  |  | 1158d | 1159d |  | 1. Standard 7 Day Workweek |  |  | 8 | ПР | СМР | 1 |
| SMR-8.15.3 |  | Архитектурно-строительные решения (АС) |  | 110d | 2016-12-20 | 2017-04-08 |  |  | 1158d | 0d | start on or after 2016-12-20 | 1. Standard 7 Day Workweek |  |  |  | ПР |  | 1 |
| SMR-8.15.2 |  | Технологические решения (ТХ) |  | 30d | 2017-04-09 | 2017-05-08 | SMR-8.15.3 |  | 1158d | 0d |  | 1. Standard 7 Day Workweek |  |  | 8 | ПР | СМР | 1 |
| SMR-8.15.4 |  | Электроосвещение (ЭО) |  | 80d | 2017-05-09 | 2017-07-27 | SMR-8.15.2 |  | 1158d | 0d |  | 1. Standard 7 Day Workweek |  |  |  | ЭЛЕКч |  | 1 |
| SMR-8.15.5 |  | Силовое электрооборудование (ЭМ) |  | 50d | 2017-05-09 | 2017-06-27 | SMR-8.15.4 SS |  | 1158d | 0d |  | 1. Standard 7 Day Workweek |  |  |  | ЭЛЕКч |  | 1 |
| A10460 |  | Наружные сети 10 кВ электроснабжения |  | 50d | 2017-06-28 | 2017-08-16 | SMR-8.15.5 |  | 1158d | 1159d |  | 1. Standard 7 Day Workweek | 2.09 |  |  | ЭЛЕКч |  | 1 |
|  | 1 | **Поставка оборудования** |  |  |  |  |  |  |  |  |  |  |  |  |  |  |  |  |
|  | 10.2.6 | **Открытая площадка складирования материалов, конструкций с 2-мя козловыми кранами г/п 100 т** |  |  | 2014-03-28 | 2015-09-20 |  |  |  |  |  |  |  |  |  |  |  |  |
| 338 |  | Заземление |  | 163d | 2014-03-28 A | 2014-09-04 A |  | 100% |  |  |  | 1. Standard 7 Day Workweek |  |  | 8 | ЭЛЕКч | ЭМР | 1 |
| A10480 |  | Общестроительные работы |  | 30d | 2014-05-01 A | 2014-05-30 A |  | 100% |  |  |  | 1. Standard 7 Day Workweek |  |  |  | ПР |  | 1 |
| A10500 |  | Общестроительные работы |  | 30d | 2014-05-01 A | 2014-05-30 A |  | 100% |  |  |  | 1. Standard 7 Day Workweek | 0.32 |  |  | ПР |  | 1 |
| A8160 |  | Общестроительные работы |  | 277d | 2014-05-01 A | 2015-02-01 A |  | 100% |  |  |  | 1. Standard 7 Day Workweek | 13.58 |  |  | ПР |  | 1 |
| 336 |  | Общестроительные работы |  | 309d | 2014-05-13 A | 2015-03-17 A |  | 100% |  |  | start on or after 2014-06-01 | 1. Standard 7 Day Workweek | 18.38 | 14.37 | 8 | ПР | СМР | 1 |
| A8150 |  | Общестроительные работы |  | 305d | 2014-05-13 A | 2015-03-13 A |  | 100% |  |  |  | 1. Standard 7 Day Workweek | 143.41 |  |  | ПР |  | 1 |
| 339 |  | Технологическое оборудование |  | 224d | 2014-08-19 A | 2015-03-30 A | 336 FS-75d | 100% |  |  |  | 1. Standard 7 Day Workweek | 813.07 |  | 8 | ПР | ТМР | 1 |
| 390 |  | Подъездные дороги |  | 322d | 2014-11-03 A | 2015-09-20 A |  | 100% |  |  |  | 1. Standard 7 Day Workweek |  |  |  | ПР |  | 1 |
| 340 |  | Пусконаладочные работы - 6.01% |  | 25d | 2015-05-01 A | 2015-05-25 A |  | 100% |  |  |  | 1. Standard 7 Day Workweek | 1.41 |  | 8 |  | _ПНР | 1 |
|  | 10.2.7 | **Железнодорожная эстакада** |  |  | 2014-04-01 | 2017-02-05 |  |  |  |  |  |  |  |  |  |  |  |  |
| 342 |  | Конструкции металлические железнодорожной эстакады для разгрузки щебня от ПК1+50 до ПК4 |  | 188d | 2014-04-01 A | 2014-10-03 A |  | 100% |  |  | start on or after 2014-05-01 | 1. Standard 7 Day Workweek | 2.28 | 80.88 | 8 | ПР | РВР | 1 |
| 352 |  | Конструкции железобетонные |  | 215d | 2014-04-01 A | 2014-10-30 A |  | 100% |  |  | start on or after 2014-05-01 | 1. Standard 7 Day Workweek | 27.9 | 27.9 | 8 | ПР | СМР | 1 |
| 362 |  | Благоустройство территории в районе ж/д эстакады |  | 250d | 2016-06-01 | 2017-02-05 |  |  | 1350d | 0d | start on or after 2015-07-01 | 1. Standard 7 Day Workweek | 67.51 |  |  | ПР |  | 1 |
| 392 |  | Питающая сеть 0,4 кВ |  | 180d | 2016-06-01 | 2016-11-27 | 362 SS |  | 1360d | 0d |  | 1. Standard 7 Day Workweek | 5.42 |  |  | ЭЛЕКч |  | 1 |
| A8200 |  | Конструкции металлические железнодорожной эстакады для разгрузки щебня от ПК1+50 до ПК4 |  | 120d | 2016-06-01 | 2016-09-28 |  |  | 1390d | 0d |  | 1. Standard 7 Day Workweek | 106.45 |  |  | ПР |  | 1 |
| A8240 |  | Реконструкция существующей автодороги в районе ж/д эстакады с устройством разворотной площадки (500 п.м; 1700 м2) |  | 90d | 2016-09-29 | 2016-12-27 | A8200 |  | 1390d | 1391d |  | 1. Standard 7 Day Workweek |  |  |  | ПР |  | 1 |
| SMR-8.17.1.4 |  | Устройство отрезка автодороги, соединяющего реконтсруированные автодороги в районе КРП и Ж/Д эстакады (АД.2) |  | 90d | 2016-09-29 | 2016-12-27 | A8200 |  | 1390d | 1391d |  | 1. Standard 7 Day Workweek | 28.47 |  |  | ПР |  | 1 |
| SMR-8.17.1.5 |  | Реконструкция существующей автодороги в районе КРП (АД.3) |  | 90d | 2016-09-29 | 2016-12-27 | A8200 |  | 1390d | 1391d |  | 1. Standard 7 Day Workweek | 51.44 |  |  | ПР |  | 1 |
| A8190 |  | Электроснабжение первоочередных работ. ЛЭП-10 кВ от ПС110/10 кВ |  | 60d | 2016-11-28 | 2017-01-26 | 392 |  | 1360d | 0d |  | 1. Standard 7 Day Workweek |  |  |  | ЭЛЕКч |  | 1 |
| A8220 |  | Наружное освещение. Архитектурно-строительные решения. (Фундаменты под установку матч освещения) |  | 60d | 2016-11-28 | 2017-01-26 | A8190 SS |  | 1360d | 0d |  | 1. Standard 7 Day Workweek | 0.83 |  |  | ЭЛЕКч |  | 1 |
| SMR-8.19.2 |  | Наружное освещение (ЭН) |  | 40d | 2016-11-28 | 2017-01-06 | A8220 SS |  | 1380d | 1381d |  | 1. Standard 7 Day Workweek | 11.17 |  |  | ЭЛЕКч |  | 1 |

| ID | WBS | Activity | Duration | Start | Finish | Predecessors | Complete | Planned start | Planned finish | Total float | Free float | Constraint | Calendar | Cost | Actual cost | 03 - Часть проекта | ОКСГ | 01 - Глава ССР | 05 - Вид работ |
| --- | --- | --- | --- | --- | --- | --- | --- | --- | --- | --- | --- | --- | --- | --- | --- | --- | --- | --- | --- |
|  | 1 | **Ограждение промплощадки** |  | 2014-04-01 | 2017-07-12 |  |  |  |  |  |  |  |  |  |  |  |  |  |  |
| A8280 |  | Временное ограждение промплощадки, Дополнительная выгородка. | 309d | 2014-04-01 A | 2015-02-01 A |  | 100% |  |  |  |  |  | 1. Standard 7 Day Workweek | 0.22 |  | ПР | 1 |  |  |
| 296 |  | Временное ограждение промплощадки | 315d | 2014-04-10 A | 2015-02-18 A |  | 100% |  |  |  |  | start on or after 2014-04-10 | 1. Standard 7 Day Workweek | 106.31 | 106.03 | ПР | 1 | 8 | СМР |
| A8260 |  | Временное ограждение промлощадки (дополнительно к смете № А-119000 пм изм.3 (KUR-CCA1456, 08-18-0057C-И1)) | 315d | 2014-04-10 A | 2015-02-18 A |  | 100% |  |  |  |  |  | 1. Standard 7 Day Workweek | 13.63 |  | ПР | 1 |  |  |
| A8270 |  | Временное ограждение промплощадки, Дополнительная выгородка. | 307d | 2014-04-10 A | 2015-02-10 A |  | 100% |  |  |  |  |  | 1. Standard 7 Day Workweek | 28.27 |  | ПР | 1 |  |  |
| 246 |  | Наружное ограждение промплощадки | 100d | 2016-10-31 | 2017-02-07 |  |  |  |  | 1193d | 0d | start on or after 2016-10-31 | 1. Standard 7 Day Workweek | 81.19 |  | ПР | 1 | 8 | СМР |
| SMR-8.18.1 |  | Наружное ограждение промплощадки | 0d | 2016-10-31 | 2017-02-07 | 246 SS |  | 2016-10-31 | 2016-10-31 | 1348d | 1349d |  | 1. Standard 7 Day Workweek |  |  | ПР | 1 |  |  |
| SMR-8.18.1.2 |  | Наружное ограждение площадки стройбазы. Разделительная перемычка | 0d | 2016-10-31 | 2017-01-28 | 246 SS |  | 2016-10-31 | 2016-10-31 | 1358d | 1359d |  | 1. Standard 7 Day Workweek |  |  | ПР | 1 |  |  |
|  | 1 | **КПП-6(о/п)** |  | 2017-02-28 | 2017-06-02 |  |  |  |  |  |  |  |  |  |  |  |  |  |  |
| SMR-8.18.1.1.7 |  | Архитектурно-строительные решения | 0d | 2017-02-28 | 2017-04-13 | 246 FS+20d |  | 2017-02-28 | 2017-02-28 | 1233d | 0d |  | 1. Standard 7 Day Workweek | 14.21 |  | ПР | 1 |  |  |
| SMR-8.18.1.1.18 |  | Водоснабжение и канализация | 0d | 2017-04-14 | 2017-05-13 | SMR-8.18.1.1.9 SS |  | 2017-04-14 | 2017-04-14 | 1233d | 0d |  | 1. Standard 7 Day Workweek | 0.41 |  | ВентС | 1 |  |  |
| SMR-8.18.1.1.9 |  | Контрольно-пропускной пункт №6. Рабочая документация. Отопление, вениляция, кондиционирование | 0d | 2017-04-14 | 2017-05-13 | SMR-8.18.1.1.7 |  | 2017-04-14 | 2017-04-14 | 1233d | 0d |  | 1. Standard 7 Day Workweek | 0.49 |  | ПР | 1 |  |  |
| SMR-8.18.1.1.12 |  | Силовое электрооборудование | 0d | 2017-05-14 | 2017-06-02 | SMR-8.18.1.1.13 SS |  | 2017-05-14 | 2017-05-14 | 1233d | 1234d |  | 1. Standard 7 Day Workweek | 0.64 |  | ЭЛЕКч | 1 |  |  |
| SMR-8.18.1.1.13 |  | Технология производства | 0d | 2017-05-14 | 2017-06-02 | SMR-8.18.1.1.16 SS |  | 2017-05-14 | 2017-05-14 | 1233d | 0d |  | 1. Standard 7 Day Workweek | 0.74 |  | ПР | 1 |  |  |
| SMR-8.18.1.1.16 |  | Пожарная сигнализация | 0d | 2017-05-14 | 2017-05-28 | SMR-8.18.1.1.18 |  | 2017-05-14 | 2017-05-14 | 1233d | 0d |  | 1. Standard 7 Day Workweek | 0.62 |  | ЭЛЕКч | 1 |  |  |
| SMR-8.18.1.1.19 |  | Сети связи | 0d | 2017-05-14 | 2017-05-28 | SMR-8.18.1.1.16 SS |  | 2017-05-14 | 2017-05-14 | 1238d | 1239d |  | 1. Standard 7 Day Workweek |  |  | ЭЛЕКч | 1 |  |  |
|  | 2 | **КПП-9(о/п)** |  | 2017-04-09 | 2017-07-12 |  |  |  |  |  |  |  |  |  |  |  |  |  |  |
| SMR-8.18.1.1.6 |  | Архитектурно-строительные решения | 0d | 2017-04-09 | 2017-05-23 | 246 FS+60d |  | 2017-04-09 | 2017-04-09 | 1193d | 0d | start on or after 2017-01-29 | 1. Standard 7 Day Workweek | 14.21 |  | ПР | 1 |  |  |
| SMR-8.18.1.1.17 |  | Водоснабжение и канализация | 0d | 2017-05-24 | 2017-06-22 | SMR-8.18.1.1.6 |  | 2017-05-24 | 2017-05-24 | 1193d | 0d |  | 1. Standard 7 Day Workweek | 0.41 |  | ТПНДвк | 1 |  |  |
| SMR-8.18.1.1.8 |  | Контрольно-пропускной пункт №9. Рабочая документация. Отопление, вениляция, кондиционирование | 0d | 2017-05-24 | 2017-06-22 | SMR-8.18.1.1.17 SS |  | 2017-05-24 | 2017-05-24 | 1193d | 0d |  | 1. Standard 7 Day Workweek | 0.49 |  | ПР | 1 |  |  |
| SMR-8.18.1.1.10 |  | Технология производства | 0d | 2017-06-23 | 2017-07-12 | SMR-8.18.1.1.15 SS |  | 2017-06-23 | 2017-06-23 | 1193d | 1194d |  | 1. Standard 7 Day Workweek | 0.74 |  | ПР | 1 |  |  |
| SMR-8.18.1.1.11 |  | Силовое электрооборудование | 0d | 2017-06-23 | 2017-07-12 | SMR-8.18.1.1.8 |  | 2017-06-23 | 2017-06-23 | 1193d | 0d |  | 1. Standard 7 Day Workweek | 0.64 |  | ЭЛЕКч | 1 |  |  |
| SMR-8.18.1.1.15 |  | Пожарная сигнализация | 0d | 2017-06-23 | 2017-07-07 | SMR-8.18.1.1.11 SS |  | 2017-06-23 | 2017-06-23 | 1193d | 0d |  | 1. Standard 7 Day Workweek | 0.62 |  | ЭЛЕКч | 1 |  |  |
| SMR-8.18.1.1.21 |  | Сети связи | 0d | 2017-06-23 | 2017-07-07 | SMR-8.18.1.1.15 SS |  | 2017-06-23 | 2017-06-23 | 1198d | 1199d |  | 1. Standard 7 Day Workweek |  |  | ЭЛЕКч | 1 |  |  |

| ID | WBS | Activity | Duration | Start | Finish | Predecessors | Complete | Remaining | Planned start | Planned finish | Total float | Free float | Constraint | Calendar | Cost | Actual cost | 03 - Часть проекта | ОКСГ | 01 - Глава ССР | 05 - Вид работ |
| --- | --- | --- | --- | --- | --- | --- | --- | --- | --- | --- | --- | --- | --- | --- | --- | --- | --- | --- | --- | --- |
|  | 3 | **КПП-8(о/п)** |  | 2017-02-08 | 2017-05-13 |  |  |  |  |  |  |  |  |  |  |  |  |  |  |  |
| SMR-8.18.1.1.1 |  | КПП Архитектурно-строительные решения (АС) | 60d | 2017-02-08 | 2017-03-24 | 246 |  |  | 2017-02-08 | 2017-04-08 | 1253d | 0d |  | 1. Standard 7 Day Workweek | 14.21 |  | ПР | 1 |  |  |
| SMR-8.18.1.1.2 |  | Контрольно-пропускной пункт №8. Рабочая документация. Отопление, вениляция, кондиционирование | 0d | 2017-03-25 | 2017-04-23 | SMR-8.18.1.1.1 |  |  | 2017-03-25 | 2017-03-25 | 1253d | 0d |  | 1. Standard 7 Day Workweek | 0.49 |  | ПР | 1 |  |  |
| SMR-8.18.1.1.3 |  | Водоснабжение и канализация | 0d | 2017-03-25 | 2017-04-23 | SMR-8.18.1.1.2 SS |  |  | 2017-03-25 | 2017-03-25 | 1273d | 1274d |  | 1. Standard 7 Day Workweek | 0.41 |  | ТПНДвк | 1 |  |  |
| SMR-8.18.1.1.14 |  | Пожарная сигнализация | 0d | 2017-04-24 | 2017-05-08 | SMR-8.18.1.1.4 SS |  |  | 2017-04-24 | 2017-04-24 | 1258d | 0d |  | 1. Standard 7 Day Workweek | 0.62 |  | ЭЛЕКч | 1 |  |  |
| SMR-8.18.1.1.20 |  | Сети связи | 0d | 2017-04-24 | 2017-05-08 | SMR-8.18.1.1.14 SS |  |  | 2017-04-24 | 2017-04-24 | 1258d | 1259d |  | 1. Standard 7 Day Workweek |  |  | ЭЛЕКч | 1 |  |  |
| SMR-8.18.1.1.4 |  | Силовое электрооборудование | 0d | 2017-04-24 | 2017-05-13 | SMR-8.18.1.1.5 SS |  |  | 2017-04-24 | 2017-04-24 | 1253d | 0d |  | 1. Standard 7 Day Workweek | 0.64 |  | ЭЛЕКч | 1 |  |  |
| SMR-8.18.1.1.5 |  | Технология производства | 30d | 2017-04-24 | 2017-05-13 | SMR-8.18.1.1.2 |  |  | 2017-04-24 | 2017-05-23 | 1253d | 0d |  | 1. Standard 7 Day Workweek | 0.74 |  | ПР | 1 |  |  |
|  | 10.3 | **8.3. Внеплощадочные сети и сооружения** |  | 2013-12-08 | 2018-01-09 |  |  |  |  |  |  |  |  |  |  |  |  |  |  |  |
|  | 10.3.1 | **Внеплощадочные сети электроснабжения(ВЛ-10кВ)** |  | 2013-12-08 | 2016-07-30 |  |  |  |  |  |  |  |  |  |  |  |  |  |  |  |
| 346 |  | Электроснабжение первоочередных работ. ЛЭП-10 кВ от ПС110/10 кВ | 319d | 2013-12-08 A | 2014-10-20 A |  | 100% |  |  |  |  |  |  | 1. Standard 7 Day Workweek | 3.78 | 2.09 | ЭЛЕКч | 1 | 8 | ЭМР |
| A10360 |  | Электроснабжение первоочередных работ. ЛЭП-10 кВ от ПС110/10 кВ | 166d | 2013-12-08 A | 2014-05-20 A |  | 100% |  |  |  |  |  |  | 1. Standard 7 Day Workweek | 171.09 |  | ЭЛЕКч | 1 |  |  |
| 386 |  | Наружное освещение. Архитектурно-строительные решения. (Фундаменты под установку матч освещения) | 0d | 2016-06-01 | 2016-07-30 |  |  |  | 2016-06-01 | 2016-06-01 | 1540d | 1541d |  | 1. Standard 7 Day Workweek | 0.83 |  | ЭЛЕКч | 1 |  |  |
| A8300 |  | ЛЭП-10 кВ от ПС 110/35/10 кВ. Пусконаладочные работы ВЛ3-10 кВ, КЛ-10 кВ | 30d | 2016-06-01 | 2016-06-30 |  |  |  |  |  | 1570d | 1571d |  | 1. Standard 7 Day Workweek | 0.46 |  | ЭЛЕКч | 1 |  |  |
|  | 10.3.2 | **Водозаборные сооружения и сооружения подготовки хозпитьевой воды с водоводами до стройбазы** |  | 2015-04-01 | 2018-01-09 |  |  |  |  |  |  |  |  |  |  |  |  |  |  |  |
|  | 1 | **Поставка оборудования** |  |  |  |  |  |  |  |  |  |  |  |  |  |  |  |  |  |  |
|  | 2 | **Пост охраны** |  | 2017-04-01 | 2017-10-12 |  |  |  |  |  |  |  |  |  |  |  |  |  |  |  |
| SMR-8.20.2.13.1 |  | Архитектурно-строительные решения | 120d | 2017-04-01 | 2017-07-29 |  |  |  |  |  | 1101d | 0d | start on or after 2017-04-01 | 1. Standard 7 Day Workweek | 5.74 |  | ПР | 1 |  |  |
| SMR-8.20.2.13.2 |  | Внутренние сети водопровода и канализации | 90d | 2017-05-31 | 2017-08-28 | SMR-8.20.2.13.1 FS-60d |  |  |  |  | 1101d | 0d |  | 1. Standard 7 Day Workweek |  |  | ТПНДвк | 1 |  |  |
| SMR-8.20.2.13.3 |  | Отопление и вентиляция | 45d | 2017-06-30 | 2017-08-13 | SMR-8.20.2.13.2 FS-60d |  |  |  |  | 1101d | 0d |  | 1. Standard 7 Day Workweek |  |  | ВентС | 1 |  |  |
| A8610 |  | Пост охраны. Электротехническая часть. | 35d | 2017-08-14 | 2017-09-17 | SMR-8.20.2.13.4 SS |  |  |  |  | 1126d | 1127d |  | 1. Standard 7 Day Workweek | 0.94 |  | ЭЛЕКч | 1 |  |  |
| SMR-8.20.2.13.4 |  | Электротехническая часть | 60d | 2017-08-14 | 2017-10-12 | SMR-8.20.2.13.3 |  |  |  |  | 1101d | 0d |  | 1. Standard 7 Day Workweek |  |  | ЭЛЕКч | 1 |  |  |
|  | 10.3.2.1 | **Строительная часть** |  | 2015-04-01 | 2017-12-14 |  |  |  |  |  |  |  |  |  |  |  |  |  |  |  |
| A8410 |  | Котлован | 468.8d | 2015-04-20 A | 2016-09-30 |  | 74% | 121.8d | 2015-04-20 | 2016-07-31 | 1156.2d | 0d |  | 1. Standard 7 Day Workweek | 1.81 |  | ПР | 1 |  |  |
| A8420 |  | Подготовительные работы, земляные работы | 337d | 2015-07-10 A | 2016-08-10 |  | 79% | 71d | 2015-07-10 | 2016-06-10 | 1529d | 1530d |  | 1. Standard 7 Day Workweek | 12.42 |  | ПР | 1 |  |  |
| A8460 |  | Ограждение и площадка под будку охранника | 62d | 2016-09-25 | 2016-11-26 | A8310 |  |  |  |  | 1421.48d | 1422.48d |  | 1. Standard 7 Day Workweek | 31.36 |  | ПР | 1 |  |  |
| 351 |  | Автодорога к комплексу водозаборных сооружений | 90d | 2017-07-23 | 2017-10-20 | 349 |  |  |  |  | 1093d | 1094d |  | 1. Standard 7 Day Workweek | 22.27 |  | ПР | 1 | 8 | СМР |

| ID | WBS | Activity | Duration | Start | Finish | Predecessors | Complete | Remaining | Planned start | Planned finish | Total float | Free float | Constraint | Calendar | Cost | 03 - Часть проекта | ОКСГ | 01 - Глава ССР | 05 - Вид работ |
| --- | --- | --- | --- | --- | --- | --- | --- | --- | --- | --- | --- | --- | --- | --- | --- | --- | --- | --- | --- |
|  | 1 | **Резервуар чистой воды** |  | 2015-04-20 | 2016-09-11 |  |  |  |  |  |  |  |  |  |  |  |  |  |  |
| A8320 |  | Резервуар чистой воды. Фундаментная часть. | 72d | 2015-04-20 A | 2015-06-30 A |  | 100% |  |  |  |  |  |  | 1. Standard 7 Day Workweek | 14.14 | ПР | 1 |  |  |
| A8390 |  | Резервуар чистой воды. Фундаментная часть. Дополнительная. | 30d | 2015-06-01 A | 2015-06-30 A | A8320 SS | 100% |  |  |  |  |  |  | 1. Standard 7 Day Workweek | 1.65 | ПР | 1 |  |  |
| A8430 |  | Резервуар чистой воды. Стены и покрытие. (взамен 08-20-0279С, KUR-CCA1681, А-123458 пм изм.1) | 331d | 2015-07-01 A | 2016-07-26 | A8320 | 83% | 56d | 2015-07-01 | 2016-05-26 | 1497d | 0d |  | 1. Standard 7 Day Workweek | 24.54 | ПР | 1 |  |  |
| A8500 |  | Резервуар чистой воды. Технологическая часть | 47d | 2016-07-27 | 2016-09-11 | A8430 |  |  |  |  | 1497d | 1498d |  | 1. Standard 7 Day Workweek | 0.55 | ПР | 1 |  |  |
|  | 2 | **Фильтры поглотители** |  | 2016-09-30 | 2017-08-18 |  |  |  |  |  |  |  |  |  |  |  |  |  |  |
| A8400 |  | Фильтры поглотители.Фундаментная плита | 90d | 2016-09-30 | 2016-12-29 | A8410 |  |  |  |  | 1156.2d | 0d |  | 1. Standard 7 Day Workweek | 2.42 | ПР | 1 |  |  |
| A8330 |  | Фильтры-поглотители. Надземная часть. | 82d | 2016-12-29 | 2017-03-21 | A8400 |  |  |  |  | 1156.2d | 0d |  | 1. Standard 7 Day Workweek | 8.76 | ПР | 1 |  |  |
| 353 |  | Фильтры-поглотители. Технологическая часть | 150d | 2017-03-21 | 2017-08-18 | A8330 |  |  |  |  | 1156.2d | 0d |  | 1. Standard 7 Day Workweek | 1.16 | ПР | 1 | 8 | ТМР |
| A8470 |  | Трубопроводы хозяйственно-питьевого и противопожарного водоснабжения. Площадка водозаборных | 82d | 2017-03-21 | 2017-06-11 | A8330 |  |  |  |  | 1224.2d | 1225.2d |  | 1. Standard 7 Day Workweek | 21.36 | ПР | 1 |  |  |
| A8530 |  | Камеры фильтров-поглотителей. Отопление и вентиляция | 37d | 2017-03-21 | 2017-04-27 | A8330 |  |  |  |  | 1269.2d | 1270.2d |  | 1. Standard 7 Day Workweek | 0.46 | ПР | 1 |  |  |
| A8590 |  | Фильтры поглотители. Электротехническая часть | 50d | 2017-03-21 | 2017-05-10 | A8330 |  |  |  |  | 1256.2d | 1257.2d |  | 1. Standard 7 Day Workweek | 1.35 | ЭЛЕКч | 1 |  |  |
|  | 3 | **Насосная станция второго подъема** |  | 2015-04-13 | 2017-12-14 |  |  |  |  |  |  |  |  |  |  |  |  |  |  |
| A8440 |  | Насосная станция второго подъема. Строительная часть. Фундаментная плита. | 229d | 2015-04-13 A | 2015-11-27 A | A8410 | 100% |  |  |  |  |  |  | 1. Standard 7 Day Workweek | 18.21 | ПР | 1 |  |  |
| A8340 |  | Насосная станция второго подьема. Строительная часть. Архитектурно-строительные решения. | 792d | 2015-07-26 A | 2017-11-24 |  | 32% | 542d | 2015-07-26 | 2017-09-24 | 1012.58d | 0d |  | 1. Standard 7 Day Workweek | 33.84 | ПР | 1 |  |  |
| A8380 |  | Насосная станция второго подъема. Строительная часть. Стены подземной части | 239.52d | 2015-09-01 A | 2016-06-27 |  | 89% | 26.52d | 2015-09-01 | 2016-04-27 | 1153.48d | 0d |  | 1. Standard 7 Day Workweek | 11.91 | ПР | 1 |  |  |
| A8310 |  | Насосная станция второго подъема. Строительная часть. Каркас | 90d | 2016-06-27 | 2016-09-25 | A8380 |  |  |  |  | 1153.48d | 0d |  | 1. Standard 7 Day Workweek | 15.31 | ПР | 1 |  |  |
| A8370 |  | внутренние сети водопровода и канализации. Насосная станция 2-го подъема. | 90d | 2016-09-25 | 2016-12-24 | A8310 |  |  |  |  | 1153.48d | 0d |  | 1. Standard 7 Day Workweek | 0.79 | ПР | 1 |  |  |
| A8540 |  | Насосная станция 2-го подъема. Отопление и вентиляция | 60d | 2016-12-24 | 2017-02-22 | A8370 |  |  |  |  | 1153.48d | 0d |  | 1. Standard 7 Day Workweek | 8.41 | ТПНДвк | 1 |  |  |
| A10510 |  | Насосная станция 2-го подъема. Технологическая часть (взамен сметы №08-20-0261Т (KUR-CCA1663_А-122973 пм изм.1)) | 60d | 2017-02-22 | 2017-04-23 | A8540 |  |  |  |  | 1153.48d | 0d |  | 1. Standard 7 Day Workweek | 19.6 | ПР | 1 |  |  |
| A8550 |  | Насосная станция 2-го подъема. Технологическая часть | 60d | 2017-04-23 | 2017-06-22 | A10510 |  |  |  |  | 1153.48d | 0d |  | 1. Standard 7 Day Workweek |  | ПР | 1 |  |  |
| 356 |  | Электротехническая часть насосной станции 2-го подъема | 89.42d | 2017-05-01 | 2017-07-29 | 355 FF |  |  |  |  | 1176.2d | 1177.2d | finish on or after 2015-03-31 | 1. Standard 7 Day Workweek | 40.31 | ЭЛЕКч | 1 | 8 | ЭМР |
| A8570 |  | Связь и сигнализация | 60d | 2017-06-22 | 2017-08-21 | A8550 |  |  |  |  | 1153.48d | 1154.48d |  | 1. Standard 7 Day Workweek | 9.06 | ЭЛЕКч | 1 |  |  |
| A8600 |  | Пожарная сигнализация и оповещение людей о пожаре | 35d | 2017-10-26 | 2017-11-29 | A8340 FS-30d |  |  |  |  | 1012.58d | 0d |  | 1. Standard 7 Day Workweek | 6.72 | ЭЛЕКч | 1 |  |  |
| A8630 |  | Щитовые устройства (задание заводу).Насосная станция второго подъема | 47d | 2017-10-26 | 2017-12-11 | A8600 SS |  |  |  |  | 1012.58d | 0d |  | 1. Standard 7 Day Workweek | 0.69 | ЭЛЕКч | 1 |  |  |
| A8640 |  | контрольные кабели в части автоматики насосной станции второго подъема | 50d | 2017-10-26 | 2017-12-14 | A8630 SS |  |  |  |  | 1012.58d | 0d |  | 1. Standard 7 Day Workweek | 3.3 | ЭЛЕКч | 1 |  |  |
| A8650 |  | Контрольные кабели в части вторичной коммутации | 50d | 2017-10-26 | 2017-12-14 | A8640 SS |  |  |  |  | 1012.58d | 0d |  | 1. Standard 7 Day Workweek | 2.75 | ЭЛЕКч | 1 |  |  |
| A8660 |  | Насосная станция второго подъема. Электротехническая часть. Техническое задание заводу | 35d | 2017-10-26 | 2017-11-29 | A8650 SS |  |  |  |  | 1012.58d | 0d |  | 1. Standard 7 Day Workweek | 29.03 | ЭЛЕКч | 1 |  |  |
| A8670 |  | Насосная станция второго подъема. Электротехническая часть. Техническое задание заводу | 38d | 2017-10-26 | 2017-12-02 | A8660 SS |  |  |  |  | 1012.58d | 0d |  | 1. Standard 7 Day Workweek | 38.86 | ЭЛЕКч | 1 |  |  |
| A8680 |  | Насосная станция второго подъема.Вторичная коммутация в части электродвигателей | 35d | 2017-10-26 | 2017-11-29 | A8670 SS |  |  |  |  | 1012.58d | 0d |  | 1. Standard 7 Day Workweek | 0.23 | ЭЛЕКч | 1 |  |  |
| A8690 |  | Насосная станция второго подъема. Электротехническая часть. Техническое задание заводу | 45d | 2017-10-26 | 2017-12-09 | A8680 SS |  |  |  |  | 1012.58d | 0d |  | 1. Standard 7 Day Workweek | 3.21 | ЭЛЕКч | 1 |  |  |
| A8700 |  | Электротехническая часть и КИП и А. Отопление и вентиляция.Насосная станция второго подъема | 45d | 2017-10-26 | 2017-12-09 | A8690 SS |  |  |  |  | 1012.58d | 0d |  | 1. Standard 7 Day Workweek | 1.38 | ЭЛЕКч | 1 |  |  |
| A8710 |  | Насосная станция второго подъема. Автоматизация комплексная | 45d | 2017-10-26 | 2017-12-09 | A8700 SS |  |  |  |  | 1012.58d | 0d |  | 1. Standard 7 Day Workweek | 45.69 | ЭЛЕКч | 1 |  |  |
| A8730 |  | Электротехническая часть и КИПи А. Насосная станция второго подъема | 45d | 2017-10-26 | 2017-12-09 | A8720 SS |  |  |  |  | 1012.58d | 0d |  | 1. Standard 7 Day Workweek | 19.78 | ЭЛЕКч | 1 |  |  |

| ID | WBS | Activity | Type | Duration | Start | Finish | Predecessors | Complete | Remaining | Planned start | Planned finish | Total float | Free float | Constraint | Calendar | Cost | 01 - Глава ССР | 03 - Часть проекта | 05 - Вид работ | ОКСГ |
| --- | --- | --- | --- | --- | --- | --- | --- | --- | --- | --- | --- | --- | --- | --- | --- | --- | --- | --- | --- | --- |
|  | 4 | **Насосные станции на скважинах №1-3** |  |  | 2015-04-01 | 2017-12-06 |  |  |  |  |  |  |  |  |  |  |  |  |  |  |
| 348 |  | Строительная часть | WBS summary | 981d | 2015-04-01 A | 2017-12-06 |  | 44% | 554d |  |  | 1046d | 1047d |  | 1. Standard 7 Day Workweek |  | 8 | ПР | СМР | 1 |
| 349 |  | Строительные работы водозаборных сооружений и сооружений подготовки хозпитьевой воды с водоводами до стройбазы |  | 783d | 2015-04-01 A | 2017-07-22 |  | 47% | 417d | 2015-04-01 | 2017-05-22 | 1093d | 0d | start on or after 2015-05-01 | 1. Standard 7 Day Workweek | 18.37 | 8 | ПР | СМР | 1 |
| A8350 |  | Насосные станции на скважинах №1-3. Строительная часть (взамен сметы №А-119246 пм изм.1 (KUR- |  | 50d | 2016-06-01 | 2016-07-20 |  |  |  |  |  | 1270d | 0d | start on or after 2016-03-01 | 1. Standard 7 Day Workweek | 4.66 |  | ПР |  | 1 |
| A8560 |  | насосные станции над артскважинами №1-3. Технологическая часть |  | 83d | 2016-06-01 | 2016-08-22 |  |  |  |  |  | 1517d | 1518d |  | 1. Standard 7 Day Workweek | 2.25 |  | ПР |  | 1 |
| A8360 |  | Насосные станции на скважинах №1-3 Отопление и вентиляция |  | 95d | 2016-07-21 | 2016-10-23 | A8350 |  |  |  |  | 1270d | 0d |  | 1. Standard 7 Day Workweek | 0.24 |  | ПР |  | 1 |
| 355 |  | Электротехническая часть водозаборных сооружений |  | 100d | 2017-04-20 | 2017-07-29 | 353 SS+30d |  |  |  |  | 1176.2d | 0d | finish on or after 2015-03-31 | 1. Standard 7 Day Workweek | 1.6 | 8 | ЭЛЕКч | ЭМР | 1 |
| A8720 |  | Насосные станции на скважинах №1-3. КИП |  | 42d | 2017-10-26 | 2017-12-06 | A8710 SS |  |  |  |  | 1012.58d | 0d |  | 1. Standard 7 Day Workweek | 0.13 |  | ЭЛЕКч |  | 1 |
|  | 5 | **Наружные сети** |  |  | 2016-10-24 | 2017-04-26 |  |  |  |  |  |  |  |  |  |  |  |  |  |  |
| A8490 |  | водопровод исходной воды. Наружные сети |  | 135d | 2016-10-24 | 2017-03-07 | A8360 |  |  |  |  | 1270d | 0d |  | 1. Standard 7 Day Workweek | 8.28 |  | ТПНДвк |  | 1 |
| A8510 |  | Трубопроводы хозяйственно-питьевого и противопожарного водоснабжения |  | 50d | 2017-03-08 | 2017-04-26 | A8490 |  |  |  |  | 1270d | 1271d |  | 1. Standard 7 Day Workweek | 35.41 |  | ТПНДвк |  | 1 |
|  | 10.3.2.2 | **Технологическая часть** |  |  |  |  |  |  |  |  |  |  |  |  |  |  |  |  |  |  |
|  | 10.3.2.3 | **Электротехническая часть** |  |  |  |  |  |  |  |  |  |  |  |  |  |  |  |  |  |  |
|  | 10.3.2.4 | **Пусконаладочные работы** |  |  | 2017-12-10 | 2018-01-09 |  |  |  |  |  |  |  |  |  |  |  |  |  |  |
| 361 |  | Пусконаладочные работы - 6,01% |  | 30.42d | 2017-12-10 | 2018-01-09 | A8730 |  |  |  |  | 1012.58d | 1013.58d |  | 1. Standard 7 Day Workweek |  | 8 |  | _ПНР | 1 |
|  | 10 | **Водозаборные сооружения и сооружения подготовки хозпитьевой воды с водоводами до стройбазы-1** |  |  |  |  |  |  |  |  |  |  |  |  |  |  |  |  |  |  |
|  | 10.3.3 | **Очистные сооружения хозбытовой и дождевой канализации с подводящими и отводящими коллекторами** |  |  | 2016-04-01 | 2017-07-11 |  |  |  |  |  |  |  |  |  |  |  |  |  |  |
|  | 10.3.3.1 | **Строительная часть** |  |  | 2016-04-01 | 2017-06-25 |  |  |  |  |  |  |  |  |  |  |  |  |  |  |
| A8760 |  | Блок биологической очистки первой очереди. Строительная часть. Фундаментная плита. |  | 90d | 2016-04-01 A | 2016-06-06 |  | 94% | 5.4d | 2016-04-01 | 2016-06-29 | 1444.6d | 0d | start on or after 2016-04-01 | 1. Standard 7 Day Workweek | 3.99 |  | ПР |  | 1 |
| A8830 |  | Аккумулирующий резервуар-отстойник производственно-дождевых сточных вод. Строительная часть |  | 140d | 2016-04-01 A | 2016-10-10 |  | 6% | 131.6d | 2016-04-01 | 2016-08-18 | 1408.4d | 0d | start on or after 2016-03-14 | 1. Standard 7 Day Workweek | 42.81 |  | ПР |  | 1 |
| 364 |  | Аварийные иловые площадки очистных сооружений бытовых сточных вод 1-ой и 2-ой очереди. |  | 50d | 2016-04-11 A | 2016-07-18 |  | 5% | 47.5d | 2016-04-11 | 2016-05-30 | 1522.5d | 0d | start on or after 2016-04-11 | 1. Standard 7 Day Workweek | 12.34 | 8 | ПР | СМР | 1 |
| A8820 |  | Резервуар усреднитель. Строительная часть. |  | 70d | 2016-05-11 A | 2016-08-09 |  |  | 70d | 2016-06-01 | 2016-08-09 | 1417d | 0d | start on or after 2016-06-01 | 1. Standard 7 Day Workweek | 4.36 |  | ПР |  | 1 |
| 365 |  | КНС промливневых стоков. Строительная часть. Фундаментная плита. |  | 40d | 2016-06-01 | 2016-07-10 |  |  |  |  |  | 1210d | 0d | start on or after 2016-05-01 | 1. Standard 7 Day Workweek | 2.08 | 8 | ПР | СМР | 1 |
| A8750 |  | КНС бытовых стоков. Строительная часть. Фундаментная плита. |  | 40d | 2016-06-01 | 2016-07-10 |  |  |  |  |  | 1194d | 0d | start on or after 2016-05-01 | 1. Standard 7 Day Workweek | 1.32 |  | ПР |  | 1 |
| A8800 |  | Иловые и песковые площадки производственно-дождевых сточных вод. Строительная часть. |  | 120d | 2016-06-01 | 2016-09-28 | 365 SS |  |  |  |  | 1210d | 0d |  | 1. Standard 7 Day Workweek | 9.46 |  | ПР |  | 1 |
| A8770 |  | Блок биологической очистки второй очереди. Строительная часть. Фундаментная плита. |  | 90d | 2016-06-06 | 2016-09-04 | A8760 |  |  |  |  | 1444.6d | 0d |  | 1. Standard 7 Day Workweek | 6.28 |  | ПР |  | 1 |
| A8810 |  | Блок доочистки производственно-сточных вод. Строительная часть. Фундаментная плита. |  | 30d | 2016-07-18 | 2016-08-17 | 364 |  |  |  |  | 1522.5d | 1523.5d |  | 1. Standard 7 Day Workweek | 5.86 |  | ПР |  | 1 |
| 376 |  | Земляные работы на уч-ке очистных сооружений хозбытовой и дождевой канализации |  | 15d | 2016-09-24 | 2016-10-08 | 364, 370 FF |  |  |  |  | 1470d | 1471d |  | 1. Standard 7 Day Workweek | 21.36 | 8 | ПР | ЗМР | 1 |
| A8790 |  | Песколовка производственно-дождевых сточных вод. Строительная часть. |  | 120d | 2016-09-29 | 2017-01-26 | A8800 |  |  |  |  | 1210d | 0d |  | 1. Standard 7 Day Workweek | 1.09 |  | ПР |  | 1 |
| 366 |  | Ограждение комплекса очистных сооружений. |  | 60d | 2017-01-27 | 2017-03-27 | A8790 |  |  |  |  | 1210d | 0d |  | 1. Standard 7 Day Workweek | 15.52 | 8 | ПР | СМР | 1 |
| 367 |  | Автодороги комплекса очистных сооружений |  | 150d | 2017-01-27 | 2017-06-25 | 366 SS |  |  |  |  | 1210d | 1211d |  | 1. Standard 7 Day Workweek | 63.11 | 8 | ПР | СМР | 1 |
| SMR-8.21.1.2.4.1 |  | Архитектурно-строительные решения. Пост охраны |  | 60d | 2017-01-27 | 2017-03-27 | 366 SS |  |  |  |  | 1240d | 0d |  | 1. Standard 7 Day Workweek |  |  | ПР |  | 1 |
| SMR-8.21.1.2.4.2 |  | Внутренние сети водопровода и канализации. Пост охраны |  | 10d | 2017-03-28 | 2017-04-06 | SMR-8.21.1.2.4.1 |  |  |  |  | 1240d | 0d |  | 1. Standard 7 Day Workweek |  |  | ПР |  | 1 |
| SMR-8.21.1.2.4.3 |  | Отопление и вентиляция. Пост охраны |  | 10d | 2017-04-07 | 2017-04-16 | SMR-8.21.1.2.4.2 |  |  |  |  | 1240d | 0d |  | 1. Standard 7 Day Workweek |  |  | ВентС |  | 1 |
| SMR-8.21.1.2.4.4 |  | Электротехническая часть.Пост охраны |  | 20d | 2017-04-17 | 2017-05-06 | SMR-8.21.1.2.4.3 |  |  |  |  | 1240d | 0d |  | 1. Standard 7 Day Workweek |  |  | ЭЛЕКч |  | 1 |
| SMR-8.21.1.2.4.5 |  | Системы связи и охранной сигнализации.Пост охраны |  | 10d | 2017-05-07 | 2017-05-16 | SMR-8.21.1.2.4.4 |  |  |  |  | 1240d | 0d |  | 1. Standard 7 Day Workweek |  |  | ЭЛЕКч |  | 1 |
| SMR-8.21.1.2.4.6 |  | Автоматическая пожарная сигнализация.Пост охраны |  | 10d | 2017-05-17 | 2017-05-26 | SMR-8.21.1.2.4.5 |  |  |  |  | 1240d | 1241d |  | 1. Standard 7 Day Workweek |  |  | ЭЛЕКч |  | 1 |

| ID | WBS | Activity | Type | Duration | Start | Finish | Predecessors | Planned start | Planned finish | Total float | Free float | Constraint | Calendar | Cost | 01 - Глава ССР | 03 - Часть проекта | 05 - Вид работ | ОКСГ |
| --- | --- | --- | --- | --- | --- | --- | --- | --- | --- | --- | --- | --- | --- | --- | --- | --- | --- | --- |
|  | 10.3.3.2 | **Технологическая часть** |  |  | 2016-06-06 | 2017-03-27 |  |  |  |  |  |  |  |  |  |  |  |  |
| 368 |  | Технологическая часть | WBS summary | 294.6d | 2016-06-06 | 2017-03-27 |  |  |  | 1300d | 1301d |  | 1. Standard 7 Day Workweek |  | 8 | ПР | ТМР | 1 |
| A8900 |  | Блок биологической очистки-150 |  | 60d | 2016-06-06 | 2016-08-05 | A8760 |  |  | 1534.6d | 1535.6d |  | 1. Standard 7 Day Workweek | 204.47 |  | ПР |  | 1 |
| 370 |  | КНС производственно-дождевых сточных вод |  | 90d | 2016-07-11 | 2016-10-08 | 365 |  |  | 1400d | 0d |  | 1. Standard 7 Day Workweek | 216.13 | 8 | ПР | ТМР | 1 |
| A8850 |  | Блок доочистки производственно-дождевых сточных вод |  | 60d | 2016-07-11 | 2016-09-08 | 370 SS |  |  | 1500d | 1501d |  | 1. Standard 7 Day Workweek | 6.01 |  | ПР |  | 1 |
| A8910 |  | КНС бытовых сточных вод |  | 90d | 2016-07-11 | 2016-10-08 | A8750 |  |  | 1194d | 0d |  | 1. Standard 7 Day Workweek | 0.2 |  | ПР |  | 1 |
| A8920 |  | Резервуар-усреднитель |  | 113d | 2016-08-10 | 2016-11-30 | A8820 |  |  | 1417d | 1418d |  | 1. Standard 7 Day Workweek | 0.5 |  | ПР |  | 1 |
| A8880 |  | Блок биологической очистки-550 |  | 60d | 2016-09-04 | 2016-11-03 | A8770 |  |  | 1444.6d | 1445.6d |  | 1. Standard 7 Day Workweek | 4.44 |  | ПР |  | 1 |
| 369 |  | Трубопроводы очистных сооружений бытовых сточных вод |  | 70d | 2016-10-09 | 2016-12-17 | A8910 |  |  | 1400d | 1401d |  | 1. Standard 7 Day Workweek | 9.08 | 8 | ТПНДвк | ТМР | 1 |
| A8860 |  | Трубопроводы очистных сооружений промливневых стоков |  | 70d | 2016-10-09 | 2016-12-17 | 370 |  |  | 1400d | 1401d |  | 1. Standard 7 Day Workweek | 67.48 |  | ТПНДвк |  | 1 |
| A8890 |  | Аккумулирующий резервуар-отстойник производственно-дождевых сточных вод |  | 60d | 2016-10-10 | 2016-12-09 | A8830 |  |  | 1408.4d | 1409.4d |  | 1. Standard 7 Day Workweek | 0.38 |  | ПР |  | 1 |
| A8870 |  | Песколовка производственно-дождевых сточных вод |  | 60d | 2017-01-27 | 2017-03-27 | A8790 |  |  | 1300d | 1301d |  | 1. Standard 7 Day Workweek | 0.63 |  | ПР |  | 1 |
|  | 10.3.3.3 | **Электротехническая часть** |  |  | 2016-09-01 | 2017-06-11 |  |  |  |  |  |  |  |  |  |  |  |  |
| SMR-8.21.2.3.2 |  | Фундамент КТП |  | 0d | 2016-09-01 | 2016-09-30 |  | 2016-09-01 | 2016-09-01 | 1478d | 1479d | start on or after 2016-09-01 | 1. Standard 7 Day Workweek |  |  | ПР |  | 1 |
| 372 |  | Электротехническая часть очистных сооружений промливневой канализации |  | 25d | 2016-10-09 | 2016-11-02 | A10590 |  |  | 1415d | 0d |  | 1. Standard 7 Day Workweek | 3.47 | 8 | ЭЛЕКч | ЭМР | 1 |
| 373 |  | Электротехническая часть очистных сооружений хозбытовой канализации |  | 30d | 2016-10-09 | 2016-11-07 | A10600 |  |  | 1194d | 0d |  | 1. Standard 7 Day Workweek | 2.23 | 8 | ЭЛЕКч | ЭМР | 1 |
| A10590 |  | Готовность к электромонтажу КНС дождевых вод | milestone | 0d | 2016-10-09 | 2016-10-09 | 370 |  |  | 1415d | 0d |  | 1. Standard 7 Day Workweek |  |  |  |  | 1 |
| A10600 |  | Готовность к электромонтажу КНС бытовых сточных вод | milestone | 0d | 2016-10-09 | 2016-10-09 | A8910 |  |  | 1194d | 0d |  | 1. Standard 7 Day Workweek |  |  |  |  | 1 |
| A8780 |  | Задание заводу на щитовые устройства |  | 30d | 2016-10-09 | 2016-11-07 | 373 SS |  |  | 1262d | 0d |  | 1. Standard 7 Day Workweek | 0.17 |  | ЭЛЕКч |  | 1 |
| A8960 |  | Схемы внешних присоединений к АПТС 00СХQ11 |  | 10d | 2016-10-09 | 2016-10-18 | 372 SS |  |  | 1460d | 1461d |  | 1. Standard 7 Day Workweek | 29.67 |  | ЭЛЕКч |  | 1 |
| SMR-8.21.2.2.12 |  | Очистные сооружения промливневой канализации.Электротехническая часть и КИПиА |  | 246d | 2016-10-09 | 2017-06-11 | 373 SS |  |  | 1194d | 0d |  | 1. Standard 7 Day Workweek | 84.85 |  | ЭЛЕКч |  | 1 |
| SMR-8.21.2.3.1 |  | Электротехническая часть и КИПиА. Задание заводу на КТП |  | 0d | 2017-01-20 | 2017-03-05 | A8780 FS+73d | 2017-01-20 | 2017-01-20 | 1262d | 0d |  | 1. Standard 7 Day Workweek |  |  | ЭЛЕКч |  | 1 |
| SMR-8.21.2.3.3 |  | РД по электротехнической части |  | 0d | 2017-01-20 | 2017-02-18 | SMR-8.21.2.3.1 SS | 2017-01-20 | 2017-01-20 | 1337d | 1338d |  | 1. Standard 7 Day Workweek |  |  | ЭЛЕКч |  | 1 |
| SMR-8.21.2.3.4 |  | Кабельный журнал в части автоматики |  | 0d | 2017-03-06 | 2017-05-04 | SMR-8.21.2.3.1 | 2017-03-06 | 2017-03-06 | 1262d | 1263d |  | 1. Standard 7 Day Workweek | 2.44 |  | ЭЛЕКч |  | 1 |

| ID | WBS | Activity | Duration | Start | Finish | Predecessors | Complete | Remaining | Planned start | Planned finish | Total float | Free float | Constraint | Calendar | Cost | Actual cost | 01 - Глава ССР | 05 - Вид работ | ОКСГ | 03 - Часть проекта |
| --- | --- | --- | --- | --- | --- | --- | --- | --- | --- | --- | --- | --- | --- | --- | --- | --- | --- | --- | --- | --- |
|  | 10.3.3.4 | **Пусконаладочные работы** |  | 2017-06-12 | 2017-07-11 |  |  |  |  |  |  |  |  |  |  |  |  |  |  |  |
| 375 |  | Пусконаладочные работы - 6,01% | 30d | 2017-06-12 | 2017-07-11 | 372, SMR-8.21.2.2.12 |  |  |  |  | 1194d | 1195d |  | 1. Standard 7 Day Workweek |  |  | 8 | СМР | 1 |  |
|  | 10.3.4 | **Внеплощадочные временные автомобильные дороги** |  | 2014-02-24 | 2017-12-06 |  |  |  |  |  |  |  |  |  |  |  |  |  |  |  |
| 488 |  | Участок автодороги, проходящий по правому берегу (участок №1) | 96d | 2014-02-24 A | 2014-05-28 A |  | 100% |  |  |  |  |  |  | 1. Standard 7 Day Workweek | 485.34 | 96.64 | 8 | СМР | 1 | ПР |
| 638 |  | Землевозные дороги. Участок уширения существующей автомобильной дороги | 404d | 2014-03-20 A | 2015-04-25 A |  | 100% |  |  |  |  |  |  | 1. Standard 7 Day Workweek | 6.52 |  | 8 | СМР | 1 | ПР |
| A10520 |  | Землевозные дороги. Участок дороги по правому берегу (участок №1). Электротехническая часть | 30d | 2014-04-01 A | 2014-04-28 A |  | 100% |  |  |  |  |  |  | 1. Standard 7 Day Workweek |  |  |  |  | 1 | ПР |
| A1010 |  | Участок дороги по правому берегу (участок №1) Прокладка кабельных трасс | 85d | 2015-01-05 A | 2015-03-30 A | 488 | 100% |  |  |  |  |  | start on or after 2015-07-01 | 1. Standard 7 Day Workweek | 3.66 | 3.66 | 8 | СМР | 1 | ПР |
| 378 |  | Временные автомобильные дороги. Дорога к карьеру песка,участок 2.Расширение дороги для транспортировки песка участок 5 | 695.6d | 2015-02-02 A | 2017-03-30 | 20 SS-270d | 56% | 302.6d | 2015-02-02 | 2016-12-28 | 1297.4d | 1298.4d |  | 1. Standard 7 Day Workweek | 18.31 |  | 8 | СМР | 1 | ПР |
| A9730 |  | Землевозная автодорога к отвалу дебалансного грунта | 692d | 2015-07-15 A | 2017-12-06 |  | 20% | 553.6d | 2015-07-15 | 2017-06-05 | 1046.4d | 1047.4d | start on or after 2015-07-15 | 1. Standard 7 Day Workweek | 412.44 |  |  |  | 1 | ПР |
| A9090 |  | Землевозные дороги. Участок уширения существующей автомобильной дороги | 91d | 2015-12-01 A | 2016-06-01 | A9100 SS | 100% | 0d | 2015-12-01 | 2016-02-29 | 1600d | 1601d |  | 1. Standard 7 Day Workweek | 8.14 |  |  |  | 1 | ПР |
| 508 |  | Участок расширения дороги №5 | 395d | 2016-06-01 | 2017-06-30 |  |  |  |  |  | 1205d | 1206d | start on or after 2015-08-01 | 1. Standard 7 Day Workweek |  |  | 8 | СМР | 1 | ПР |
| A1030 |  | Площадка для стоянки строительной техники | 180d | 2016-06-01 | 2016-11-27 |  |  |  |  |  | 1420d | 1421d |  | 1. Standard 7 Day Workweek |  |  |  |  | 1 | ПР |
| A9060 |  | Землевозные дорога №5 Участок от верхнего дюкера до автодороги общего пользования | 150d | 2016-06-01 | 2016-10-28 | A9080 SS |  |  |  |  | 1450d | 0d |  | 1. Standard 7 Day Workweek |  |  |  |  | 1 | ПР |
| A9080 |  | Автодорога к отвалу грунта. Мероприятия по ремонту покрытия автодороги | 90d | 2016-06-01 | 2016-08-29 |  |  |  |  |  | 1450d | 0d | start on or after 2016-02-25 | 1. Standard 7 Day Workweek | 32.12 |  |  |  | 1 | ПР |
| A9100 |  | Землевозные дороги. Участок уширения существующей автомобильной дороги | 90d | 2016-06-01 | 2016-08-29 | A9110 SS |  |  |  |  | 1510d | 1511d |  | 1. Standard 7 Day Workweek | 26.92 |  |  |  | 1 | ПР |
| A9110 |  | Землевозные дороги. Участок уширения существующей автомобильной дороги | 90d | 2016-06-01 | 2016-08-29 | A9080 SS |  |  |  |  | 1510d | 0d |  | 1. Standard 7 Day Workweek |  |  |  |  | 1 | ПР |
| SMR-8.22.14 |  | Землевозная автодорога к отвалу дебалансного грунта (уширение) | 148d | 2016-06-01 | 2016-10-26 | A9060 SS |  |  |  |  | 1452d | 1453d | start on or after 2016-05-16 | 1. Standard 7 Day Workweek |  |  |  |  | 1 | ПР |
| SMR-8.22.16 |  | Внеплощадочные автомобильные дороги Временный съезд с объездной автодороги | 90d | 2017-05-18 | 2017-08-16 | 128 |  |  |  |  | 1098.64d | 0d |  | 1. Standard 7 Day Workweek | 23.49 |  |  |  | 1 | ПР |
| SMR-8.22.17 |  | Мероприятия по усилению дорожной одежды | 0d | 2017-05-18 | 2017-10-15 | SMR-8.22.16 SS |  |  | 2017-05-18 | 2017-05-18 | 1098.64d | 1099.64d |  | 1. Standard 7 Day Workweek | 188.14 |  |  |  | 1 | ПР |
|  | 1 | **Землевозная дорога к карьеру песка** |  | 2015-04-02 | 2016-11-25 |  |  |  |  |  |  |  |  |  |  |  |  |  |  |  |
| A9000 |  | Землевозные дороги. Участок дороги №2 к карьеру песка ПК 0+00 - ПК 23+87,34 | 445d | 2015-04-02 A | 2016-09-19 |  | 75% | 111d | 2015-04-02 | 2016-06-19 | 1489d | 1490d |  | 1. Standard 7 Day Workweek | 169.05 |  |  |  | 1 | ПР |
| A9030 |  | Землевозные дороги. Участок дороги №2 к карьеру песка ПК 23+87, 34-ПК39+00; ПК48+00- | 156.52d | 2016-02-20 A | 2016-10-25 |  | 6% | 146.52d | 2016-02-20 | 2016-07-25 | 1453.48d | 1454.48d | start on or after 2016-03-24 | 1. Standard 7 Day Workweek | 495.63 |  |  |  | 1 | ПР |
| A9010 |  | Землевозные дороги. Участок дороги №2 к карьеру песка ПК 39+00 - ПК 48+00. | 148d | 2016-05-01 A | 2016-10-25 |  | 1% | 146.52d | 2016-05-01 | 2016-09-25 | 1453.48d | 1454.48d | start on or after 2016-03-23 | 1. Standard 7 Day Workweek | 75.9 |  |  |  | 1 | ПР |
| A9020 |  | ЛС-08-22-0089С-Малые искусственные сооружения. Участок дороги №2 к карьеру песка | 178d | 2016-06-01 | 2016-11-25 |  |  |  |  |  | 1422d | 1423d | start on or after 2016-03-28 | 1. Standard 7 Day Workweek |  |  |  |  | 1 | ПР |
| A9040 |  | Участок дороги №2 к карьеру песка (ПК23+87,34-ПК 39+00, ПК 48+00-ПК 76+59,42) | 0d | 2016-06-01 | 2016-09-08 |  |  |  | 2016-06-01 | 2016-06-01 | 1500d | 1501d |  | 1. Standard 7 Day Workweek |  |  |  |  | 1 | ПР |
| A9050 |  | Дорожная часть. Участок расширения дороги №5 к карьеру песка | 148d | 2016-06-01 | 2016-10-26 |  |  |  |  |  | 1452d | 1453d | start on or after 2016-03-18 | 1. Standard 7 Day Workweek |  |  |  |  | 1 | ПР |
| A9070 |  | Землевозные дороги. Участок №5 к карьеру песка. Уширение проезжей части. | 146d | 2016-06-01 | 2016-10-24 |  |  |  |  |  | 1454d | 1455d | start on or after 2016-03-07 | 1. Standard 7 Day Workweek | 18.54 |  |  |  | 1 | ПР |

| ID | WBS | Activity | Duration | Start | Finish | Planned start | Planned finish | Total float | Free float | Constraint | Calendar | Cost | 03 - Часть проекта | ОКСГ |
| --- | --- | --- | --- | --- | --- | --- | --- | --- | --- | --- | --- | --- | --- | --- |
|  | 2 | **Автомобильная дорога № 1 в районе ж/д эстакады** |  | 2016-06-01 | 2016-09-08 |  |  |  |  |  |  |  |  |  |
| A1040 |  | Автомобильная дорога № 1 в районе ж/д эстакады | 0d | 2016-06-01 | 2016-09-08 | 2016-06-01 | 2016-06-01 | 1500d | 1501d |  | 1. Standard 7 Day Workweek | 48.68 | ПР | 1 |
|  | 10.3.5 | **Внеплощадочные временные железнодорожные пути** |  | 2016-06-01 | 2016-07-30 |  |  |  |  |  |  |  |  |  |
| A10530 |  | Ремонт железнодорожного пути №12 | 60d | 2016-06-01 | 2016-07-30 |  |  | 1540d | 1541d | start on or after 2016-06-01 | 1. Standard 7 Day Workweek | 27.55 | ПР | 1 |

## Activity codes

| Code | Value | Meaning |
| --- | --- | --- |
| 01 - Глава ССР | 1 | Глава №1 ССР |
| 01 - Глава ССР | 5 | Глава №5 ССР |
| 01 - Глава ССР | 7 | Глава №7 ССР |
| 01 - Глава ССР | 8 | Глава №8 ССР |
| 03 - Часть проекта | ВентС | Вентиляция и отопление |
| 03 - Часть проекта | ПР | Остальные обьекты |
| 03 - Часть проекта | ТПНДвк | Трубопроводы низкого давления ВК |
| 03 - Часть проекта | ЭЛЕКч | Электротехническая часть |
| 05 - Вид работ | _ПНР | Пусколадочные работы |
| 05 - Вид работ | ЗМР | Земляные работы |
| 05 - Вид работ | КИП | Монтаж КИП и А |
| 05 - Вид работ | РВР | Рем.востановительные работы |
| 05 - Вид работ | СМР | Строительные работы |
| 05 - Вид работ | ТМР | Тепломонтажные работы |
| 05 - Вид работ | ЭМР | Электромонтажные работы |
| Единица измерения (КУРСК) | м | метр |
| Единица измерения (КУРСК) | м3 | метр кубический |
| ОКСГ | 1 | ОКСГ |
